Activity ID,Activity Status,WBS Code,At Completion Duration(d),Activity Name,Start,Finish,(*)Free Float(d),Total Float,Predecessors,Predecessor Details,Successors,Successor Details,Primary Constraint,Activity Type,Duration Type,Delete This Row
A21610,Not Started,Hercules_15082023-6.18.1,10,System Commissioning - Process Drains,29/08/2023 08:00,11/09/2023 17:00,109,125,,,"A21780, A21790, A21600","A21780: FS, A21790: FS, A21600: FS",,Task Dependent,Fixed Duration & Units,
A21630,Not Started,Hercules_15082023-6.18.1,10,System Commissioning - Hot Water Supply,29/08/2023 08:00,11/09/2023 17:00,225,225,,,,,,Task Dependent,Fixed Duration & Units,
A21640,Not Started,Hercules_15082023-6.18.1,10,System Commissioning - Heat Recovery,09/01/2024 08:00,22/01/2024 17:00,140,140,A30850,A30850: FS,,,,Task Dependent,Fixed Duration & Units,
A40520,Not Started,Hercules_15082023-6.18.1,10,System Commissioning - Sewerage (foul) Water,10/01/2024 08:00,23/01/2024 17:00,139,139,A40510,A40510: FS,,,,Task Dependent,Fixed Duration & Units,
A21800,Not Started,Hercules_15082023-6.18.1,0,Power Available for Commissioning,12/01/2024 16:00,,0,21,A21820,A21820: FS,"JCQV1000, A21970, A21570, A21560, A21550, A21540","JCQV1000: FS, A21970: FS, A21570: FS, A21560: FS, A21550: FS, A21540: FS",As Late As Possible,Start Milestone,Fixed Duration and Units/Time,
A21550,Not Started,Hercules_15082023-6.18.1,10,System Commissioning - Biowaste,12/01/2024 16:00,26/01/2024 16:00,0,36,A21800,A21800: FS,"JCQV1010, A21970, A21740, A21530","JCQV1010: FS, A21970: FF, A21740: FF 10, A21530: FS",,Task Dependent,Fixed Duration & Units,
A21540,Not Started,Hercules_15082023-6.18.1,10,System Commissioning - WAI (Industrial Waste),12/01/2024 16:00,26/01/2024 16:00,20,36,A21800,A21800: FS,"A21780, A21790, A21600","A21780: FS, A21790: FS, A21600: FS",,Task Dependent,Fixed Duration & Units,
A21970,Not Started,Hercules_15082023-6.18.1,10,System Commissioning - Biowaste Storage & Inactivation Skid,12/01/2024 16:00,26/01/2024 16:00,0,46,"A21550, A21800","A21550: FF, A21800: FS",JCQV1010,JCQV1010: FS,,Task Dependent,Fixed Duration & Units,
A21560,Not Started,Hercules_15082023-6.18.1,10,System Commissioning - Plant Steam Condensate,18/01/2024 08:00,31/01/2024 17:00,1,33,"A21800, A7460","A21800: FS, A7460: FS","A21740, JCQV1030, A21780","A21740: FF 10, JCQV1030: FS, A21780: FS",,Task Dependent,Fixed Duration & Units,
A21680,Not Started,Hercules_15082023-6.18.1,10,System Commissioning - Pure Steam Condensate,18/01/2024 08:00,31/01/2024 17:00,17,8,A7460,A7460: FS,JCQV1050,JCQV1050: FS,,Task Dependent,Fixed Duration & Units,
A21580,Not Started,Hercules_15082023-6.18.1,10,System Commissioning - Nitrogen,19/01/2024 08:00,01/02/2024 17:00,0,32,A7370,A7370: FS,"A21740, JCQV1030","A21740: FF 10, JCQV1030: FS",,Task Dependent,Fixed Duration & Units,
A21590,Not Started,Hercules_15082023-6.18.1,10,System Commissioning - Oxygen,19/01/2024 08:00,01/02/2024 17:00,0,32,A7380,A7380: FS,"A21740, JCQV1030","A21740: FF 10, JCQV1030: FS",,Task Dependent,Fixed Duration & Units,
A21700,Not Started,Hercules_15082023-6.18.1,10,System Commissioning - Process Vents,22/01/2024 08:00,02/02/2024 17:00,15,31,A7450,A7450: FS,"A21740, A21780, A21790, A21600","A21740: FF 10, A21780: FS, A21790: FS, A21600: FS",,Task Dependent,Fixed Duration & Units,
A21730,Not Started,Hercules_15082023-6.18.1,10,System Commissioning - Plant Steam,22/01/2024 08:00,02/02/2024 17:00,16,31,A7480,A7480: FS,"A21740, A21790, A21600","A21740: FF 10, A21790: FS, A21600: FS",,Task Dependent,Fixed Duration & Units,
A21620,Not Started,Hercules_15082023-6.18.1,10,System Commissioning - Relief Vent,22/01/2024 08:00,02/02/2024 17:00,15,31,A7470,A7470: FS,"A21780, A21790, A21600","A21780: FS, A21790: FS, A21600: FS",,Task Dependent,Fixed Duration & Units,
A21660,Not Started,Hercules_15082023-6.18.1,10,System Commissioning - Softened Water,22/01/2024 08:00,02/02/2024 17:00,15,31,A7440,A7440: FS,"A21780, A21790, A21600","A21780: FS, A21790: FS, A21600: FS",,Task Dependent,Fixed Duration & Units,
A21570,Not Started,Hercules_15082023-6.18.1,5,System Commissioning - Process Air,24/01/2024 08:00,30/01/2024 17:00,0,14,"A21800, A7410","A21800: FS, A7410: FS","A21530, A21600, A21780, A21790, A21740, JCQV1030, JCQV1020","A21530: FS, A21600: FS, A21780: FS, A21790: FS, A21740: FS, JCQV1030: FS, JCQV1020: FS",,Task Dependent,Fixed Duration & Units,
A21710,Not Started,Hercules_15082023-6.18.1,8,System Commissioning - AP Water (BWT AQUA),29/01/2024 16:00,08/02/2024 17:00,0,0,"A34350, A7410, A7480, A30820, A34380, A30830, A7450, A7420","A34350: FS, A7410: FS, A7480: FS, A30820: FF -5, A34380: FS -4, A30830: FS, A7450: FS, A7420: FS","A21530, A21740, A21780, JCQV1070, A21760","A21530: FS, A21740: FF 5, A21780: FS, JCQV1070: FS, A21760: SS",,Task Dependent,Fixed Duration & Units,
A21690,Not Started,Hercules_15082023-6.18.1,5,System Commissioning - Chilled Water Supply 7 13,02/02/2024 08:00,08/02/2024 17:00,12,27,A7390,A7390: FS,"A21740, A21790, A21600","A21740: FF 10, A21790: FS, A21600: FS",,Task Dependent,Fixed Duration & Units,
A21760,Not Started,Hercules_15082023-6.18.1,10,System Commissioning - CS / WFI (BWT AQUA),12/02/2024 08:00,23/02/2024 17:00,0,-9,"A7420, A7410, A7400, A7390, A34380, A30820, A7430, A7490, A34350, A21710","A7420: FS, A7410: FS, A7400: FS -3, A7390: FS, A34380: FS, A30820: FF, A7430: FS, A7490: FS, A34350: FS, A21710: SS","A21530, A21780, JCQV1130, JCQV1050, A21600, A21790, A21740","A21530: FS, A21780: FS, JCQV1130: FF, JCQV1050: FF, A21600: FS, A21790: FS, A21740: FS",,Task Dependent,Fixed Duration & Units,
A21720,Not Started,Hercules_15082023-6.18.1,5,System Commissioning - Chilled Water Return 13 17,15/02/2024 08:00,21/02/2024 17:00,3,18,A7400,A7400: FS,"A21740, A21790, A21600","A21740: FF 10, A21790: FS, A21600: FS",,Task Dependent,Fixed Duration & Units,
A34410,Not Started,Hercules_15082023-6.18.1,10,System Commissioning - AHU Zone 3,22/02/2024 08:00,06/03/2024 17:00,7,3,A34280,A34280: FS,A34440,A34440: FF,,Task Dependent,Fixed Duration & Units,
A21920,Not Started,Hercules_15082023-6.18.1,10,System Commissioning - GMS,01/03/2024 09:00,15/03/2024 09:00,0,2,A7500,A7500: FS,JCQV1180,JCQV1180: FS,,Task Dependent,Fixed Duration & Units,
A34440,Not Started,Hercules_15082023-6.18.1,10,System Commissioning - EMS,04/03/2024 08:00,15/03/2024 17:00,0,-4,"A34410, A30800","A34410: FF, A30800: FS",JCQV1350,JCQV1350: FF,,Task Dependent,Fixed Duration & Units,
A34420,Not Started,Hercules_15082023-6.18.1,10,System Commissioning - AHU Zone 4,11/03/2024 08:00,22/03/2024 17:00,0,96,A34290,A34290: FS,A34450,A34450: FF,,Task Dependent,Fixed Duration & Units,
A34450,Not Started,Hercules_15082023-6.18.1,10,System Commissioning - EMS Zone 4,11/03/2024 08:00,22/03/2024 17:00,28,96,"A34420, A30800","A34420: FF, A30800: FS",JCQV2410,JCQV2410: FF,,Task Dependent,Fixed Duration & Units,
A21650,Not Started,Hercules_15082023-6.18.1,15,System Commissioning - AHU Zone 1,11/03/2024 08:00,02/04/2024 17:00,0,91,A7550,A7550: FS,A21810,A21810: FF,,Task Dependent,Fixed Duration & Units,
A40290,Not Started,Hercules_15082023-6.18.1,10,System Commissioning - BMS,14/03/2024 08:00,27/03/2024 17:00,93,93,"A32060, A32260, A32460, A32660, A32770, A33040, A33400, A33490, A34210, A34160, A30820","A32060: FS, A32260: FS, A32460: FS, A32660: FS, A32770: FS, A33040: FS, A33400: FS, A33490: FS, A34210: FS, A34160: FS, A30820: FS",,,,Task Dependent,Fixed Duration & Units,
A21770,Not Started,Hercules_15082023-6.18.1,10,System Commissioning - All Electrical Systems,14/03/2024 08:00,27/03/2024 17:00,93,93,A7510,A7510: FS,,,,Task Dependent,Fixed Duration & Units,
A21810,Not Started,Hercules_15082023-6.18.1,10,System Commissioning - EMS Zone 1,18/03/2024 08:00,02/04/2024 17:00,91,91,"A21650, A30800","A21650: FF, A30800: FS",,,,Task Dependent,Fixed Duration & Units,
A34400,Not Started,Hercules_15082023-6.18.1,25,System Commissioning - AHU Zone 2,28/03/2024 08:00,03/05/2024 17:00,0,68,A34270,A34270: FS,A34430,A34430: FF,,Task Dependent,Fixed Duration & Units,
A34430,Not Started,Hercules_15082023-6.18.1,10,System Commissioning - EMS Zone 2,22/04/2024 08:00,03/05/2024 17:00,0,68,"A34400, A30800","A34400: FF, A30800: FS",JCQV2410,JCQV2410: FF,,Task Dependent,Fixed Duration & Units,
A21530,Not Started,Hercules_15082023-6.18.6,15,System Commissioning & SAT - Chromatography Skid (Duration TBC),26/02/2024 08:00,15/03/2024 17:00,0,41,"A21710, A21570, A21760, A21550","A21710: FS, A21570: FS, A21760: FS, A21550: FS",JCQV1220,JCQV1220: FS,,Task Dependent,Fixed Duration & Units,
A21780,Not Started,Hercules_15082023-6.18.6,20,System Commissioning & SAT - Parts Washers (BELIMED),26/02/2024 08:00,22/03/2024 17:00,0,16,"A30900, A21760, A21710, A21660, A21570, A21540, A21610, A21700, A21620, A21560","A30900: FS, A21760: FS, A21710: FS, A21660: FS, A21570: FS, A21540: FS, A21610: FS, A21700: FS, A21620: FS, A21560: FS",JCQV1230,JCQV1230: FS,,Task Dependent,Fixed Duration & Units,
A21740,Not Started,Hercules_15082023-6.18.6,30,System Commissioning & SAT - Fermenter Package incl Centrifuge and Skid tanks (ZETA incl GEA),26/02/2024 08:00,09/04/2024 17:00,0,-4,"A21710, A21690, A21730, A21560, A21720, A21550, A21700, A21590, A21580, A21570, A7930, A30870, A30880, A21760","A21710: FF 5, A21690: FF 10, A21730: FF 10, A21560: FF 10, A21720: FF 10, A21550: FF 10, A21700: FF 10, A21590: FF 10, A21580: FF 10, A21570: FS, A7930: FS, A30870: FS, A30880: FS, A21760: FS","JCQV1280, JCQV1200","JCQV1280: FS, JCQV1200: FF",,Task Dependent,Fixed Duration & Units,
A21600,Not Started,Hercules_15082023-6.18.6,20,System Commissioning & SAT - Decon Autoclave (GETINGE),26/02/2024 15:00,25/03/2024 15:00,0,40,"A30910, A21570, A21690, A21730, A21540, A21610, A21700, A21620, A21660, A21720, A21760","A30910: FS, A21570: FS, A21690: FS, A21730: FS, A21540: FS, A21610: FS, A21700: FS, A21620: FS, A21660: FS, A21720: FS, A21760: FS",JCQV1150,JCQV1150: FS,,Task Dependent,Fixed Duration & Units,
A21790,Not Started,Hercules_15082023-6.18.6,20,System Commissioning & SAT - Steriliser Autoclaves (GETINGE),26/02/2024 16:00,25/03/2024 16:00,0,25,"A30890, A21570, A21690, A21730, A21610, A21540, A21700, A21620, A21660, A21720, A30890, A21760","A30890: FF, A21570: FS, A21690: FS, A21730: FS, A21610: FS, A21540: FS, A21700: FS, A21620: FS, A21660: FS, A21720: FS, A30890: FS, A21760: FS",JCQV1210,JCQV1210: FS,,Task Dependent,Fixed Duration & Units,
JCQV2170,Not Started,Hercules_15082023-6.5.3,0,todel,29/08/2023 08:00,29/08/2023 08:00,235,235,,,,,,Task Dependent,Fixed Duration & Units,
JCQV1240,Not Started,Hercules_15082023-6.5.3,0,ExPec - Facilities Commissioned,,29/08/2023 08:00,0,174,,,"JCQV1260, JCQV1320, JCQV1310","JCQV1260: FS, JCQV1320: FS, JCQV1310: FS",,Finish Milestone,Fixed Duration and Units/Time,
JCQV1250,Not Started,Hercules_15082023-6.5.3,0,LVHD - Facilities Commissioned,,29/08/2023 08:00,0,174,,,"JCQV1260, JCQV1320, JCQV1310","JCQV1260: FS, JCQV1320: FS, JCQV1310: FS",,Finish Milestone,Fixed Duration and Units/Time,
JCQV1340,Not Started,Hercules_15082023-6.5.3,0,F&F - Facilities Commissioned,,29/08/2023 08:00,0,174,,,"JCQV1320, JCQV1310","JCQV1320: FS, JCQV1310: FS",,Finish Milestone,Fixed Duration and Units/Time,
JCQV1000,Not Started,Hercules_15082023-6.5.3,0,Power Available,,12/01/2024 16:00,0,41,A21800,A21800: FS,"JCQV1640, JCQV1460, JCQV1400, JCQV1380, JCQV1620, JCQV1610, JCQV1450, JCQV1600, JCQV1590, JCQV1560, JCQV1360","JCQV1640: FS, JCQV1460: FS, JCQV1400: FS, JCQV1380: FS, JCQV1620: FS, JCQV1610: FS, JCQV1450: FS, JCQV1600: FS, JCQV1590: FS, JCQV1560: FS, JCQV1360: FS",,Finish Milestone,Fixed Duration and Units/Time,
JCQV1010,Not Started,Hercules_15082023-6.5.3,0,Bio Kill System - Commissioning Complete,,26/01/2024 16:00,50,46,"A21970, A21550","A21970: FS, A21550: FS","JCQV1590, JCQV1560","JCQV1590: FS, JCQV1560: FS",,Finish Milestone,Fixed Duration and Units/Time,
JCQV1020,Not Started,Hercules_15082023-6.5.3,0,Process Air - Commissioning Complete*,,30/01/2024 17:00,18,125,A21570,A21570: FS,JCQV1110,JCQV1110: FS,,Finish Milestone,Fixed Duration and Units/Time,
JCQV1030,Not Started,Hercules_15082023-6.5.3,0,Gases - Commissioning Complete*,,01/02/2024 17:00,16,32,"A21580, A21590, A21570, A21560","A21580: FS, A21590: FS, A21570: FS, A21560: FS","JCQV1110, JCQV1490","JCQV1110: FS, JCQV1490: FS",,Finish Milestone,Fixed Duration and Units/Time,
JCQV1070,Not Started,Hercules_15082023-6.5.3,0,PW - Commissioning Complete*,,08/02/2024 17:00,11,12,A21710,A21710: FS,"JCQV1110, JCQV1060","JCQV1110: FS, JCQV1060: FS",,Finish Milestone,Fixed Duration and Units/Time,
JCQV1130,Not Started,Hercules_15082023-6.5.3,0,WFI - Commissioning Complete*,,23/02/2024 17:00,0,11,A21760,A21760: FF,"JCQV1140, JCQV1110","JCQV1140: FS, JCQV1110: FS",,Finish Milestone,Fixed Duration and Units/Time,
JCQV1050,Not Started,Hercules_15082023-6.5.3,0,Clean Steam - Commissioning Complete*,,23/02/2024 17:00,0,-9,"A21680, A21760","A21680: FS, A21760: FF","JCQV1110, JCQV1040","JCQV1110: FS, JCQV1040: FS",,Finish Milestone,Fixed Duration and Units/Time,
JCQV1180,Not Started,Hercules_15082023-6.5.3,0,GMS - Commissioning Complete,,15/03/2024 09:00,6,2,A21920,A21920: FS,JCQV1490,JCQV1490: FS,,Finish Milestone,Fixed Duration and Units/Time,
JCQV1220,Not Started,Hercules_15082023-6.5.3,0,AEKTA - Commissioning Complete,,15/03/2024 17:00,15,41,A21530,A21530: FS,JCQV1620,JCQV1620: FS,,Finish Milestone,Fixed Duration and Units/Time,
JCQV1350,Not Started,Hercules_15082023-6.5.3,0,EMS - Ready for Qualification (Zone 1),,15/03/2024 17:00,0,-4,A34440,A34440: FF,"JCQV1410, JCQV1360","JCQV1410: FS, JCQV1360: FS",,Finish Milestone,Fixed Duration and Units/Time,
JCQV1230,Not Started,Hercules_15082023-6.5.3,0,GMP Washer - Commissioning Complete,,22/03/2024 17:00,5,16,A21780,A21780: FS,"JCQV1460, JCQV1450","JCQV1460: FS, JCQV1450: FS",,Finish Milestone,Fixed Duration and Units/Time,
JCQV1150,Not Started,Hercules_15082023-6.5.3,0,D.Autoclave - Commissioning Complete,,25/03/2024 15:00,9,40,A21600,A21600: FS,JCQV1610,JCQV1610: FS,,Finish Milestone,Fixed Duration and Units/Time,
JCQV1210,Not Started,Hercules_15082023-6.5.3,0,S.Autoclaves - Commissioning Complete,,25/03/2024 16:00,9,25,A21790,A21790: FS,"JCQV1640, JCQV1600","JCQV1640: FS, JCQV1600: FS",,Finish Milestone,Fixed Duration and Units/Time,
JCQV1480,Not Started,Hercules_15082023-6.5.3,0,HVAC - Balancing Complete (ExPec)*,,05/04/2024 17:00,0,43,A21750,A21750: FF,"JCQV1470, JCQV2000","JCQV1470: FS, JCQV2000: FS",,Finish Milestone,Fixed Duration and Units/Time,
JCQV1800,Not Started,Hercules_15082023-6.5.3,0,HVAC - Balancing Complete (LVHD & F&F)*,,05/04/2024 17:00,0,38,A21750,A21750: FF,"JCQV1790, JCQV2000, JCQV2270","JCQV1790: FS, JCQV2000: FS, JCQV2270: FS",,Finish Milestone,Fixed Duration and Units/Time,
JCQV1200,Not Started,Hercules_15082023-6.5.3,0,Centrifuge - Commissioning Complete,,09/04/2024 17:00,0,-4,A21740,A21740: FF,"JCQV1560, JCQV1280","JCQV1560: FS, JCQV1280: FF",,Finish Milestone,Fixed Duration and Units/Time,
JCQV1280,Not Started,Hercules_15082023-6.5.3,0,Fermenter - Commissioning Complete,,09/04/2024 17:00,0,-4,"A21740, JCQV1200","A21740: FS, JCQV1200: FF",JCQV1590,JCQV1590: FS,,Finish Milestone,Fixed Duration and Units/Time,
JCQV2410,Not Started,Hercules_15082023-6.5.3,0,EMS - Ready for Qualification Zones 2/3/4,,03/05/2024 17:00,68,68,"A34430, A34450","A34430: FF, A34450: FF",,,,Finish Milestone,Fixed Duration and Units/Time,
JCQV2430,Not Started,Hercules_15082023-6.5.4.1.1,5,(CHECK) EMS - Execution Zone 2/3/4,29/08/2023 08:00,04/09/2023 17:00,230,230,,,,,,Task Dependent,Fixed Duration & Units,
JCQV2440,Not Started,Hercules_15082023-6.5.4.1.1,5,(CHECK) EMS - OQ Documentation Review & Approval Zones 2/3/4,29/08/2023 08:00,04/09/2023 17:00,230,230,,,,,,Task Dependent,Fixed Duration & Units,
JCQV2420,Not Started,Hercules_15082023-6.5.4.1.1,10,(CHECK) DLS - CSV Zones 2/3/4,29/08/2023 08:00,11/09/2023 17:00,225,225,,,,,,Task Dependent,Fixed Duration & Units,
JCQV1360,Not Started,Hercules_15082023-6.5.4.1.1,5,EMS - Execution,18/03/2024 08:00,22/03/2024 17:00,0,-4,"JCQV1000, JCQV1350","JCQV1000: FS, JCQV1350: FS","JCQV1410, JCQV1610, JCQV1490, JCQV1400, JCQV1370","JCQV1410: FS, JCQV1610: FS, JCQV1490: FS, JCQV1400: FS, JCQV1370: SS",,Task Dependent,Fixed Duration & Units,
JCQV1370,Not Started,Hercules_15082023-6.5.4.1.1,10,DLS - CSV Zone 1,18/03/2024 08:00,02/04/2024 17:00,0,1,"JCQV1410, JCQV1360","JCQV1410: FF, JCQV1360: SS","JCQV1640, JCQV1460, JCQV1400, JCQV1620, JCQV1450, JCQV1600, JCQV1590, JCQV1560","JCQV1640: FS, JCQV1460: FS, JCQV1400: FF, JCQV1620: FS, JCQV1450: FS, JCQV1600: FS, JCQV1590: FS, JCQV1560: FS",,Task Dependent,Fixed Duration & Units,
JCQV1410,Not Started,Hercules_15082023-6.5.4.1.1,5,EMS - OQ Documentation Review & Approval,25/03/2024 08:00,02/04/2024 17:00,0,1,"JCQV1360, JCQV1350","JCQV1360: FS, JCQV1350: FS","JCQV2040, JCQV1370","JCQV2040: FS, JCQV1370: FF",,Task Dependent,Fixed Duration & Units,
JCQV1140,Not Started,Hercules_15082023-6.5.4.2.1,10,WFI - IOQ Execution,25/03/2024 08:00,09/04/2024 17:00,0,-9,"JCQV1130, JCQV1060","JCQV1130: FS, JCQV1060: FS","JCQV1550, JCQV1590, JCQV1170, A31190","JCQV1550: FS, JCQV1590: FS, JCQV1170: FS, A31190: SS",,Task Dependent,Fixed Duration & Units,
JCQV1170,Not Started,Hercules_15082023-6.5.4.2.1,5,WFI - IOQ Documentation Review & Approval,10/04/2024 08:00,16/04/2024 17:00,0,-9,JCQV1140,JCQV1140: FS,"JCQV1560, JCQV1660, JCQV1190","JCQV1560: FS, JCQV1660: FS, JCQV1190: FS",,Task Dependent,Fixed Duration & Units,
JCQV1060,Not Started,Hercules_15082023-6.5.4.2.3,10,AP System - IOQ Execution,11/03/2024 08:00,22/03/2024 17:00,0,-9,"JCQV1070, JCQV1040","JCQV1070: FS, JCQV1040: FS","JCQV1460, JCQV1550, JCQV1620, JCQV1590, JCQV1560, JCQV1450, JCQV1120, JCQV1140","JCQV1460: FS, JCQV1550: FS, JCQV1620: FS, JCQV1590: FS, JCQV1560: FS, JCQV1450: FS, JCQV1120: FS, JCQV1140: FS",,Task Dependent,Fixed Duration & Units,
JCQV1120,Not Started,Hercules_15082023-6.5.4.2.3,5,AP System - IOQ Documentation Review & Approval,25/03/2024 08:00,02/04/2024 17:00,0,32,JCQV1060,JCQV1060: FS,"JCQV1660, JCQV1160","JCQV1660: FS, JCQV1160: FS",,Task Dependent,Fixed Duration & Units,
JCQV1490,Not Started,Hercules_15082023-6.5.4.2.4,10,Gases (Inc. Process Air) - OQ Execution,25/03/2024 08:00,09/04/2024 17:00,0,-4,"JCQV1180, JCQV1030, JCQV1360","JCQV1180: FS, JCQV1030: FS, JCQV1360: FS","JCQV1640, JCQV1550, JCQV1620, JCQV1610, JCQV1600, JCQV1590, JCQV1560, JCQV1630","JCQV1640: FS, JCQV1550: FS, JCQV1620: FS, JCQV1610: FS, JCQV1600: FS, JCQV1590: FS, JCQV1560: FS, JCQV1630: FS",,Task Dependent,Fixed Duration & Units,
JCQV1630,Not Started,Hercules_15082023-6.5.4.2.4,5,Gases (Inc. Process Air) - OQ Documentation Review & Approval,10/04/2024 08:00,16/04/2024 17:00,0,32,JCQV1490,JCQV1490: FS,"JCQV1660, JCQV1760","JCQV1660: FS, JCQV1760: FS",,Task Dependent,Fixed Duration & Units,
JCQV1040,Not Started,Hercules_15082023-6.5.4.2.5,10,CS - IOQ Execution,26/02/2024 08:00,08/03/2024 17:00,0,-9,JCQV1050,JCQV1050: FS,"JCQV1560, JCQV1550, JCQV1590, JCQV1080, JCQV1060, A31190","JCQV1560: FS, JCQV1550: FS, JCQV1590: FS, JCQV1080: FS, JCQV1060: FS, A31190: SS",,Task Dependent,Fixed Duration & Units,
JCQV1080,Not Started,Hercules_15082023-6.5.4.2.5,5,CS - IOQ Documentation Review & Approval,11/03/2024 08:00,15/03/2024 17:00,0,62,JCQV1040,JCQV1040: FS,"JCQV1660, JCQV1090","JCQV1660: FS, JCQV1090: FS",,Task Dependent,Fixed Duration & Units,
JCQV1560,Not Started,Hercules_15082023-6.5.4.3.1,5,Centrifuge - IOQ Execution (Leverage Vendor IOQ - Covered within PMG Commissioning Activity),17/04/2024 08:00,23/04/2024 17:00,0,-9,"JCQV1170, JCQV1040, JCQV1010, JCQV1060, JCQV1490, JCQV1000, JCQV1370, JCQV1200","JCQV1170: FS, JCQV1040: FS, JCQV1010: FS, JCQV1060: FS, JCQV1490: FS, JCQV1000: FS, JCQV1370: FS, JCQV1200: FS","JCQV1580, JCQV1650, JCQV1570, A31190","JCQV1580: FS, JCQV1650: FS, JCQV1570: FS, A31190: SS",,Task Dependent,Fixed Duration & Units,
JCQV1570,Not Started,Hercules_15082023-6.5.4.3.1,5,"Centrifuge - IOQ Documentation Preparation, Review & Approval",24/04/2024 08:00,30/04/2024 17:00,0,62,JCQV1560,JCQV1560: FS,JCQV1850,JCQV1850: FS,,Task Dependent,Fixed Duration & Units,
JCQV1580,Not Started,Hercules_15082023-6.5.4.3.1,10,Centrifuge - CSV Testing,24/04/2024 08:00,08/05/2024 17:00,0,-9,JCQV1560,JCQV1560: FS,"JCQV1900, JCQV1930, JCQV1860","JCQV1900: FS, JCQV1930: FS, JCQV1860: FS",,Task Dependent,Fixed Duration & Units,
JCQV1860,Not Started,Hercules_15082023-6.5.4.3.1,5,Centrifuge - CSV Documentation Review & Approval,09/05/2024 08:00,15/05/2024 17:00,0,52,JCQV1580,JCQV1580: FS,JCQV1970,JCQV1970: FS,,Task Dependent,Fixed Duration & Units,
JCQV1900,Not Started,Hercules_15082023-6.5.4.3.1,15,Centrifuge - CIP,09/05/2024 08:00,30/05/2024 17:00,0,-9,JCQV1580,JCQV1580: FS,JCQV1980,JCQV1980: FS,,Task Dependent,Fixed Duration & Units,
JCQV1980,Not Started,Hercules_15082023-6.5.4.3.1,15,Centrifuge - SIP,31/05/2024 08:00,20/06/2024 17:00,0,-9,JCQV1900,JCQV1900: FS,"JCQV2000, JCQV2040","JCQV2000: FS, JCQV2040: FS",,Task Dependent,Fixed Duration & Units,
JCQV1260,Not Started,Hercules_15082023-6.5.4.3.10,5,LAF - IOQ Execution,29/08/2023 08:00,04/09/2023 17:00,0,180,"JCQV1250, JCQV1240","JCQV1250: FS, JCQV1240: FS","JCQV1650, JCQV1300, JCQV2280, A31190","JCQV1650: FS, JCQV1300: FS, JCQV2280: FS, A31190: SS",,Task Dependent,Fixed Duration & Units,
JCQV1300,Not Started,Hercules_15082023-6.5.4.3.10,5,LAF - IOQ Documentation Review & Approval,05/09/2023 08:00,11/09/2023 17:00,154,216,JCQV1260,JCQV1260: FS,JCQV1850,JCQV1850: FS,,Task Dependent,Fixed Duration & Units,
JCQV1100,Not Started,Hercules_15082023-6.5.4.3.11,5,BSC - Move to Final Location,07/08/2024 08:00,13/08/2024 17:00,0,0,,,,,As Late As Possible,Task Dependent,Fixed Duration & Units,
JCQV1640,Not Started,Hercules_15082023-6.5.4.3.13,5,S.Autoclave (F&F) - IOQ Execution,10/04/2024 08:00,16/04/2024 17:00,0,16,"JCQV1490, JCQV1000, JCQV1370, JCQV1210","JCQV1490: FS, JCQV1000: FS, JCQV1370: FS, JCQV1210: FS","JCQV1650, JCQV1780, JCQV1770, JCQV2280, A31190","JCQV1650: FS, JCQV1780: FS, JCQV1770: FS, JCQV2280: FS, A31190: SS",,Task Dependent,Fixed Duration & Units,
JCQV1770,Not Started,Hercules_15082023-6.5.4.3.13,5,S.Autoclave (F&F) - IOQ Documentation Review & Approval,17/04/2024 08:00,23/04/2024 17:00,5,67,JCQV1640,JCQV1640: FS,JCQV1850,JCQV1850: FS,,Task Dependent,Fixed Duration & Units,
JCQV1780,Not Started,Hercules_15082023-6.5.4.3.13,5,S.Autoclave (F&F) - CSV Testing,17/04/2024 08:00,23/04/2024 17:00,0,16,JCQV1640,JCQV1640: FS,"JCQV1930, JCQV1920, JCQV1910, JCQV2290","JCQV1930: FS, JCQV1920: FS, JCQV1910: FS, JCQV2290: FS",,Task Dependent,Fixed Duration & Units,
JCQV1910,Not Started,Hercules_15082023-6.5.4.3.13,5,S.Autoclave (F&F) - CSV Documentation Review & Approval,24/04/2024 08:00,30/04/2024 17:00,10,62,JCQV1780,JCQV1780: FS,JCQV1970,JCQV1970: FS,,Task Dependent,Fixed Duration & Units,
JCQV1920,Not Started,Hercules_15082023-6.5.4.3.13,10,S.Autoclave (F&F) - Cycle Development,24/04/2024 08:00,08/05/2024 17:00,5,16,JCQV1780,JCQV1780: FS,"JCQV2040, JCQV2000, JCQV2270","JCQV2040: FS, JCQV2000: FS, JCQV2270: FS",,Task Dependent,Fixed Duration & Units,
JCQV1590,Not Started,Hercules_15082023-6.5.4.3.2,5,Fermenter - IOQ Execution,10/04/2024 08:00,16/04/2024 17:00,0,-4,"JCQV1010, JCQV1140, JCQV1040, JCQV1490, JCQV1060, JCQV1000, JCQV1370, JCQV1280","JCQV1010: FS, JCQV1140: FS, JCQV1040: FS, JCQV1490: FS, JCQV1060: FS, JCQV1000: FS, JCQV1370: FS, JCQV1280: FS","JCQV1680, JCQV1650, JCQV1670, A31190","JCQV1680: FS, JCQV1650: FS, JCQV1670: FS, A31190: SS",,Task Dependent,Fixed Duration & Units,
JCQV1670,Not Started,Hercules_15082023-6.5.4.3.2,5,Fermenter - IOQ Documentation Review & Approval,17/04/2024 08:00,23/04/2024 17:00,5,67,JCQV1590,JCQV1590: FS,JCQV1850,JCQV1850: FS,,Task Dependent,Fixed Duration & Units,
JCQV1680,Not Started,Hercules_15082023-6.5.4.3.2,10,Fermenter - CSV Testing,17/04/2024 08:00,30/04/2024 17:00,0,-4,JCQV1590,JCQV1590: FS,"JCQV1950, JCQV1930, JCQV1940","JCQV1950: FS, JCQV1930: FS, JCQV1940: FS",,Task Dependent,Fixed Duration & Units,
JCQV1940,Not Started,Hercules_15082023-6.5.4.3.2,5,Fermenter - CSV Documentation Review & Approval,01/05/2024 08:00,08/05/2024 17:00,5,57,JCQV1680,JCQV1680: FS,JCQV1970,JCQV1970: FS,,Task Dependent,Fixed Duration & Units,
JCQV1950,Not Started,Hercules_15082023-6.5.4.3.2,15,Fermenter - CIP,01/05/2024 08:00,22/05/2024 17:00,0,-4,JCQV1680,JCQV1680: FS,JCQV1990,JCQV1990: FS,,Task Dependent,Fixed Duration & Units,
JCQV1990,Not Started,Hercules_15082023-6.5.4.3.2,15,Fermenter - SIP,23/05/2024 08:00,13/06/2024 17:00,5,-4,JCQV1950,JCQV1950: FS,"JCQV2000, JCQV2040","JCQV2000: FS, JCQV2040: FS",,Task Dependent,Fixed Duration & Units,
JCQV1600,Not Started,Hercules_15082023-6.5.4.3.3,5,S.Autoclave (ExPec) - IOQ Execution,10/04/2024 08:00,16/04/2024 17:00,0,21,"JCQV1490, JCQV1000, JCQV1370, JCQV1210","JCQV1490: FS, JCQV1000: FS, JCQV1370: FS, JCQV1210: FS","JCQV1650, JCQV1700, JCQV1690, JCQV2280, A31190","JCQV1650: FS, JCQV1700: FS, JCQV1690: FS, JCQV2280: FS, A31190: SS",,Task Dependent,Fixed Duration & Units,
JCQV1690,Not Started,Hercules_15082023-6.5.4.3.3,5,S.Autoclave (ExPec) - IOQ Documentation Review & Approval,17/04/2024 08:00,23/04/2024 17:00,5,67,JCQV1600,JCQV1600: FS,JCQV1850,JCQV1850: FS,,Task Dependent,Fixed Duration & Units,
JCQV1700,Not Started,Hercules_15082023-6.5.4.3.3,5,S.Autoclave (ExPec) - CSV Testing,17/04/2024 08:00,23/04/2024 17:00,0,21,JCQV1600,JCQV1600: FS,"JCQV1930, JCQV1890, JCQV1870, JCQV2290","JCQV1930: FS, JCQV1890: FS, JCQV1870: FS, JCQV2290: FS",,Task Dependent,Fixed Duration & Units,
JCQV1870,Not Started,Hercules_15082023-6.5.4.3.3,5,S.Autoclave (ExPec) - CSV Documentation Review & Approval,24/04/2024 08:00,30/04/2024 17:00,10,62,JCQV1700,JCQV1700: FS,JCQV1970,JCQV1970: FS,,Task Dependent,Fixed Duration & Units,
JCQV1890,Not Started,Hercules_15082023-6.5.4.3.3,10,S.Autoclave (ExPec) - Cycle Development,24/04/2024 08:00,08/05/2024 17:00,30,21,JCQV1700,JCQV1700: FS,"JCQV2040, JCQV2000","JCQV2040: FS, JCQV2000: FS",,Task Dependent,Fixed Duration & Units,
JCQV1450,Not Started,Hercules_15082023-6.5.4.3.4,10,Parts Washer (ExPec) - IOQ Execution,03/04/2024 08:00,16/04/2024 17:00,0,16,"JCQV1000, JCQV1060, JCQV1370, JCQV1230","JCQV1000: FS, JCQV1060: FS, JCQV1370: FS, JCQV1230: FS","JCQV1650, JCQV1520, JCQV1510, JCQV2280, A31190","JCQV1650: FS, JCQV1520: FS, JCQV1510: FS, JCQV2280: FS, A31190: SS",,Task Dependent,Fixed Duration & Units,
JCQV1510,Not Started,Hercules_15082023-6.5.4.3.4,5,Parts Washer (ExPec) - IOQ Documentation Review & Approval,17/04/2024 08:00,23/04/2024 17:00,5,67,JCQV1450,JCQV1450: FS,JCQV1850,JCQV1850: FS,,Task Dependent,Fixed Duration & Units,
JCQV1520,Not Started,Hercules_15082023-6.5.4.3.4,10,Parts Washer (ExPec) - CSV Testing,17/04/2024 08:00,30/04/2024 17:00,0,16,JCQV1450,JCQV1450: FS,"JCQV1930, JCQV1820, JCQV1810, JCQV2290","JCQV1930: FS, JCQV1820: FS, JCQV1810: FS, JCQV2290: FS",,Task Dependent,Fixed Duration & Units,
JCQV1810,Not Started,Hercules_15082023-6.5.4.3.4,5,Parts Washer (ExPec) - CSV Documentation Review & Approval,01/05/2024 08:00,08/05/2024 17:00,5,57,JCQV1520,JCQV1520: FS,JCQV1970,JCQV1970: FS,,Task Dependent,Fixed Duration & Units,
JCQV1820,Not Started,Hercules_15082023-6.5.4.3.4,10,Parts Washer (ExPec) - Cycle Development,01/05/2024 08:00,15/05/2024 17:00,25,16,JCQV1520,JCQV1520: FS,"JCQV2040, JCQV2000","JCQV2040: FS, JCQV2000: FS",,Task Dependent,Fixed Duration & Units,
JCQV1610,Not Started,Hercules_15082023-6.5.4.3.5,5,D.Autoclave - Verification Run,10/04/2024 08:00,16/04/2024 17:00,0,31,"JCQV1490, JCQV1000, JCQV1150, JCQV1360","JCQV1490: FS, JCQV1000: FS, JCQV1150: FS, JCQV1360: FS","JCQV1650, JCQV1720, JCQV1710, JCQV2280","JCQV1650: FS, JCQV1720: FS, JCQV1710: FS, JCQV2280: FS",,Task Dependent,Fixed Duration & Units,
JCQV1720,Not Started,Hercules_15082023-6.5.4.3.5,0,D.Autoclave - CSV Testing,17/04/2024 08:00,17/04/2024 08:00,0,31,JCQV1610,JCQV1610: FS,"JCQV1930, JCQV1730, JCQV2290","JCQV1930: FS, JCQV1730: FS, JCQV2290: FS",,Task Dependent,Fixed Duration & Units,
JCQV1730,Not Started,Hercules_15082023-6.5.4.3.5,0,D.Autoclave - CSV Documentation Review & Approval,17/04/2024 08:00,17/04/2024 08:00,20,72,JCQV1720,JCQV1720: FS,JCQV1970,JCQV1970: FS,,Task Dependent,Fixed Duration & Units,
JCQV1710,Not Started,Hercules_15082023-6.5.4.3.5,5,D.Autoclave - Verification Run Documentation Review & Approval,17/04/2024 08:00,23/04/2024 17:00,5,67,JCQV1610,JCQV1610: FS,JCQV1850,JCQV1850: FS,,Task Dependent,Fixed Duration & Units,
JCQV1620,Not Started,Hercules_15082023-6.5.4.3.6,5,AEKTA - IOQ Execution,10/04/2024 08:00,16/04/2024 17:00,0,26,"JCQV1220, JCQV1060, JCQV1490, JCQV1000, JCQV1370","JCQV1220: FS, JCQV1060: FS, JCQV1490: FS, JCQV1000: FS, JCQV1370: FS","JCQV1650, JCQV1750, JCQV1740, JCQV2280, A31190","JCQV1650: FS, JCQV1750: FS, JCQV1740: FS, JCQV2280: FS, A31190: SS",,Task Dependent,Fixed Duration & Units,
JCQV1740,Not Started,Hercules_15082023-6.5.4.3.6,5,AEKTA - IOQ Documentation Review & Approval,17/04/2024 08:00,23/04/2024 17:00,5,67,JCQV1620,JCQV1620: FS,JCQV1850,JCQV1850: FS,,Task Dependent,Fixed Duration & Units,
JCQV1750,Not Started,Hercules_15082023-6.5.4.3.6,5,AEKTA - CSV Testing (Unicorn Only - All remaining covered by Supplier),17/04/2024 08:00,23/04/2024 17:00,0,26,JCQV1620,JCQV1620: FS,"JCQV1930, JCQV1880, JCQV2290","JCQV1930: FS, JCQV1880: FS, JCQV2290: FS",,Task Dependent,Fixed Duration & Units,
JCQV1880,Not Started,Hercules_15082023-6.5.4.3.6,5,AEKTA - CSV Documentation Review & Approval,24/04/2024 08:00,30/04/2024 17:00,10,62,JCQV1750,JCQV1750: FS,JCQV1970,JCQV1970: FS,,Task Dependent,Fixed Duration & Units,
JCQV1460,Not Started,Hercules_15082023-6.5.4.3.7,10,Parts Washer (F&F) - IOQ Execution,03/04/2024 08:00,16/04/2024 17:00,0,11,"JCQV1000, JCQV1060, JCQV1370, JCQV1230","JCQV1000: FS, JCQV1060: FS, JCQV1370: FS, JCQV1230: FS","JCQV1650, JCQV1540, JCQV1530, JCQV2280, A31190","JCQV1650: FS, JCQV1540: FS, JCQV1530: FS, JCQV2280: FS, A31190: SS",,Task Dependent,Fixed Duration & Units,
JCQV1530,Not Started,Hercules_15082023-6.5.4.3.7,5,Parts Washer (F&F) - IOQ Documentation Review & Approval,17/04/2024 08:00,23/04/2024 17:00,5,67,JCQV1460,JCQV1460: FS,JCQV1850,JCQV1850: FS,,Task Dependent,Fixed Duration & Units,
JCQV1540,Not Started,Hercules_15082023-6.5.4.3.7,10,Parts Washer (F&F) - CSV Testing,17/04/2024 08:00,30/04/2024 17:00,0,11,JCQV1460,JCQV1460: FS,"JCQV1930, JCQV1840, JCQV1830, JCQV2290","JCQV1930: FS, JCQV1840: FS, JCQV1830: FS, JCQV2290: FS",,Task Dependent,Fixed Duration & Units,
JCQV1830,Not Started,Hercules_15082023-6.5.4.3.7,5,Parts Washer (F&F) - CSV Documentation Review & Approval,01/05/2024 08:00,08/05/2024 17:00,5,57,JCQV1540,JCQV1540: FS,JCQV1970,JCQV1970: FS,,Task Dependent,Fixed Duration & Units,
JCQV1840,Not Started,Hercules_15082023-6.5.4.3.7,10,Parts Washer (F&F) - Cycle Development,01/05/2024 08:00,15/05/2024 17:00,0,11,JCQV1540,JCQV1540: FS,"JCQV2040, JCQV2000, JCQV2270","JCQV2040: FS, JCQV2000: FS, JCQV2270: FS",,Task Dependent,Fixed Duration & Units,
JCQV1310,Not Started,Hercules_15082023-6.5.4.3.8,0,Balances - In Final location,,29/08/2023 08:00,0,174,"JCQV1340, JCQV1250, JCQV1240","JCQV1340: FS, JCQV1250: FS, JCQV1240: FS",JCQV1330,JCQV1330: FS,Finish On or After,Finish Milestone,Fixed Duration and Units/Time,
JCQV1330,Not Started,Hercules_15082023-6.5.4.3.8,3,Balances - Calibration,29/08/2023 08:00,31/08/2023 17:00,86,174,JCQV1310,JCQV1310: FS,JCQV1380,JCQV1380: FS,,Task Dependent,Fixed Duration & Units,
JCQV1380,Not Started,Hercules_15082023-6.5.4.3.8,5,Balances - IOQ Execution,12/01/2024 16:00,19/01/2024 16:00,0,88,"JCQV1000, JCQV1330","JCQV1000: FS, JCQV1330: FS","JCQV1650, JCQV1430, JCQV1420, JCQV2280, A31190","JCQV1650: FS, JCQV1430: FS, JCQV1420: FS, JCQV2280: FS, A31190: SS",,Task Dependent,Fixed Duration & Units,
JCQV1430,Not Started,Hercules_15082023-6.5.4.3.8,3,Balances - CSV Testing,19/01/2024 16:00,24/01/2024 16:00,0,88,JCQV1380,JCQV1380: FS,"JCQV1930, JCQV1440, JCQV2290","JCQV1930: FS, JCQV1440: FS, JCQV2290: FS",,Task Dependent,Fixed Duration & Units,
JCQV1420,Not Started,Hercules_15082023-6.5.4.3.8,5,Balances - IOQ Documentation Review & Approval,19/01/2024 16:00,26/01/2024 16:00,65,127,JCQV1380,JCQV1380: FS,JCQV1850,JCQV1850: FS,,Task Dependent,Fixed Duration & Units,
JCQV1440,Not Started,Hercules_15082023-6.5.4.3.8,5,Balances - CSV Documentation Review & Approval,24/01/2024 16:00,31/01/2024 16:00,72,124,JCQV1430,JCQV1430: FS,JCQV1970,JCQV1970: FS,,Task Dependent,Fixed Duration & Units,
JCQV1320,Not Started,Hercules_15082023-6.5.4.3.9,0,Freezers - MC,,29/08/2023 08:00,139,175,"JCQV1340, JCQV1250, JCQV1240","JCQV1340: FS, JCQV1250: FS, JCQV1240: FS",JCQV1400,JCQV1400: FS,Finish On or After,Finish Milestone,Fixed Duration and Units/Time,
JCQV1400,Not Started,Hercules_15082023-6.5.4.3.9,10,Freezers - IOPQ Execution (Inc. Mapping),25/03/2024 08:00,09/04/2024 17:00,0,36,"JCQV1000, JCQV1360, JCQV1370, JCQV1320","JCQV1000: FS, JCQV1360: FS, JCQV1370: FF, JCQV1320: FS","JCQV1650, JCQV1500, JCQV2280","JCQV1650: FS, JCQV1500: FS, JCQV2280: FS",,Task Dependent,Fixed Duration & Units,
JCQV1500,Not Started,Hercules_15082023-6.5.4.3.9,5,Freezers - IOPQ Documentation Review & Approval,10/04/2024 08:00,16/04/2024 17:00,10,72,JCQV1400,JCQV1400: FS,JCQV1850,JCQV1850: FS,,Task Dependent,Fixed Duration & Units,
JCQV2010,Not Started,Hercules_15082023-6.5.4.4.1,10,Cleanroom - OQ Execution (Expec & LVHD),21/06/2024 08:00,04/07/2024 17:00,0,-9,JCQV2000,JCQV2000: FS,"JCQV2020, JCQV2210","JCQV2020: FS, JCQV2210: FS",,Task Dependent,Fixed Duration & Units,
JCQV2030,Not Started,Hercules_15082023-6.5.4.4.1,5,Go White (Expec & LVHD),01/07/2024 08:00,08/07/2024 08:00,25,25,JCQV2080,JCQV2080: SF,,,,Task Dependent,Fixed Duration & Units,
JCQV2210,Not Started,Hercules_15082023-6.5.4.4.1,1,Cleanroom - OQ Interim Report Available (Expec & LVHD) - Approach to be agreed with Vendor,05/07/2024 08:00,05/07/2024 17:00,0,-9,JCQV2010,JCQV2010: FS,JCQV2040,JCQV2040: FS,,Task Dependent,Fixed Duration & Units,
JCQV2020,Not Started,Hercules_15082023-6.5.4.4.1,10,Cleanroom - OQ Documentation Review & Approval (Expec & LVHD),05/07/2024 08:00,18/07/2024 17:00,6,-3,JCQV2010,JCQV2010: FS,JCQV2080,JCQV2080: FF,,Task Dependent,Fixed Duration & Units,
JCQV2080,Not Started,Hercules_15082023-6.5.4.4.1,15,Cleanroom - PQ Execution (Expec & LVHD),08/07/2024 08:00,26/07/2024 17:00,0,-9,"JCQV2060, JCQV2020","JCQV2060: FS, JCQV2020: FF","JCQV2140, JCQV2030, JCQV2150, JCQV2230, JCQV2220","JCQV2140: FS, JCQV2030: SF, JCQV2150: FS, JCQV2230: FS, JCQV2220: FS",,Task Dependent,Fixed Duration & Units,
JCQV2150,Not Started,Hercules_15082023-6.5.4.4.1,10,Cleanroom - PQ Documentation Review & Approval  (Expec & LVHD) (Inc. Environmental Monitoring Results),29/07/2024 08:00,13/08/2024 17:00,0,-9,JCQV2080,JCQV2080: FS,"JCQV2180, JCQV2230, JCQV2220","JCQV2180: FS, JCQV2230: FS, JCQV2220: FS",,Task Dependent,Fixed Duration & Units,
JCQV2300,Not Started,Hercules_15082023-6.5.4.4.2,15,Cleanroom - OQ Execution (F&F),16/05/2024 08:00,06/06/2024 17:00,0,11,JCQV2270,JCQV2270: FS,"JCQV2320, JCQV2310","JCQV2320: FS, JCQV2310: FS",,Task Dependent,Fixed Duration & Units,
JCQV2370,Not Started,Hercules_15082023-6.5.4.4.2,5,Go White (F&F),03/06/2024 08:00,10/06/2024 08:00,45,45,JCQV2260,JCQV2260: SF,,,,Task Dependent,Fixed Duration & Units,
JCQV2310,Not Started,Hercules_15082023-6.5.4.4.2,1,Cleanroom - OQ Interim Report Available (F&F) - Approach to be agreed with Vendor,07/06/2024 08:00,07/06/2024 17:00,0,11,JCQV2300,JCQV2300: FS,JCQV2330,JCQV2330: FS,,Task Dependent,Fixed Duration & Units,
JCQV2320,Not Started,Hercules_15082023-6.5.4.4.2,10,Cleanroom - OQ Documentation Review & Approval (F&F),07/06/2024 08:00,20/06/2024 17:00,6,17,JCQV2300,JCQV2300: FS,JCQV2260,JCQV2260: FF,,Task Dependent,Fixed Duration & Units,
JCQV2260,Not Started,Hercules_15082023-6.5.4.4.2,15,Cleanroom - PQ Execution (F&F Area),10/06/2024 08:00,28/06/2024 17:00,0,11,"JCQV2330, JCQV2320","JCQV2330: FS, JCQV2320: FF","JCQV2370, JCQV2350, JCQV2340, JCQV2240","JCQV2370: SF, JCQV2350: FS, JCQV2340: FS, JCQV2240: FS",,Task Dependent,Fixed Duration & Units,
JCQV2350,Not Started,Hercules_15082023-6.5.4.4.2,10,Cleanroom - PQ Documentation Review & Approval  (F&F) (Inc. Environmental Monitoring Results),01/07/2024 08:00,12/07/2024 17:00,0,11,JCQV2260,JCQV2260: FS,"JCQV2360, JCQV2240, JCQV2400","JCQV2360: FS, JCQV2240: FS, JCQV2400: FS",,Task Dependent,Fixed Duration & Units,
JCQV1110,Not Started,Hercules_15082023-6.5.4.5,0,[MS] All Clean Utilities Commissioned,,23/02/2024 17:00,116,107,"JCQV1050, JCQV1030, JCQV1020, JCQV1070, JCQV1130","JCQV1050: FS, JCQV1030: FS, JCQV1020: FS, JCQV1070: FS, JCQV1130: FS","JCQV2380, JCQV2450","JCQV2380: FS, JCQV2450: FF",,Finish Milestone,Fixed Duration and Units/Time,
JCQV1470,Not Started,Hercules_15082023-6.5.4.5,0,[MS] HVAC Balancing Complete (ExPec),,05/04/2024 17:00,88,79,JCQV1480,JCQV1480: FS,"JCQV2380, JCQV2450","JCQV2380: FS, JCQV2450: FF",,Finish Milestone,Fixed Duration and Units/Time,
JCQV1790,Not Started,Hercules_15082023-6.5.4.5,0,[MS] HVAC Balancing Complete (LVHD & F&F),,05/04/2024 17:00,88,79,JCQV1800,JCQV1800: FS,"JCQV2380, JCQV2450","JCQV2380: FS, JCQV2450: FF",,Finish Milestone,Fixed Duration and Units/Time,
JCQV1550,Not Started,Hercules_15082023-6.5.4.5,0,[MS] All Utilities IOQ Execution Complete,,09/04/2024 17:00,86,77,"JCQV1040, JCQV1140, JCQV1490, JCQV1060","JCQV1040: FS, JCQV1140: FS, JCQV1490: FS, JCQV1060: FS","JCQV2380, JCQV2450","JCQV2380: FS, JCQV2450: FF",,Finish Milestone,Fixed Duration and Units/Time,
JCQV1660,Not Started,Hercules_15082023-6.5.4.5,0,[MS] All Utilities IOQ Documentation Review & Approved,,16/04/2024 17:00,81,72,"JCQV1080, JCQV1170, JCQV1630, JCQV1120","JCQV1080: FS, JCQV1170: FS, JCQV1630: FS, JCQV1120: FS","JCQV2380, JCQV2450","JCQV2380: FS, JCQV2450: FF",,Finish Milestone,Fixed Duration and Units/Time,
JCQV2280,Not Started,Hercules_15082023-6.5.4.5,0,[MS] All Equipment IOQ Execution Complete (Exc. Fermenter & Centrifuge),,16/04/2024 17:00,20,31,"JCQV1640, JCQV1460, JCQV1260, JCQV1400, JCQV1380, JCQV1620, JCQV1610, JCQV1450, JCQV1600","JCQV1640: FS, JCQV1460: FS, JCQV1260: FS, JCQV1400: FS, JCQV1380: FS, JCQV1620: FS, JCQV1610: FS, JCQV1450: FS, JCQV1600: FS","JCQV2270, JCQV2450","JCQV2270: FS, JCQV2450: FF",,Finish Milestone,Fixed Duration and Units/Time,
JCQV1650,Not Started,Hercules_15082023-6.5.4.5,0,[MS] All Equipment IOQ Execution Complete,,23/04/2024 17:00,40,31,"JCQV1640, JCQV1460, JCQV1260, JCQV1400, JCQV1380, JCQV1620, JCQV1610, JCQV1450, JCQV1600, JCQV1590, JCQV1560","JCQV1640: FS, JCQV1460: FS, JCQV1260: FS, JCQV1400: FS, JCQV1380: FS, JCQV1620: FS, JCQV1610: FS, JCQV1450: FS, JCQV1600: FS, JCQV1590: FS, JCQV1560: FS","JCQV2000, JCQV2040, JCQV2450","JCQV2000: FS, JCQV2040: FS, JCQV2450: FF",,Finish Milestone,Fixed Duration and Units/Time,
JCQV1850,Not Started,Hercules_15082023-6.5.4.5,0,[MS] All Equipment IOQ Documentation Review & Approved,,30/04/2024 17:00,71,62,"JCQV1770, JCQV1530, JCQV1300, JCQV1710, JCQV1690, JCQV1670, JCQV1510, JCQV1570, JCQV1740, JCQV1500, JCQV1420","JCQV1770: FS, JCQV1530: FS, JCQV1300: FS, JCQV1710: FS, JCQV1690: FS, JCQV1670: FS, JCQV1510: FS, JCQV1570: FS, JCQV1740: FS, JCQV1500: FS, JCQV1420: FS","JCQV2380, JCQV2450","JCQV2380: FS, JCQV2450: FF",,Finish Milestone,Fixed Duration and Units/Time,
JCQV2290,Not Started,Hercules_15082023-6.5.4.5,0,[MS] All Equipment CSV Testing Complete (Exc. Fermenter & Centrifuge),,30/04/2024 17:00,10,21,"JCQV1780, JCQV1540, JCQV1430, JCQV1750, JCQV1720, JCQV1520, JCQV1700","JCQV1780: FS, JCQV1540: FS, JCQV1430: FS, JCQV1750: FS, JCQV1720: FS, JCQV1520: FS, JCQV1700: FS","JCQV2270, JCQV2450","JCQV2270: FS, JCQV2450: FF",,Finish Milestone,Fixed Duration and Units/Time,
JCQV1930,Not Started,Hercules_15082023-6.5.4.5,0,[MS] All Equipment CSV Testing Complete,,08/05/2024 17:00,30,21,"JCQV1780, JCQV1540, JCQV1430, JCQV1750, JCQV1720, JCQV1520, JCQV1700, JCQV1680, JCQV1580","JCQV1780: FS, JCQV1540: FS, JCQV1430: FS, JCQV1750: FS, JCQV1720: FS, JCQV1520: FS, JCQV1700: FS, JCQV1680: FS, JCQV1580: FS","JCQV2000, JCQV2040, JCQV2450","JCQV2000: FS, JCQV2040: FS, JCQV2450: FF",,Finish Milestone,Fixed Duration and Units/Time,
JCQV1960,Not Started,Hercules_15082023-6.5.4.5,0,[MS] All Utilities PQ Complete,,08/05/2024 17:00,41,32,"JCQV1090, JCQV1760, JCQV1160, JCQV1190","JCQV1090: FS, JCQV1760: FS, JCQV1160: FS, JCQV1190: FS","JCQV2040, JCQV2450","JCQV2040: FS, JCQV2450: FF",,Finish Milestone,Fixed Duration and Units/Time,
JCQV1970,Not Started,Hercules_15082023-6.5.4.5,0,[MS] All Equipment CSV Documentation Review & Approved,,15/05/2024 17:00,61,52,"JCQV1910, JCQV1830, JCQV1730, JCQV1870, JCQV1940, JCQV1810, JCQV1860, JCQV1880, JCQV1440","JCQV1910: FS, JCQV1830: FS, JCQV1730: FS, JCQV1870: FS, JCQV1940: FS, JCQV1810: FS, JCQV1860: FS, JCQV1880: FS, JCQV1440: FS","JCQV2380, JCQV2450","JCQV2380: FS, JCQV2450: FF",,Finish Milestone,Fixed Duration and Units/Time,
JCQV2270,Not Started,Hercules_15082023-6.5.4.5,0,[MS] Ready for Room OQ (F&F),,15/05/2024 17:00,0,11,"JCQV1840, JCQV1920, JCQV2280, JCQV2290, JCQV1800","JCQV1840: FS, JCQV1920: FS, JCQV2280: FS, JCQV2290: FS, JCQV1800: FS","JCQV2300, JCQV2450","JCQV2300: FS, JCQV2450: FF",,Finish Milestone,Fixed Duration and Units/Time,
JCQV2330,Not Started,Hercules_15082023-6.5.4.5,0,[MS] Start Cleanroom PQ (F&F),,07/06/2024 17:00,0,11,JCQV2310,JCQV2310: FS,"JCQV2390, JCQV2260, JCQV2450","JCQV2390: FS, JCQV2260: FS, JCQV2450: FF",,Finish Milestone,Fixed Duration and Units/Time,
JCQV2390,Not Started,Hercules_15082023-6.5.4.5,0,[MS] Start Equipment PQ (F&F),,07/06/2024 17:00,0,16,JCQV2330,JCQV2330: FS,"JCQV2200, JCQV2190, JCQV2450","JCQV2200: FS, JCQV2190: FS, JCQV2450: FF",,Finish Milestone,Fixed Duration and Units/Time,
JCQV2000,Not Started,Hercules_15082023-6.5.4.5,0,[MS] Ready for Room OQ (Expec & LVHD),,20/06/2024 17:00,0,-9,"JCQV1920, JCQV1840, JCQV1980, JCQV1890, JCQV1820, JCQV1990, JCQV1930, JCQV1650, JCQV1800, JCQV1480","JCQV1920: FS, JCQV1840: FS, JCQV1980: FS, JCQV1890: FS, JCQV1820: FS, JCQV1990: FS, JCQV1930: FS, JCQV1650: FS, JCQV1800: FS, JCQV1480: FS","JCQV2010, JCQV2450","JCQV2010: FS, JCQV2450: FF",,Finish Milestone,Fixed Duration and Units/Time,
JCQV2340,Not Started,Hercules_15082023-6.5.4.5,0,[MS] Cleanroom PQ Execution Complete (F&F),,28/06/2024 17:00,30,21,JCQV2260,JCQV2260: FS,"JCQV2380, JCQV2450","JCQV2380: FS, JCQV2450: FF",,Finish Milestone,Fixed Duration and Units/Time,
JCQV2040,Not Started,Hercules_15082023-6.5.4.5,0,[MS] All Pre-Requisites for Engineering Runs Complete,,05/07/2024 17:00,0,-9,"JCQV1920, JCQV1840, JCQV1890, JCQV1820, JCQV1990, JCQV1980, JCQV1960, JCQV1410, JCQV1930, JCQV1650, JCQV2210","JCQV1920: FS, JCQV1840: FS, JCQV1890: FS, JCQV1820: FS, JCQV1990: FS, JCQV1980: FS, JCQV1960: FS, JCQV1410: FS, JCQV1930: FS, JCQV1650: FS, JCQV2210: FS","JCQV2050, JCQV2060, JCQV2070, JCQV2450","JCQV2050: FS, JCQV2060: FS, JCQV2070: FS, JCQV2450: FF",,Finish Milestone,Fixed Duration and Units/Time,
JCQV2050,Not Started,Hercules_15082023-6.5.4.5,0,[MS] Start Equipment PQ (Expec & LVHD),,05/07/2024 17:00,0,-4,JCQV2040,JCQV2040: FS,"JCQV2130, JCQV2120, JCQV2110, JCQV2100, JCQV2090, JCQV2450","JCQV2130: FS, JCQV2120: FS, JCQV2110: FS, JCQV2100: FS, JCQV2090: FS, JCQV2450: FF",,Finish Milestone,Fixed Duration and Units/Time,
JCQV2060,Not Started,Hercules_15082023-6.5.4.5,0,[MS] Start Cleanroom PQ (Expec & LVHD),,05/07/2024 17:00,0,-9,JCQV2040,JCQV2040: FS,"JCQV2080, JCQV2450","JCQV2080: FS, JCQV2450: FF",,Finish Milestone,Fixed Duration and Units/Time,
JCQV2240,Not Started,Hercules_15082023-6.5.4.5,0,[MS] GMP Readiness - F&F,,12/07/2024 17:00,20,11,"JCQV2350, JCQV2260","JCQV2350: FS, JCQV2260: FS","JCQV2380, JCQV2450","JCQV2380: FS, JCQV2450: FF",,Finish Milestone,Fixed Duration and Units/Time,
JCQV2360,Not Started,Hercules_15082023-6.5.4.5,0,[MS] Cleanroom PQ - Report Available (F&F),,12/07/2024 17:00,20,11,JCQV2350,JCQV2350: FS,"JCQV2380, JCQV2450","JCQV2380: FS, JCQV2450: FF",,Finish Milestone,Fixed Duration and Units/Time,
JCQV2140,Not Started,Hercules_15082023-6.5.4.5,0,[MS] Cleanroom PQ Execution Complete (Expec & LVHD),,26/07/2024 17:00,10,1,JCQV2080,JCQV2080: FS,"JCQV2380, JCQV2450","JCQV2380: FS, JCQV2450: FF",,Finish Milestone,Fixed Duration and Units/Time,
JCQV2160,Not Started,Hercules_15082023-6.5.4.5,0,[MS] All Equipment PQ Complete,,06/08/2024 17:00,5,-4,"JCQV2200, JCQV2190, JCQV2130, JCQV2120, JCQV2110, JCQV2100, JCQV2090","JCQV2200: FS, JCQV2190: FS, JCQV2130: FS, JCQV2120: FS, JCQV2110: FS, JCQV2100: FS, JCQV2090: FS","JCQV2380, JCQV2450","JCQV2380: FS, JCQV2450: FF",,Finish Milestone,Fixed Duration and Units/Time,
JCQV2180,Not Started,Hercules_15082023-6.5.4.5,0,[MS] Cleanroom PQ - Report Available (Expec & LVHD),,13/08/2024 17:00,0,-9,JCQV2150,JCQV2150: FS,"JCQV2380, JCQV2450","JCQV2380: FF, JCQV2450: FF",,Finish Milestone,Fixed Duration and Units/Time,
JCQV2220,Not Started,Hercules_15082023-6.5.4.5,0,[MS] GMP Readiness - ExPec,,13/08/2024 17:00,0,-9,"JCQV2150, JCQV2080","JCQV2150: FS, JCQV2080: FS","JCQV2380, JCQV2450, A31400","JCQV2380: FS, JCQV2450: FF, A31400: FS",,Finish Milestone,Fixed Duration and Units/Time,
JCQV2230,Not Started,Hercules_15082023-6.5.4.5,0,[MS] GMP Readiness - LVHD,,13/08/2024 17:00,0,-9,"JCQV2150, JCQV2080","JCQV2150: FS, JCQV2080: FS","JCQV2380, JCQV2450, JCQV2460","JCQV2380: FS, JCQV2450: FF, JCQV2460: FS",,Finish Milestone,Fixed Duration and Units/Time,
JCQV2450,Not Started,Hercules_15082023-6.5.4.5,0,[MS] Project Completion,,13/08/2024 17:00,0,-9,"JCQV1110, JCQV1470, JCQV1790, JCQV1550, JCQV1660, JCQV1650, JCQV2280, JCQV1850, JCQV1930, JCQV2290, JCQV1960, JCQV1970, JCQV2270, JCQV2330, JCQV2390, JCQV2000, JCQV2040, JCQV2050, JCQV2060, JCQV2340, JCQV2240, JCQV2360, JCQV2140, JCQV2160, JCQV2180, JCQV2220, JCQV2230","JCQV1110: FF, JCQV1470: FF, JCQV1790: FF, JCQV1550: FF, JCQV1660: FF, JCQV1650: FF, JCQV2280: FF, JCQV1850: FF, JCQV1930: FF, JCQV2290: FF, JCQV1960: FF, JCQV1970: FF, JCQV2270: FF, JCQV2330: FF, JCQV2390: FF, JCQV2000: FF, JCQV2040: FF, JCQV2050: FF, JCQV2060: FF, JCQV2340: FF, JCQV2240: FF, JCQV2360: FF, JCQV2140: FF, JCQV2160: FF, JCQV2180: FF, JCQV2220: FF, JCQV2230: FF",,,Finish On or Before,Finish Milestone,Fixed Duration and Units/Time,
JCQV1090,Not Started,Hercules_15082023-6.5.4.6.1,5,"CS - PQ Execution (Ph1 - All Sample Points Available, Ph2 - Few Sample Points)",18/03/2024 08:00,22/03/2024 17:00,30,62,JCQV1080,JCQV1080: FS,JCQV1960,JCQV1960: FS,,Task Dependent,Fixed Duration & Units,
JCQV1160,Not Started,Hercules_15082023-6.5.4.6.1,25,"AP System - PQ Execution (Ph1 - All Sample Points Available, Ph2 - Few Sample Points)",03/04/2024 08:00,08/05/2024 17:00,0,32,JCQV1120,JCQV1120: FS,JCQV1960,JCQV1960: FS,,Task Dependent,Fixed Duration & Units,
JCQV1190,Not Started,Hercules_15082023-6.5.4.6.1,10,"WFI - (Ph1 - All Sample Points Available, Ph2 - Few Sample Points)",17/04/2024 08:00,30/04/2024 17:00,5,37,JCQV1170,JCQV1170: FS,JCQV1960,JCQV1960: FS,,Task Dependent,Fixed Duration & Units,
JCQV1760,Not Started,Hercules_15082023-6.5.4.6.1,15,Gases (Inc. Process Air) - PQ Execution,17/04/2024 08:00,08/05/2024 17:00,0,32,JCQV1630,JCQV1630: FS,JCQV1960,JCQV1960: FS,,Task Dependent,Fixed Duration & Units,
JCQV2090,Not Started,Hercules_15082023-6.5.4.6.2,15,Centrifuge - PQ Execution,08/07/2024 08:00,26/07/2024 17:00,5,1,JCQV2050,JCQV2050: FS,JCQV2160,JCQV2160: FS,,Task Dependent,Fixed Duration & Units,
JCQV2100,Not Started,Hercules_15082023-6.5.4.6.3,15,Fermenter - PQ Execution,08/07/2024 08:00,26/07/2024 17:00,5,1,JCQV2050,JCQV2050: FS,JCQV2160,JCQV2160: FS,,Task Dependent,Fixed Duration & Units,
JCQV2130,Not Started,Hercules_15082023-6.5.4.6.4,15,AEKTA - PQ Execution,08/07/2024 08:00,26/07/2024 17:00,5,1,JCQV2050,JCQV2050: FS,JCQV2160,JCQV2160: FS,,Task Dependent,Fixed Duration & Units,
JCQV2120,Not Started,Hercules_15082023-6.5.4.6.5,20,S.Autoclave (Expec) - PQ Execution,08/07/2024 08:00,06/08/2024 17:00,0,-4,JCQV2050,JCQV2050: FS,JCQV2160,JCQV2160: FS,,Task Dependent,Fixed Duration & Units,
JCQV2110,Not Started,Hercules_15082023-6.5.4.6.6,15,Parts Washer (Expec) - PQ Execution,08/07/2024 08:00,26/07/2024 17:00,5,1,JCQV2050,JCQV2050: FS,JCQV2160,JCQV2160: FS,,Task Dependent,Fixed Duration & Units,
JCQV2190,Not Started,Hercules_15082023-6.5.4.6.7,15,Parts Washer (F&F) - PQ Execution,10/06/2024 08:00,28/06/2024 17:00,25,21,JCQV2390,JCQV2390: FS,JCQV2160,JCQV2160: FS,,Task Dependent,Fixed Duration & Units,
JCQV2200,Not Started,Hercules_15082023-6.5.4.6.8,20,S.Autoclave (F&F) - PQ Execution,10/06/2024 08:00,05/07/2024 17:00,20,16,JCQV2390,JCQV2390: FS,JCQV2160,JCQV2160: FS,,Task Dependent,Fixed Duration & Units,
JCQV2070,Not Started,Hercules_15082023-6.5.5.10,10,Engineering Run #01 (Duration / Staggering tbc.),08/07/2024 08:00,19/07/2024 17:00,0,10,JCQV2040,JCQV2040: FS,JCQV2250,JCQV2250: SS 5,,Task Dependent,Fixed Duration & Units,
JCQV2250,Not Started,Hercules_15082023-6.5.5.10,10,Engineering Run #02 (Duration / Staggering tbc.),15/07/2024 08:00,26/07/2024 17:00,10,10,JCQV2070,JCQV2070: SS 5,,,,Task Dependent,Fixed Duration & Units,
A21820,Not Started,Hercules_15082023-6.COMMISSIONING,89,Power On ESTIMATE (TBC),29/08/2023 08:00,12/01/2024 16:00,0,21,,,A21800,A21800: FS,,Task Dependent,Fixed Duration & Units,
A21750,Not Started,Hercules_15082023-6.COMMISSIONING,5,HVAC Balancing (global),28/03/2024 08:00,05/04/2024 17:00,0,38,"A7360, A30820, A30800","A7360: FS, A30820: FS, A30800: FS","A1660, JCQV1480, JCQV1800","A1660: FF, JCQV1480: FF, JCQV1800: FF",,Task Dependent,Fixed Duration & Units,
A7920,Not Started,Hercules_15082023-6.COMMISSIONING.MC,0,MC Biowaste Storage & Inactivation Skid,,29/08/2023 08:00,142,235,,,A4930,A4930: FF,,Finish Milestone,Fixed Duration and Units/Time,
A30940,Not Started,Hercules_15082023-6.COMMISSIONING.MC,0,MC Biowaste,,29/08/2023 08:00,142,235,,,A4930,A4930: FF,,Finish Milestone,Fixed Duration and Units/Time,
A34390,Not Started,Hercules_15082023-6.COMMISSIONING.MC,0,MC EXISTING SWITCH BOARD BE-79i-1230-HV-001 (FELD 2),,01/12/2023 16:00,166,0,,,,,Finish On,Finish Milestone,Fixed Duration and Units/Time,
A40340,Not Started,Hercules_15082023-6.COMMISSIONING.MC,0,MC EXISTING SWITCH BOARD BE-79i-1230-HV-001 (FELD 5),,01/12/2023 16:00,166,0,,,,,Finish On,Finish Milestone,Fixed Duration and Units/Time,
A40350,Not Started,Hercules_15082023-6.COMMISSIONING.MC,0,MC EXISTING SWITCH BOARD BE-79i-1230-HV-001 (FELD 6),,01/12/2023 16:00,166,0,,,,,Finish On,Finish Milestone,Fixed Duration and Units/Time,
A30850,Not Started,Hercules_15082023-6.COMMISSIONING.MC,0,MC Heat Recovery,,08/01/2024 17:00,0,140,A40300,A40300: FF,"A21640, A4930","A21640: FS, A4930: FF",,Finish Milestone,Fixed Duration and Units/Time,
A34350,Not Started,Hercules_15082023-6.COMMISSIONING.MC,0,MC Domestic Water,,09/01/2024 17:00,14,14,A34340,A34340: FF,"A21710, A21760","A21710: FS, A21760: FS",,Finish Milestone,Fixed Duration and Units/Time,
A40510,Not Started,Hercules_15082023-6.COMMISSIONING.MC,0,MC Sewerage (Foul) Water,,09/01/2024 17:00,0,139,A40500,A40500: FF,A40520,A40520: FS,,Finish Milestone,Fixed Duration and Units/Time,
A7420,Not Started,Hercules_15082023-6.COMMISSIONING.MC,0,MC AP Water,,17/01/2024 17:00,8,8,A7590,A7590: FF,"A21760, A21710, A4930","A21760: FS, A21710: FS, A4930: FF",,Finish Milestone,Fixed Duration and Units/Time,
A7460,Not Started,Hercules_15082023-6.COMMISSIONING.MC,0,MC Pure Steam Condensate,,17/01/2024 17:00,0,8,A7630,A7630: FF,"A21560, A21680, A4930","A21560: FS, A21680: FS, A4930: FF",,Finish Milestone,Fixed Duration and Units/Time,
A7380,Not Started,Hercules_15082023-6.COMMISSIONING.MC,0,MC Oxygen,,18/01/2024 17:00,0,32,A7540,A7540: FF,"A21590, A4930","A21590: FS, A4930: FF",,Finish Milestone,Fixed Duration and Units/Time,
A30840,Not Started,Hercules_15082023-6.COMMISSIONING.MC,0,MC LTHW,,18/01/2024 17:00,49,142,A34150,A34150: FF,A4930,A4930: FF,,Finish Milestone,Fixed Duration and Units/Time,
A7370,Not Started,Hercules_15082023-6.COMMISSIONING.MC,0,MC Nitrogen,,18/01/2024 17:00,0,32,A7530,A7530: FF,"A21580, A4930","A21580: FS, A4930: FF",,Finish Milestone,Fixed Duration and Units/Time,
A7430,Not Started,Hercules_15082023-6.COMMISSIONING.MC,0,MC Pure Steam,,19/01/2024 17:00,15,6,A7600,A7600: FF,"A21760, A4930","A21760: FS, A4930: FF",,Finish Milestone,Fixed Duration and Units/Time,
A7440,Not Started,Hercules_15082023-6.COMMISSIONING.MC,0,MC Softened Water,,19/01/2024 17:00,0,31,A7610,A7610: FF,"A21660, A4930","A21660: FS, A4930: FF",,Finish Milestone,Fixed Duration and Units/Time,
A7450,Not Started,Hercules_15082023-6.COMMISSIONING.MC,0,MC Process Vent,,19/01/2024 17:00,0,6,A7620,A7620: FF,"A21710, A21700, A4930","A21710: FS, A21700: FS, A4930: FF",,Finish Milestone,Fixed Duration and Units/Time,
A7470,Not Started,Hercules_15082023-6.COMMISSIONING.MC,0,MC Relief Vent,,19/01/2024 17:00,0,31,A7640,A7640: FF,"A21620, A4930","A21620: FS, A4930: FF",,Finish Milestone,Fixed Duration and Units/Time,
A7480,Not Started,Hercules_15082023-6.COMMISSIONING.MC,0,MC Plant Steam,,19/01/2024 17:00,0,6,A7650,A7650: FF,"A21710, A21730, A4930","A21710: FS, A21730: FS, A4930: FF",,Finish Milestone,Fixed Duration and Units/Time,
A30830,Not Started,Hercules_15082023-6.COMMISSIONING.MC,0,MC WAI (Industrial Waste),,19/01/2024 17:00,6,6,A34320,A34320: FF,"A21710, A4930","A21710: FS, A4930: FF",,Finish Milestone,Fixed Duration and Units/Time,
A7410,Not Started,Hercules_15082023-6.COMMISSIONING.MC,0,MC Process Air,,23/01/2024 17:00,0,4,A7580,A7580: FF,"A21710, A21760, A21570, A4930","A21710: FS, A21760: FS, A21570: FS, A4930: FF",,Finish Milestone,Fixed Duration and Units/Time,
A7490,Not Started,Hercules_15082023-6.COMMISSIONING.MC,0,MC WFI,,23/01/2024 17:00,13,4,A7660,A7660: FF,"A21760, A4930","A21760: FS, A4930: FF",,Finish Milestone,Fixed Duration and Units/Time,
A7390,Not Started,Hercules_15082023-6.COMMISSIONING.MC,0,MC Chilled Water Supply 7 13,,01/02/2024 17:00,0,-3,A7560,A7560: FF,"A21760, A21690, A4930","A21760: FS, A21690: FS, A4930: FF",,Finish Milestone,Fixed Duration and Units/Time,
A34380,Not Started,Hercules_15082023-6.COMMISSIONING.MC,0,MC LV PANEL BOARD BE-79i-3030-SS-006 (2nd Feb 24),,02/02/2024 16:00,0,-4,,,"A21710, A21760","A21710: FS -4, A21760: FS",Finish On,Finish Milestone,Fixed Duration and Units/Time,
A7930,Not Started,Hercules_15082023-6.COMMISSIONING.MC,0,MC Fermenter,,09/02/2024 16:00,0,6,"A1470, A1460, A1420","A1470: FS, A1460: FS 19, A1420: FS","A21740, A31180","A21740: FS, A31180: FF",,Finish Milestone,Fixed Duration and Units/Time,
A30870,Not Started,Hercules_15082023-6.COMMISSIONING.MC,0,MC Centrifuge,,09/02/2024 16:00,10,6,"A1470, A1460, A1410","A1470: FS, A1460: FS 19, A1410: FF","A21740, A4930","A21740: FS, A4930: FF",,Finish Milestone,Fixed Duration and Units/Time,
A30880,Not Started,Hercules_15082023-6.COMMISSIONING.MC,0,MC Skid tanks,,09/02/2024 16:00,10,6,"A1470, A1460, A1400","A1470: FS, A1460: FS 19, A1400: FF","A21740, A4930","A21740: FS, A4930: FF",,Finish Milestone,Fixed Duration and Units/Time,
A7400,Not Started,Hercules_15082023-6.COMMISSIONING.MC,0,MC Chilled Water Return 13 17,,14/02/2024 17:00,0,-9,A7570,A7570: FF,"A21760, A21720, A4930","A21760: FS -3, A21720: FS, A4930: FF",,Finish Milestone,Fixed Duration and Units/Time,
A30820,Not Started,Hercules_15082023-6.COMMISSIONING.MC,0,MC BMS,,15/02/2024 17:00,0,-3,A34210,A34210: FF,"A40290, A21710, A21760, A4930, A21750, A7510","A40290: FS, A21710: FF -5, A21760: FF, A4930: FF, A21750: FS, A7510: FF",,Finish Milestone,Fixed Duration and Units/Time,
A30900,Not Started,Hercules_15082023-6.COMMISSIONING.MC,0,MC Part Washers,,16/02/2024 16:00,5,0,"A33940, A33950, A33960, A4010, A4020, A4000, A33930, A4060","A33940: FF, A33950: FF, A33960: FF, A4010: FF, A4020: FF, A4000: FF, A33930: FF, A4060: FF","A21780, A4930","A21780: FS, A4930: FF",Finish On,Finish Milestone,Fixed Duration and Units/Time,
A30910,Not Started,Hercules_15082023-6.COMMISSIONING.MC,0,MC Decon Autoclave,,26/02/2024 15:00,0,0,"A3420, A3430, A3440, A3450, A3460","A3420: FF, A3430: FF, A3440: FF, A3450: FF, A3460: FF","A21600, A4930","A21600: FS, A4930: FF",Finish On,Finish Milestone,Fixed Duration and Units/Time,
A30890,Not Started,Hercules_15082023-6.COMMISSIONING.MC,0,MC Steriliser Autoclaves,,26/02/2024 16:00,0,0,"A4200, A33820, A33830, A33870","A4200: FF, A33820: FF, A33830: FF, A33870: FF","A21790, A21790, A4930","A21790: FF, A21790: FS, A4930: FF",Finish On,Finish Milestone,Fixed Duration and Units/Time,
A7500,Not Started,Hercules_15082023-6.COMMISSIONING.MC,0,MC GMS,,01/03/2024 09:00,0,2,A34170,A34170: FF,"A4930, A21920, A7510","A4930: FF, A21920: FS, A7510: FF",,Finish Milestone,Fixed Duration and Units/Time,
A30800,Not Started,Hercules_15082023-6.COMMISSIONING.MC,0,MC EMS,,01/03/2024 17:00,0,-4,A34180,A34180: FF,"A4930, A21750, A21810, A34430, A34440, A34450","A4930: FF, A21750: FS, A21810: FS, A34430: FS, A34440: FS, A34450: FS",,Finish Milestone,Fixed Duration and Units/Time,
A34160,Not Started,Hercules_15082023-6.COMMISSIONING.MC,0,MC BMS Server,,13/03/2024 17:00,0,93,"A33470, A33560, A33110, A32840","A33470: FF, A33560: FF, A33110: FF, A32840: FF","A40290, A7510","A40290: FS, A7510: FF",,Finish Milestone,Fixed Duration and Units/Time,
A7510,Not Started,Hercules_15082023-6.COMMISSIONING.MC,0,MC All Electrical Systems,,13/03/2024 17:00,0,93,"A30820, A34160, A7500","A30820: FF, A34160: FF, A7500: FF","A4930, A21770","A4930: FF, A21770: FS",,Finish Milestone,Fixed Duration and Units/Time,
A30860,Not Started,Hercules_15082023-6.COMMISSIONING.MC,0,MC ExPEC Facilities,,27/03/2024 17:00,0,93,A7360,A7360: FF,A4930,A4930: FF,,Finish Milestone,Fixed Duration and Units/Time,
A7670,Not Started,Hercules_15082023-6.COMMISSIONING.MC,0,MC Fill Finish Facilities,,27/03/2024 17:00,0,93,A7360,A7360: FF,A4930,A4930: FF,,Finish Milestone,Fixed Duration and Units/Time,
A7910,Not Started,Hercules_15082023-6.COMMISSIONING.MC,0,MC LVHD Facilities,,27/03/2024 17:00,0,93,A7360,A7360: FF,A4930,A4930: FF,,Finish Milestone,Fixed Duration and Units/Time,
A7360,Not Started,Hercules_15082023-6.COMMISSIONING.MC,0,MC HVAC AHUs,,27/03/2024 17:00,0,38,"A7550, A34270, A34290, A34280","A7550: FF, A34270: FF, A34290: FF, A34280: FF","A30860, A7670, A7910, A4930, A21750","A30860: FF, A7670: FF, A7910: FF, A4930: FF, A21750: FS",,Finish Milestone,Fixed Duration and Units/Time,
A39650,Not Started,Hercules_15082023-6.COMMISSIONING.Pre-comm.1.Ready,0,122 Walkdown 3 Room Handover,,29/08/2023 08:00,235,235,,,,,,Finish Milestone,Fixed Duration and Units/Time,
A39670,Not Started,Hercules_15082023-6.COMMISSIONING.Pre-comm.1.Ready,0,126 Walkdown 3 Room Handover,,30/08/2023 17:00,233,233,A29460,A29460: FF,,,,Finish Milestone,Fixed Duration and Units/Time,
A39680,Not Started,Hercules_15082023-6.COMMISSIONING.Pre-comm.1.Ready,0,127.1 Walkdown 3 Room Handover,,31/08/2023 17:00,232,232,A29470,A29470: FF,,,,Finish Milestone,Fixed Duration and Units/Time,
A39690,Not Started,Hercules_15082023-6.COMMISSIONING.Pre-comm.1.Ready,0,127.2 Walkdown 3 Room Handover,,01/09/2023 17:00,231,231,A29480,A29480: FF,,,,Finish Milestone,Fixed Duration and Units/Time,
A39700,Not Started,Hercules_15082023-6.COMMISSIONING.Pre-comm.1.Ready,0,127.3 Walkdown 3 Room Handover,,04/09/2023 17:00,230,230,A29490,A29490: FF,,,,Finish Milestone,Fixed Duration and Units/Time,
A39710,Not Started,Hercules_15082023-6.COMMISSIONING.Pre-comm.1.Ready,0,127.4 Walkdown 3 Room Handover,,05/09/2023 17:00,229,229,A29500,A29500: FF,,,,Finish Milestone,Fixed Duration and Units/Time,
A39720,Not Started,Hercules_15082023-6.COMMISSIONING.Pre-comm.1.Ready,0,Changing Area Walkdown 3 Room Handover,,28/09/2023 17:00,212,212,A5120,A5120: FF,,,,Finish Milestone,Fixed Duration and Units/Time,
A39660,Not Started,Hercules_15082023-6.COMMISSIONING.Pre-comm.1.Ready,0,125 Walkdown 3 Room Handover,,11/12/2023 16:00,160,160,"A5060, A33750","A5060: FF, A33750: FF",,,,Finish Milestone,Fixed Duration and Units/Time,
A39920,Not Started,Hercules_15082023-6.COMMISSIONING.Pre-comm.1.Ready1.Blue,0,205 Walkdown 3 Room Handover,,29/08/2023 08:00,235,235,,,,,,Finish Milestone,Fixed Duration and Units/Time,
A39900,Not Started,Hercules_15082023-6.COMMISSIONING.Pre-comm.1.Ready1.Blue,0,214 Walkdown 3 Room Handover,,29/08/2023 17:00,234,234,A2150,A2150: FF,,,,Finish Milestone,Fixed Duration and Units/Time,
A39930,Not Started,Hercules_15082023-6.COMMISSIONING.Pre-comm.1.Ready1.Blue,0,215 Walkdown 3 Room Handover,,29/08/2023 17:00,234,234,A2160,A2160: FF,,,,Finish Milestone,Fixed Duration and Units/Time,
A39950,Not Started,Hercules_15082023-6.COMMISSIONING.Pre-comm.1.Ready1.Blue,0,217 Walkdown 3 Room Handover,,29/08/2023 17:00,234,234,A2170,A2170: FF,,,,Finish Milestone,Fixed Duration and Units/Time,
A39990,Not Started,Hercules_15082023-6.COMMISSIONING.Pre-comm.1.Ready1.Blue,0,221 Walkdown 3 Room Handover,,29/08/2023 17:00,234,234,A1170,A1170: FF,,,,Finish Milestone,Fixed Duration and Units/Time,
A40030,Not Started,Hercules_15082023-6.COMMISSIONING.Pre-comm.1.Ready1.Blue,0,225 Walkdown 3 Room Handover,,29/08/2023 17:00,234,234,A1620,A1620: FF,,,,Finish Milestone,Fixed Duration and Units/Time,
A39870,Not Started,Hercules_15082023-6.COMMISSIONING.Pre-comm.1.Ready1.Blue,0,203 Walkdown 3 Room Handover,,18/09/2023 17:00,220,220,A1690,A1690: FF,,,,Finish Milestone,Fixed Duration and Units/Time,
A39940,Not Started,Hercules_15082023-6.COMMISSIONING.Pre-comm.1.Ready1.Blue,0,216 Walkdown 3 Room Handover,,27/09/2023 17:00,213,213,A7750,A7750: FF,,,,Finish Milestone,Fixed Duration and Units/Time,
A39960,Not Started,Hercules_15082023-6.COMMISSIONING.Pre-comm.1.Ready1.Blue,0,218 Walkdown 3 Room Handover,,29/09/2023 17:00,211,211,A7760,A7760: FF,,,,Finish Milestone,Fixed Duration and Units/Time,
A39970,Not Started,Hercules_15082023-6.COMMISSIONING.Pre-comm.1.Ready1.Blue,0,219 Walkdown 3 Room Handover,,02/10/2023 17:00,210,210,A7770,A7770: FF,,,,Finish Milestone,Fixed Duration and Units/Time,
A39980,Not Started,Hercules_15082023-6.COMMISSIONING.Pre-comm.1.Ready1.Blue,0,220 Walkdown 3 Room Handover,,03/10/2023 17:00,209,209,A7780,A7780: FF,,,,Finish Milestone,Fixed Duration and Units/Time,
A39880,Not Started,Hercules_15082023-6.COMMISSIONING.Pre-comm.1.Ready1.Blue,0,204 Walkdown 3 Room Handover,,04/10/2023 17:00,208,208,"A1800, A1790","A1800: FF, A1790: FF",,,,Finish Milestone,Fixed Duration and Units/Time,
A40000,Not Started,Hercules_15082023-6.COMMISSIONING.Pre-comm.1.Ready1.Blue,0,222 Walkdown 3 Room Handover,,10/10/2023 17:00,204,204,A1160,A1160: FF,,,,Finish Milestone,Fixed Duration and Units/Time,
A39910,Not Started,Hercules_15082023-6.COMMISSIONING.Pre-comm.1.Ready1.Blue,0,206 Walkdown 3 Room Handover,,19/10/2023 17:00,197,197,"A1970, A1960, A1950","A1970: FF, A1960: FF, A1950: FF",,,,Finish Milestone,Fixed Duration and Units/Time,
A39890,Not Started,Hercules_15082023-6.COMMISSIONING.Pre-comm.1.Ready1.Blue,0,207 Walkdown 3 Room Handover,,03/11/2023 17:00,186,186,A2090,A2090: FF,,,,Finish Milestone,Fixed Duration and Units/Time,
A40010,Not Started,Hercules_15082023-6.COMMISSIONING.Pre-comm.1.Ready1.Blue,0,223 Walkdown 3 Room Handover,,16/02/2024 16:00,121,121,A1610,A1610: FF,,,,Finish Milestone,Fixed Duration and Units/Time,
A40020,Not Started,Hercules_15082023-6.COMMISSIONING.Pre-comm.1.Ready1.Blue,0,224 Walkdown 3 Room Handover,,04/03/2024 17:00,110,110,A2110,A2110: FF,,,,Finish Milestone,Fixed Duration and Units/Time,
A40040,Not Started,Hercules_15082023-6.COMMISSIONING.Pre-comm.1.Ready1.Blue,0,229 Walkdown 3 Room Handover,,04/03/2024 17:00,110,110,A1830,A1830: FF,,,,Finish Milestone,Fixed Duration and Units/Time,
A39840,Not Started,Hercules_15082023-6.COMMISSIONING.Pre-comm.1.Ready1.Blue,0,200 Walkdown 3 Room Handover,,08/03/2024 17:00,106,106,A1680,A1680: FF,,,,Finish Milestone,Fixed Duration and Units/Time,
A39850,Not Started,Hercules_15082023-6.COMMISSIONING.Pre-comm.1.Ready1.Blue,0,201 Walkdown 3 Room Handover,,08/03/2024 17:00,106,106,A1650,A1650: FF,,,,Finish Milestone,Fixed Duration and Units/Time,
A39860,Not Started,Hercules_15082023-6.COMMISSIONING.Pre-comm.1.Ready1.Blue,0,202 Walkdown 3 Room Handover,,08/03/2024 17:00,106,106,A2130,A2130: FF,,,,Finish Milestone,Fixed Duration and Units/Time,
A40080,Not Started,Hercules_15082023-6.COMMISSIONING.Pre-comm.1.Ready1.Green,0,211 Walkdown 3 Room Handover,,29/08/2023 17:00,234,234,A2600,A2600: FF,,,,Finish Milestone,Fixed Duration and Units/Time,
A40160,Not Started,Hercules_15082023-6.COMMISSIONING.Pre-comm.1.Ready1.Green,0,238 Walkdown 3 Room Handover,,29/08/2023 17:00,234,234,A3230,A3230: FF,,,,Finish Milestone,Fixed Duration and Units/Time,
A40140,Not Started,Hercules_15082023-6.COMMISSIONING.Pre-comm.1.Ready1.Green,0,235 Walkdown 3 Room Handover,,30/08/2023 17:00,233,233,A3110,A3110: FF,,,,Finish Milestone,Fixed Duration and Units/Time,
A40170,Not Started,Hercules_15082023-6.COMMISSIONING.Pre-comm.1.Ready1.Green,0,239 Walkdown 3 Room Handover,,30/08/2023 17:00,233,233,A3250,A3250: FF,,,,Finish Milestone,Fixed Duration and Units/Time,
A40130,Not Started,Hercules_15082023-6.COMMISSIONING.Pre-comm.1.Ready1.Green,0,237 Walkdown 3 Room Handover,,11/09/2023 17:00,225,225,A7810,A7810: FF,,,,Finish Milestone,Fixed Duration and Units/Time,
A40120,Not Started,Hercules_15082023-6.COMMISSIONING.Pre-comm.1.Ready1.Green,0,232.1 Walkdown 3 Room Handover,,13/09/2023 17:00,223,223,A3080,A3080: FF,,,,Finish Milestone,Fixed Duration and Units/Time,
A40150,Not Started,Hercules_15082023-6.COMMISSIONING.Pre-comm.1.Ready1.Green,0,236 Walkdown 3 Room Handover,,03/10/2023 17:00,209,209,"A3220, A6690","A3220: FF, A6690: FF",,,,Finish Milestone,Fixed Duration and Units/Time,
A40110,Not Started,Hercules_15082023-6.COMMISSIONING.Pre-comm.1.Ready1.Green,0,232 Walkdown 3 Room Handover,,17/10/2023 17:00,199,199,A3060,A3060: FF,,,,Finish Milestone,Fixed Duration and Units/Time,
A40050,Not Started,Hercules_15082023-6.COMMISSIONING.Pre-comm.1.Ready1.Green,0,240 Walkdown 3 Room Handover,,04/03/2024 17:00,110,110,A2380,A2380: FF,,,,Finish Milestone,Fixed Duration and Units/Time,
A40060,Not Started,Hercules_15082023-6.COMMISSIONING.Pre-comm.1.Ready1.Green,0,242 Walkdown 3 Room Handover,,04/03/2024 17:00,110,110,A2480,A2480: FF,,,,Finish Milestone,Fixed Duration and Units/Time,
A40070,Not Started,Hercules_15082023-6.COMMISSIONING.Pre-comm.1.Ready1.Green,0,241 Walkdown 3 Room Handover,,04/03/2024 17:00,110,110,A2590,A2590: FF,,,,Finish Milestone,Fixed Duration and Units/Time,
A40090,Not Started,Hercules_15082023-6.COMMISSIONING.Pre-comm.1.Ready1.Green,0,212 Walkdown 3 Room Handover,,04/03/2024 17:00,110,110,A2620,A2620: FF,,,,Finish Milestone,Fixed Duration and Units/Time,
A40100,Not Started,Hercules_15082023-6.COMMISSIONING.Pre-comm.1.Ready1.Green,0,213 / 265 Walkdown 3 Room Handover,,04/03/2024 17:00,110,110,"A2900, A33870, A33980","A2900: FF, A33870: FF, A33980: FF",,,,Finish Milestone,Fixed Duration and Units/Time,
A40180,Not Started,Hercules_15082023-6.COMMISSIONING.Pre-comm.1.Ready1.Green,0,209 Walkdown 3 Room Handover,,04/03/2024 17:00,110,110,A3270,A3270: FF,,,,Finish Milestone,Fixed Duration and Units/Time,
A40190,Not Started,Hercules_15082023-6.COMMISSIONING.Pre-comm.1.Ready1.Green,0,210 Walkdown 3 Room Handover,,04/03/2024 17:00,110,110,"A3280, A3290","A3280: FF, A3290: FF",,,,Finish Milestone,Fixed Duration and Units/Time,
A40200,Not Started,Hercules_15082023-6.COMMISSIONING.Pre-comm.1.Ready1.Green,0,208 Walkdown 3 Room Handover,,04/03/2024 17:00,110,110,A3310,A3310: FF,,,,Finish Milestone,Fixed Duration and Units/Time,
A39790,Not Started,Hercules_15082023-6.COMMISSIONING.Pre-comm.1.Ready1.White,0,252 Walkdown 3 Room Handover,,04/03/2024 17:00,110,110,A4740,A4740: FF,,,,Finish Milestone,Fixed Duration and Units/Time,
A39800,Not Started,Hercules_15082023-6.COMMISSIONING.Pre-comm.1.Ready1.White,0,252.1 Walkdown 3 Room Handover,,04/03/2024 17:00,110,110,A4700,A4700: FF,,,,Finish Milestone,Fixed Duration and Units/Time,
A39810,Not Started,Hercules_15082023-6.COMMISSIONING.Pre-comm.1.Ready1.White,0,257 Walkdown 3 Room Handover,,04/03/2024 17:00,110,110,A4620,A4620: FF,,,,Finish Milestone,Fixed Duration and Units/Time,
A39820,Not Started,Hercules_15082023-6.COMMISSIONING.Pre-comm.1.Ready1.White,0,258 Walkdown 3 Room Handover,,04/03/2024 17:00,110,110,A4660,A4660: FF,,,,Finish Milestone,Fixed Duration and Units/Time,
A39830,Not Started,Hercules_15082023-6.COMMISSIONING.Pre-comm.1.Ready1.White,0,251 Walkdown 3 Room Handover,,04/03/2024 17:00,110,110,A4760,A4760: FF,,,,Finish Milestone,Fixed Duration and Units/Time,
A40240,Not Started,Hercules_15082023-6.COMMISSIONING.Pre-comm.1.Ready1.Yellow,0,233 Walkdown 3 Room Handover,,29/08/2023 17:00,234,234,A3640,A3640: FF,,,,Finish Milestone,Fixed Duration and Units/Time,
A40270,Not Started,Hercules_15082023-6.COMMISSIONING.Pre-comm.1.Ready1.Yellow,0,246 Walkdown 3 Room Handover,,08/09/2023 17:00,226,226,A7850,A7850: FF,,,,Finish Milestone,Fixed Duration and Units/Time,
A40260,Not Started,Hercules_15082023-6.COMMISSIONING.Pre-comm.1.Ready1.Yellow,0,247 Walkdown 3 Room Handover,,15/09/2023 17:00,221,221,A3700,A3700: FF,,,,Finish Milestone,Fixed Duration and Units/Time,
A40230,Not Started,Hercules_15082023-6.COMMISSIONING.Pre-comm.1.Ready1.Yellow,0,259 / 259.1 / 260 / 245 Walkdown 3 Room Handover,,24/11/2023 17:00,171,171,A3630,A3630: FF,,,,Finish Milestone,Fixed Duration and Units/Time,
A40250,Not Started,Hercules_15082023-6.COMMISSIONING.Pre-comm.1.Ready1.Yellow,0,244 Walkdown 3 Room Handover,,24/11/2023 17:00,171,171,A3630,A3630: FF,,,,Finish Milestone,Fixed Duration and Units/Time,
A39730,Not Started,Hercules_15082023-6.COMMISSIONING.Pre-comm.1.Ready1.Yellow,0,248 Walkdown 3 Room Handover,,04/03/2024 17:00,110,110,A3900,A3900: FF,,,,Finish Milestone,Fixed Duration and Units/Time,
A39740,Not Started,Hercules_15082023-6.COMMISSIONING.Pre-comm.1.Ready1.Yellow,0,262 / 268 Walkdown 3 Room Handover,,04/03/2024 17:00,110,110,A4070,A4070: FF,,,,Finish Milestone,Fixed Duration and Units/Time,
A39750,Not Started,Hercules_15082023-6.COMMISSIONING.Pre-comm.1.Ready1.Yellow,0,267 (228) Walkdown 3 Room Handover,,04/03/2024 17:00,110,110,A4250,A4250: FF,,,,Finish Milestone,Fixed Duration and Units/Time,
A39760,Not Started,Hercules_15082023-6.COMMISSIONING.Pre-comm.1.Ready1.Yellow,0,261.1 Walkdown 3 Room Handover,,04/03/2024 17:00,110,110,A4350,A4350: FF,,,,Finish Milestone,Fixed Duration and Units/Time,
A39770,Not Started,Hercules_15082023-6.COMMISSIONING.Pre-comm.1.Ready1.Yellow,0,231 Walkdown 3 Room Handover,,04/03/2024 17:00,110,110,A4460,A4460: FF,,,,Finish Milestone,Fixed Duration and Units/Time,
A39780,Not Started,Hercules_15082023-6.COMMISSIONING.Pre-comm.1.Ready1.Yellow,0,261 Walkdown 3 Room Handover,,04/03/2024 17:00,110,110,A4600,A4600: FF,,,,Finish Milestone,Fixed Duration and Units/Time,
A40210,Not Started,Hercules_15082023-6.COMMISSIONING.Pre-comm.1.Ready1.Yellow,0,243 Walkdown 3 Room Handover,,04/03/2024 17:00,110,110,A3360,A3360: FF,,,,Finish Milestone,Fixed Duration and Units/Time,
A40220,Not Started,Hercules_15082023-6.COMMISSIONING.Pre-comm.1.Ready1.Yellow,0,266 Walkdown 3 Room Handover,,04/03/2024 17:00,110,110,A3470,A3470: FF,,,,Finish Milestone,Fixed Duration and Units/Time,
A40280,Not Started,Hercules_15082023-6.COMMISSIONING.Pre-comm.1.Ready1.Yellow,0,249 Walkdown 3 Room Handover,,04/03/2024 17:00,110,110,A3810,A3810: FF,,,,Finish Milestone,Fixed Duration and Units/Time,
A40300,Not Started,Hercules_15082023-6.COMMISSIONING.Pre-comm.Comm,10,Walkdown 1 & Punch List & Walkdown 2 & Closure Heat Recovery,12/12/2023 08:00,08/01/2024 17:00,0,140,"A32400, A32200, A32000","A32400: FS, A32200: FS, A32000: FS",A30850,A30850: FF,,Task Dependent,Fixed Duration and Units/Time,
A34340,Not Started,Hercules_15082023-6.COMMISSIONING.Pre-comm.Comm,10,Walkdown 1 & Punch List & Walkdown 2 & Closure Domestic Water,13/12/2023 08:00,09/01/2024 17:00,0,14,A34330,A34330: FS,A34350,A34350: FF,,Task Dependent,Fixed Duration and Units/Time,
A40500,Not Started,Hercules_15082023-6.COMMISSIONING.Pre-comm.Comm,10,Walkdown 1 & Punch List & Walkdown 2 & Closure Sewage (Foul) Water,13/12/2023 08:00,09/01/2024 17:00,0,139,"A32310, A32510","A32310: FS, A32510: FS",A40510,A40510: FF,,Task Dependent,Fixed Duration and Units/Time,
A7590,Not Started,Hercules_15082023-6.COMMISSIONING.Pre-comm.Comm,10,Walkdown 1 & Punch List & Walkdown 2 & Closure AP Water,21/12/2023 08:00,17/01/2024 17:00,0,8,A34220,A34220: FS,A7420,A7420: FF,,Task Dependent,Fixed Duration and Units/Time,
A7630,Not Started,Hercules_15082023-6.COMMISSIONING.Pre-comm.Comm,10,Walkdown 1 & Punch List & Walkdown 2 & Closure Pure Steam Condensate,21/12/2023 08:00,17/01/2024 17:00,0,8,A34360,A34360: FS,A7460,A7460: FF,,Task Dependent,Fixed Duration and Units/Time,
A34150,Not Started,Hercules_15082023-6.COMMISSIONING.Pre-comm.Comm,10,Walkdown 1 & Punch List & Walkdown 2 & Closure LTHW,22/12/2023 08:00,18/01/2024 17:00,0,142,"A32000, A32200, A32400, A32600","A32000: FS, A32200: FS, A32400: FS, A32600: FS",A30840,A30840: FF,,Task Dependent,Fixed Duration and Units/Time,
A7530,Not Started,Hercules_15082023-6.COMMISSIONING.Pre-comm.Comm,10,Walkdown 1 & Punch List & Walkdown 2 & Closure Nitrogen,22/12/2023 08:00,18/01/2024 17:00,0,32,"A32600, A32510, A32310, A32000","A32600: FS, A32510: FS, A32310: FS, A32000: FS",A7370,A7370: FF,,Task Dependent,Fixed Duration and Units/Time,
A7540,Not Started,Hercules_15082023-6.COMMISSIONING.Pre-comm.Comm,10,Walkdown 1 & Punch List & Walkdown 2 & Closure Oxygen,22/12/2023 08:00,18/01/2024 17:00,0,32,"A32600, A32510, A32310, A32000","A32600: FS, A32510: FS, A32310: FS, A32000: FS",A7380,A7380: FF,,Task Dependent,Fixed Duration and Units/Time,
A34320,Not Started,Hercules_15082023-6.COMMISSIONING.Pre-comm.Comm,10,Walkdown 1 & Punch List & Walkdown 2 & Closure WAI,08/01/2024 08:00,19/01/2024 17:00,0,6,A34310,A34310: FS,A30830,A30830: FF,,Task Dependent,Fixed Duration and Units/Time,
A7600,Not Started,Hercules_15082023-6.COMMISSIONING.Pre-comm.Comm,10,Walkdown 1 & Punch List & Walkdown 2 & Closure Pure Steam,08/01/2024 08:00,19/01/2024 17:00,0,6,"A32710, A32600, A32510, A32310, A32200, A32000","A32710: FS, A32600: FS, A32510: FS, A32310: FS, A32200: FS, A32000: FS",A7430,A7430: FF,,Task Dependent,Fixed Duration and Units/Time,
A7610,Not Started,Hercules_15082023-6.COMMISSIONING.Pre-comm.Comm,10,Walkdown 1 & Punch List & Walkdown 2 & Closure Softened Water,08/01/2024 08:00,19/01/2024 17:00,0,31,"A32000, A32200, A32510, A32710","A32000: FS, A32200: FS, A32510: FS, A32710: FS",A7440,A7440: FF,,Task Dependent,Fixed Duration and Units/Time,
A7620,Not Started,Hercules_15082023-6.COMMISSIONING.Pre-comm.Comm,10,Walkdown 1 & Punch List & Walkdown 2 & Closure Process Vent,08/01/2024 08:00,19/01/2024 17:00,0,6,"A32710, A32600, A32510, A32310, A32200, A32000","A32710: FS, A32600: FS, A32510: FS, A32310: FS, A32200: FS, A32000: FS",A7450,A7450: FF,,Task Dependent,Fixed Duration and Units/Time,
A7640,Not Started,Hercules_15082023-6.COMMISSIONING.Pre-comm.Comm,10,Walkdown 1 & Punch List & Walkdown 2 & Closure Relief Vent,08/01/2024 08:00,19/01/2024 17:00,0,31,"A32710, A32600, A32510, A32310, A32200, A32000","A32710: FS, A32600: FS, A32510: FS, A32310: FS, A32200: FS, A32000: FS",A7470,A7470: FF,,Task Dependent,Fixed Duration and Units/Time,
A7650,Not Started,Hercules_15082023-6.COMMISSIONING.Pre-comm.Comm,10,Walkdown 1 & Punch List & Walkdown 2 & Closure Plant Steam,08/01/2024 08:00,19/01/2024 17:00,0,6,"A32710, A32600, A32510, A32310, A32200, A32000","A32710: FS, A32600: FS, A32510: FS, A32310: FS, A32200: FS, A32000: FS",A7480,A7480: FF,,Task Dependent,Fixed Duration and Units/Time,
A7580,Not Started,Hercules_15082023-6.COMMISSIONING.Pre-comm.Comm,10,Walkdown 1 & Punch List & Walkdown 2 & Closure Process Air,10/01/2024 08:00,23/01/2024 17:00,0,4,A34250,A34250: FS,A7410,A7410: FF,,Task Dependent,Fixed Duration and Units/Time,
A7660,Not Started,Hercules_15082023-6.COMMISSIONING.Pre-comm.Comm,10,Walkdown 1 & Punch List & Walkdown 2 & Closure WFI,10/01/2024 08:00,23/01/2024 17:00,0,4,A34230,A34230: FS,A7490,A7490: FF,,Task Dependent,Fixed Duration and Units/Time,
A7560,Not Started,Hercules_15082023-6.COMMISSIONING.Pre-comm.Comm,5,Walkdown 1 & Punch List & Walkdown 2 & Closure Chilled Water 7 13,26/01/2024 08:00,01/02/2024 17:00,0,-3,A33500,A33500: FS,A7390,A7390: FF,,Task Dependent,Fixed Duration and Units/Time,
A34210,Not Started,Hercules_15082023-6.COMMISSIONING.Pre-comm.Comm,10,Walkdown 1 & Punch List & Walkdown 2 & Closure BMS,02/02/2024 08:00,15/02/2024 17:00,0,-3,"A32770, A33040, A33400, A33490","A32770: FS, A33040: FS, A33400: FS, A33490: FS","A40290, A30820","A40290: FS, A30820: FF",,Task Dependent,Fixed Duration and Units/Time,
A7570,Not Started,Hercules_15082023-6.COMMISSIONING.Pre-comm.Comm,5,Walkdown 1 & Punch List & Walkdown 2 & Closure Chilled Water 13 17,08/02/2024 08:00,14/02/2024 17:00,0,-9,A34260,A34260: FS,A7400,A7400: FF,,Task Dependent,Fixed Duration and Units/Time,
A34280,Not Started,Hercules_15082023-6.COMMISSIONING.Pre-comm.Comm,10,Walkdown 1 & Punch List & Walkdown 2 & Closure AHUs Zone 3,08/02/2024 08:00,21/02/2024 17:00,0,3,A33560,A33560: FS,"A7360, A34410","A7360: FF, A34410: FS",,Task Dependent,Fixed Duration and Units/Time,
A34170,Not Started,Hercules_15082023-6.COMMISSIONING.Pre-comm.Comm,10,Walkdown 1 & Punch List & Walkdown 2 & Closure GMS,16/02/2024 09:00,01/03/2024 09:00,0,2,67,67: FS,A7500,A7500: FF,,Task Dependent,Fixed Duration and Units/Time,
A34180,Not Started,Hercules_15082023-6.COMMISSIONING.Pre-comm.Comm,10,Walkdown 1 & Punch List & Walkdown 2 & Closure EMS,19/02/2024 08:00,01/03/2024 17:00,0,-4,"A33520, A33430, A33070, A32800, 26, 25, 24, 22, 21","A33520: FS, A33430: FS, A33070: FS, A32800: FS, 26: FS, 25: FS, 24: FS, 22: FS, 21: FS",A30800,A30800: FF,,Task Dependent,Fixed Duration and Units/Time,
A40360,Not Started,Hercules_15082023-6.COMMISSIONING.Pre-comm.Comm,10,Walkdown 1 & Punch List & Walkdown 2 & Closure LV Board (LINK),23/02/2024 08:00,07/03/2024 17:00,107,107,"A40540, A31970, A32170, A32370, A32570","A40540: FS, A31970: FS, A32170: FS, A32370: FS, A32570: FS",,,,Task Dependent,Fixed Duration and Units/Time,
A34290,Not Started,Hercules_15082023-6.COMMISSIONING.Pre-comm.Comm,10,Walkdown 1 & Punch List & Walkdown 2 & Closure AHUs Zone 4,26/02/2024 08:00,08/03/2024 17:00,0,51,A33470,A33470: FS,"A7360, A34420","A7360: FF, A34420: FS",,Task Dependent,Fixed Duration and Units/Time,
A7550,Not Started,Hercules_15082023-6.COMMISSIONING.Pre-comm.Comm,10,Walkdown 1 & Punch List & Walkdown 2 & Closure AHUs Zone 1,26/02/2024 08:00,08/03/2024 17:00,0,51,A32840,A32840: FS,"A7360, A21650","A7360: FF, A21650: FS",,Task Dependent,Fixed Duration and Units/Time,
A34270,Not Started,Hercules_15082023-6.COMMISSIONING.Pre-comm.Comm,10,Walkdown 1 & Punch List & Walkdown 2 & Closure AHUs Zone 2,14/03/2024 08:00,27/03/2024 17:00,0,38,A33110,A33110: FS,"A7360, A34400","A7360: FF, A34400: FS",,Task Dependent,Fixed Duration and Units/Time,
A34240,Not Started,Hercules_15082023-6.COMMISSIONING.Pre-comm.Piping.Clean and Pass,5,Pressure testing and Flushing / Cleaning and Passivation Clean Steam,29/08/2023 08:00,04/09/2023 17:00,230,230,,,,,,Task Dependent,Fixed Duration & Units,
A34330,Not Started,Hercules_15082023-6.COMMISSIONING.Pre-comm.Piping.Clean and Pass,3,Pressure testing and Flushing Domestic Water,08/12/2023 08:00,12/12/2023 17:00,0,14,A32500,A32500: FS,A34340,A34340: FS,,Task Dependent,Fixed Duration & Units,
A34220,Not Started,Hercules_15082023-6.COMMISSIONING.Pre-comm.Piping.Clean and Pass,1,Pressure testing and Flushing / Cleaning and Passivation AP Water,20/12/2023 08:00,20/12/2023 17:00,0,8,"A32700, A32590, A32500, A32300, A32190, A31990, A33690, A4960","A32700: FS, A32590: FS, A32500: FS, A32300: FS, A32190: FS, A31990: FS, A33690: FS, A4960: FS",A7590,A7590: FS,,Task Dependent,Fixed Duration & Units,
A34360,Not Started,Hercules_15082023-6.COMMISSIONING.Pre-comm.Piping.Clean and Pass,1,Pressure testing and Flushing / Cleaning and Passivation Pure Steam Condensate,20/12/2023 08:00,20/12/2023 17:00,0,8,"A31990, A32190, A32300, A32500, A32590, A32700","A31990: FS, A32190: FS, A32300: FS, A32500: FS, A32590: FS, A32700: FS",A7630,A7630: FS,,Task Dependent,Fixed Duration & Units,
A34310,Not Started,Hercules_15082023-6.COMMISSIONING.Pre-comm.Piping.Clean and Pass,3,Pressure testing and Flushing WAI,20/12/2023 08:00,22/12/2023 17:00,0,6,A32700,A32700: FS,A34320,A34320: FS,,Task Dependent,Fixed Duration & Units,
A34230,Not Started,Hercules_15082023-6.COMMISSIONING.Pre-comm.Piping.Clean and Pass,5,Pressure testing and Flushing / Cleaning and Passivation WFI,20/12/2023 08:00,09/01/2024 17:00,0,4,A32700,A32700: FS,A7660,A7660: FS,,Task Dependent,Fixed Duration & Units,
A34250,Not Started,Hercules_15082023-6.COMMISSIONING.Pre-comm.Piping.Clean and Pass,2,Pressure testing and blow down Process Air,08/01/2024 08:00,09/01/2024 17:00,0,4,"A32510, A32710, A32310","A32510: FS, A32710: FS, A32310: FS",A7580,A7580: FS,,Task Dependent,Fixed Duration & Units,
A34260,Not Started,Hercules_15082023-6.COMMISSIONING.Pre-comm.Piping.Clean and Pass,2,Pressure testing and Flushing Chilled Water 13 17,06/02/2024 08:00,07/02/2024 17:00,0,-9,"A32780, A33050, A33500","A32780: FS, A33050: FS, A33500: FS",A7570,A7570: FS,,Task Dependent,Fixed Duration & Units,
A40400,Not Started,Hercules_15082023-6.CONSTRUCTION,124,Rooms protections duration,29/08/2023 08:00,01/03/2024 17:00,0,106,"A1040, A34140","A1040: SS, A34140: SS","A29560, A1680, A1650, A2130, A2110, A1830, A2380, A2480, A2590, A2620, A2900, A3270, A3290, A3310, A3360, A3470, A3810, A3900, A4070, A4250, A4350, A4460, A4600, A4620, A4660, A4700, A4740, A4760","A29560: FS, A1680: FS, A1650: FS, A2130: FS, A2110: FS, A1830: FS, A2380: FS, A2480: FS, A2590: FS, A2620: FS, A2900: FS, A3270: FS, A3290: FS, A3310: FS, A3360: FS, A3470: FS, A3810: FS, A3900: FS, A4070: FS, A4250: FS, A4350: FS, A4460: FS, A4600: FS, A4620: FS, A4660: FS, A4700: FS, A4740: FS, A4760: FS",,Task Dependent,Fixed Duration and Units/Time,
A4810,Completed,Hercules_15082023-6.CONSTRUCTION.Enabling Works,5,Container/ toilets/ changing room/ cantine installation,03/07/2023 08:00,07/07/2023 17:00,,,A28300,A28300: FS,"A7680, A4820","A7680: FS, A4820: FF",,Task Dependent,Fixed Duration & Units,
A7690,Completed,Hercules_15082023-6.CONSTRUCTION.Enabling Works,12,Fences installation,03/07/2023 08:00,18/07/2023 17:00,,,"A28300, A29450","A28300: FS, A29450: FS",A1030,A1030: FS,,Task Dependent,Fixed Duration & Units,
A4820,Completed,Hercules_15082023-6.CONSTRUCTION.Enabling Works,5,"Connection of containers - water, waste water, electrical",12/07/2023 08:00,18/07/2023 17:00,,,A4810,A4810: FF,,,,Task Dependent,Fixed Duration & Units,
A7680,Completed,Hercules_15082023-6.CONSTRUCTION.Enabling Works,7,Electrical cabinet installation for temporary power in contractor area,13/07/2023 08:00,21/07/2023 17:00,,,"A4810, A28300","A4810: FS, A28300: FS 22","A1030, A29450, A34140","A1030: FS, A29450: FS, A34140: FS",Start On or After,Task Dependent,Fixed Duration & Units,
A29450,Completed,Hercules_15082023-6.CONSTRUCTION.Enabling Works,11,Scaffolding walkway alongside the Building 79i,17/07/2023 08:00,31/07/2023 17:00,,,"A28300, A7680","A28300: FS, A7680: FS","A1180, A7690","A1180: FS, A7690: FS",,Task Dependent,Fixed Duration & Units,
A1030,Completed,Hercules_15082023-6.CONSTRUCTION.Enabling Works,29,Facade opening,18/07/2023 08:00,25/08/2023 17:00,,,"A7680, A7690","A7680: FS, A7690: FS",A1040,A1040: FS,,Task Dependent,Fixed Duration & Units,
3,Not Started,Hercules_15082023-6.CONSTRUCTION.Main Works.1.1,0,Retel End of production,,29/08/2023 08:00,235,235,"A5230, A31380, A31370","A5230: FF, A31380: FF, A31370: FF",,,,Finish Milestone,Fixed Duration and Units/Time,
4,Not Started,Hercules_15082023-6.CONSTRUCTION.Main Works.1.1,0,Retel End calibration,,29/08/2023 08:00,26,89,A33590,A33590: FF,"5, 7","5: FS, 7: FS",,Finish Milestone,Fixed Duration and Units/Time,
5,Not Started,Hercules_15082023-6.CONSTRUCTION.Main Works.1.1,0,Retel Finish Dismantling of the boxes (EMS),,03/10/2023 17:00,0,63,"4, A6740, A6430, A6440, A6470, A6420, A6400, A6390, A6750, A6460, A6450, A6410, A6480, A6720, A6500, A6680, A6370, A6360, A6350, A6560, A6240, A6490, A6640, A6630, A6780, A6770, A6540, A6550, A6580, A6570, A6590, A6600, A6610, A6620, A6760, A6690, A6670, A6650, A6660, A6790, A6270, A6260, A6250, A6700, A6710, A6380, A6330, A6310, A6320, A6290, A6300, A6520, A6530, A6280, A6510, A6200, A6190, A6230, A6210, A6220","4: FS, A6740: FS, A6430: FS, A6440: FS, A6470: FS, A6420: FS, A6400: FS, A6390: FS, A6750: FS, A6460: FS, A6450: FS, A6410: FS, A6480: FS, A6720: FS, A6500: FS, A6680: FS, A6370: FS, A6360: FS, A6350: FS, A6560: FS, A6240: FS, A6490: FS, A6640: FS, A6630: FS, A6780: FS, A6770: FS, A6540: FS, A6550: FS, A6580: FS, A6570: FS, A6590: FS, A6600: FS, A6610: FS, A6620: FS, A6760: FS, A6690: FS, A6670: FS, A6650: FS, A6660: FS, A6790: FS, A6270: FS, A6260: FS, A6250: FS, A6700: FS, A6710: FS, A6380: FS, A6330: FS, A6310: FS, A6320: FS, A6290: FS, A6300: FS, A6520: FS, A6530: FS, A6280: FS, A6510: FS, A6200: FS, A6190: FS, A6230: FS, A6210: FS, A6220: FS","6, 7","6: FS 1, 7: FS",,Finish Milestone,Fixed Duration and Units/Time,
7,Not Started,Hercules_15082023-6.CONSTRUCTION.Main Works.1.1,0,Retel Finish Dismantling old cables/pneumatic tubes,,03/10/2023 17:00,0,63,"4, 5","4: FS, 5: FS",6,6: FF 1,,Finish Milestone,Fixed Duration and Units/Time,
6,Not Started,Hercules_15082023-6.CONSTRUCTION.Main Works.1.1,0,Retel Finish Closing of the cutouts/holes,,04/10/2023 17:00,61,63,"5, A29460, A29470, A29480, A29490, A29500, A7700, 7","5: FS 1, A29460: FF, A29470: FF, A29480: FF, A29490: FF, A29500: FF, A7700: FF, 7: FF 1",21,21: FS,,Finish Milestone,Fixed Duration and Units/Time,
9,Not Started,Hercules_15082023-6.CONSTRUCTION.Main Works.1.2,0,Retel New wall panel installed in R247,08/09/2023 08:00,08/09/2023 08:00,45,204,A5220,A5220: FS,10,10: FS,,Resource Dependent,Fixed Units/Time,
10,Not Started,Hercules_15082023-6.CONSTRUCTION.Main Works.1.2,5,Retel Delivery of field devices / HMI on site,10/11/2023 08:00,16/11/2023 17:00,0,159,"9, A29240","9: FS, A29240: FS",11,11: FS,,Resource Dependent,Fixed Units/Time,
11,Not Started,Hercules_15082023-6.CONSTRUCTION.Main Works.1.2,20,Retel Installation of new HMI (5 pieces),17/11/2023 08:00,14/12/2023 17:00,157,157,10,10: FS,,,,Resource Dependent,Fixed Units/Time,
13,Not Started,Hercules_15082023-6.CONSTRUCTION.Main Works.1.3,0,Retel New walls constructed,02/11/2023 08:00,02/11/2023 08:00,0,16,"A29460, A29470, A29480, A29490, A29500, A5100, A7700, A1690, A1710, A1720, A1760, A1850, A1870, A1880, A1920, A1980, A7750, A7760, A7770, A7780, A1060, A1070, A1090, A1130, A7790, A1490, A7800, A2220, A2230, A2240, A2250, A2300, A2320, A2680, A2690, A2700, A2710, A2930, A2960, A2970, A7810, A3130, A3140, A3150, A7820, A7830, A3380, A3400, A3480, A3490, A3500, A3540, A5220, A7850, A3780, A7860, A3830, A3910, A3920, A3930, A3990, A4130, A4140, A4150, A4160, A4270, A4280, A4290, A4320, A7870, A4370, A4380, A4390, A4400, A7880, A7890, A4750, A7900","A29460: FS, A29470: FS, A29480: FS, A29490: FS, A29500: FS, A5100: FS, A7700: FS, A1690: FS, A1710: FS, A1720: FS, A1760: FS, A1850: FS, A1870: FS, A1880: FS, A1920: FS, A1980: FS, A7750: FS, A7760: FS, A7770: FS, A7780: FS, A1060: FS, A1070: FS, A1090: FS, A1130: FS, A7790: FS, A1490: FS, A7800: FS, A2220: FS, A2230: FS, A2240: FS, A2250: FS, A2300: FS, A2320: FS, A2680: FS, A2690: FS, A2700: FS, A2710: FS, A2930: FS, A2960: FS, A2970: FS, A7810: FS, A3130: FS, A3140: FS, A3150: FS, A7820: FS, A7830: FS, A3380: FS, A3400: FS, A3480: FS, A3490: FS, A3500: FS, A3540: FS, A5220: FS, A7850: FS, A3780: FS, A7860: FS, A3830: FS, A3910: FS, A3920: FS, A3930: FS, A3990: FS, A4130: FS, A4140: FS, A4150: FS, A4160: FS, A4270: FS, A4280: FS, A4290: FS, A4320: FS, A7870: FS, A4370: FS, A4380: FS, A4390: FS, A4400: FS, A7880: FS, A7890: FS, A4750: FS, A7900: FS","14, 15, 17, 77","14: FS, 15: FS, 17: FS, 77: SS",,Resource Dependent,Fixed Units/Time,
14,Not Started,Hercules_15082023-6.CONSTRUCTION.Main Works.1.3,5,Retel Delivery of field devices (EMS),02/11/2023 08:00,08/11/2023 17:00,0,28,13,13: FS,16,16: FS,,Resource Dependent,Fixed Units/Time,
15,Not Started,Hercules_15082023-6.CONSTRUCTION.Main Works.1.3,5,Retel Installation new pneumatic nozzles (in ceilings),02/11/2023 08:00,08/11/2023 17:00,0,28,13,13: FS,16,16: FS,,Resource Dependent,Fixed Units/Time,
17,Not Started,Hercules_15082023-6.CONSTRUCTION.Main Works.1.3,20,Retel Installation new cables/pneumatic tubes,02/11/2023 08:00,29/11/2023 17:00,41,163,13,13: FS,27,27: FS,,Resource Dependent,Fixed Units/Time,
16,Not Started,Hercules_15082023-6.CONSTRUCTION.Main Works.1.3,20,Retel Installation of new field devices,09/11/2023 08:00,06/12/2023 17:00,16,18,"15, 14","15: FS, 14: FS","21, 22, 23, 24, 25, 26","21: FS, 22: FS, 23: FS, 24: FS, 25: FS, 26: FS",,Resource Dependent,Fixed Units/Time,
20,Not Started,Hercules_15082023-6.CONSTRUCTION.Main Works.1.4.1,0,Retel Start date from Sisk,10/11/2023 08:00,10/11/2023 08:00,35,37,"A1040, A29240","A1040: SS, A29240: FS","21, 22, 23, 24, 25, 26, 27","21: FS, 22: FS, 23: FS, 24: FS, 25: FS, 26: FS, 27: FS",,Resource Dependent,Fixed Units/Time,
21,Not Started,Hercules_15082023-6.CONSTRUCTION.Main Works.1.4.1,20,"Retel Modification control cabinet on site (+A01, 79i R303) (EMS)",12/01/2024 08:00,08/02/2024 17:00,0,2,"20, 16, A29420, 6","20: FS, 16: FS, A29420: FS, 6: FS","27, A34180","27: FS, A34180: FS",,Resource Dependent,Fixed Units/Time,
22,Not Started,Hercules_15082023-6.CONSTRUCTION.Main Works.1.4.1,20,"Retel Modification control cabinet on site (+A02, 79i R303) (EMS)",12/01/2024 08:00,08/02/2024 17:00,0,2,"20, 16, A29420","20: FS, 16: FS, A29420: FS","27, A34180","27: FS, A34180: FS",,Resource Dependent,Fixed Units/Time,
23,Not Started,Hercules_15082023-6.CONSTRUCTION.Main Works.1.4.1,20,"Retel Delivery control cabinet on site (+A03, 79i R301) (EMS)",12/01/2024 08:00,08/02/2024 17:00,0,122,"20, 16, A29420","20: FS, 16: FS, A29420: FS",27,27: FS,,Resource Dependent,Fixed Units/Time,
24,Not Started,Hercules_15082023-6.CONSTRUCTION.Main Works.1.4.1,20,"Retel Modification control cabinet on site (+A04, 79i R427) (EMS)",12/01/2024 08:00,08/02/2024 17:00,6,2,"20, 16, A29420","20: FS, 16: FS, A29420: FS",A34180,A34180: FS,,Resource Dependent,Fixed Units/Time,
25,Not Started,Hercules_15082023-6.CONSTRUCTION.Main Works.1.4.1,20,"Retel Modification control cabinet on site (+A05, 81a R204.1) (EMS)",12/01/2024 08:00,08/02/2024 17:00,6,2,"20, 16, A29420","20: FS, 16: FS, A29420: FS",A34180,A34180: FS,,Resource Dependent,Fixed Units/Time,
26,Not Started,Hercules_15082023-6.CONSTRUCTION.Main Works.1.4.1,20,"Retel Modification control cabinet on site (+WWI, 79i R124) (EMS)",12/01/2024 08:00,08/02/2024 17:00,6,2,"20, 16, A29420","20: FS, 16: FS, A29420: FS",A34180,A34180: FS,,Resource Dependent,Fixed Units/Time,
27,Not Started,Hercules_15082023-6.CONSTRUCTION.Main Works.1.4.1,5,Retel Electrical installation connection in cabinet (EMS),09/02/2024 08:00,15/02/2024 17:00,29,122,"20, 21, 22, A29420, 17, 23","20: FS, 21: FS, 22: FS, A29420: FS, 17: FS, 23: FS",A4930,A4930: FF,,Resource Dependent,Fixed Units/Time,
77,Not Started,Hercules_15082023-6.CONSTRUCTION.Main Works.5,3,New walls constructed,02/11/2023 08:00,06/11/2023 17:00,14,16,13,13: SS,47,47: FS,,Resource Dependent,Fixed Units/Time,
47,Not Started,Hercules_15082023-6.CONSTRUCTION.Main Works.5,2,GMS Delivery of field devices,27/11/2023 08:00,29/11/2023 09:00,0,2,"77, A21890","77: FS, A21890: FS",57,57: FS,,Resource Dependent,Fixed Units/Time,
57,Not Started,Hercules_15082023-6.CONSTRUCTION.Main Works.5,17,GMS Installation of new field devices,29/11/2023 09:00,22/12/2023 09:00,0,2,47,47: FS,67,67: FS,,Resource Dependent,Fixed Units/Time,
67,Not Started,Hercules_15082023-6.CONSTRUCTION.Main Works.5,30,GMS Installation new cables/pneumatic tubes,22/12/2023 09:00,16/02/2024 09:00,0,2,57,57: FS,A34170,A34170: FS,,Resource Dependent,Fixed Units/Time,
A40380,Not Started,Hercules_15082023-6.CONSTRUCTION.Main Works.Level 1.1,5,123 Shutdown feld 2,29/08/2023 08:00,04/09/2023 17:00,0,180,,,A40550,A40550: FS,,Task Dependent,Fixed Duration & Units,
A40550,Not Started,Hercules_15082023-6.CONSTRUCTION.Main Works.Level 1.1,5,123 Fuse + cabling replacement to HVAC LV board,05/09/2023 08:00,11/09/2023 17:00,0,180,A40380,A40380: FS,"A40560, A40370","A40560: FS, A40370: FS",,Task Dependent,Fixed Duration & Units,
A40560,Not Started,Hercules_15082023-6.CONSTRUCTION.Main Works.Level 1.1,5,123 Shutdown supplies to Feld 5 + 6,12/09/2023 08:00,18/09/2023 17:00,0,180,A40550,A40550: FS,A40570,A40570: FS,,Task Dependent,Fixed Duration & Units,
A40570,Not Started,Hercules_15082023-6.CONSTRUCTION.Main Works.Level 1.1,5,123 Stripout cabling to feld 5 + 6,19/09/2023 08:00,25/09/2023 17:00,0,180,A40560,A40560: FS,A40580,A40580: FS,,Task Dependent,Fixed Duration & Units,
A40580,Not Started,Hercules_15082023-6.CONSTRUCTION.Main Works.Level 1.1,5,123 Remove Feld 5 + 6 (stoll),26/09/2023 08:00,02/10/2023 17:00,0,180,A40570,A40570: FS,A40590,A40590: FS,,Task Dependent,Fixed Duration & Units,
A40590,Not Started,Hercules_15082023-6.CONSTRUCTION.Main Works.Level 1.1,5,123 Install Fedl 5 + 6 (stoll),03/10/2023 08:00,09/10/2023 17:00,0,180,A40580,A40580: FS,A40600,A40600: FS,,Task Dependent,Fixed Duration & Units,
A40600,Not Started,Hercules_15082023-6.CONSTRUCTION.Main Works.Level 1.1,15,123 Install incoming + outgoing circuits (3 weeks),10/10/2023 08:00,30/10/2023 17:00,0,180,A40590,A40590: FS,A40610,A40610: FS,,Task Dependent,Fixed Duration & Units,
A40610,Not Started,Hercules_15082023-6.CONSTRUCTION.Main Works.Level 1.1,5,123 Pre energisation test and certification,31/10/2023 08:00,06/11/2023 17:00,0,180,A40600,A40600: FS,A40620,A40620: FS,,Task Dependent,Fixed Duration & Units,
A40620,Not Started,Hercules_15082023-6.CONSTRUCTION.Main Works.Level 1.1,5,123 Walkdowns,07/11/2023 08:00,13/11/2023 17:00,180,180,A40610,A40610: FS,,,,Task Dependent,Fixed Duration & Units,
A4900,Not Started,Hercules_15082023-6.CONSTRUCTION.Main Works.Level 1.122,1,122 Protection during construction phase,29/08/2023 08:00,29/08/2023 17:00,0,232,A1040,A1040: SS,"A29550, A29570","A29550: FS, A29570: FS",,Task Dependent,Fixed Duration & Units,
A29550,Not Started,Hercules_15082023-6.CONSTRUCTION.Main Works.Level 1.122,1,122 Installation of PM Process Piping - Process Air (1.5M),30/08/2023 08:00,30/08/2023 17:00,122,232,A4900,A4900: FS,A29560,A29560: FS,,Task Dependent,Fixed Duration & Units,
A29560,Not Started,Hercules_15082023-6.CONSTRUCTION.Main Works.Level 1.122,1,122 Remove protection at end of construction phase,04/03/2024 08:00,04/03/2024 17:00,22,110,"A29550, A40400","A29550: FS, A40400: FS",A1660,A1660: FF,,Task Dependent,Fixed Duration & Units,
A4910,Completed,Hercules_15082023-6.CONSTRUCTION.Main Works.Level 1.125.1,1,125 LOTO and perform E&I dead testing,10/08/2023 08:00,10/08/2023 17:00,,,A1040,A1040: SS -2,"A5070, A29580, A5170, A33650, A4920","A5070: FS, A29580: FF, A5170: FS, A33650: FS, A4920: FS",,Task Dependent,Fixed Duration & Units,
A5170,In Progress,Hercules_15082023-6.CONSTRUCTION.Main Works.Level 1.125.1,11,125 Remove associated E&I Cabling,11/08/2023 08:00,29/08/2023 08:00,0,68,A4910,A4910: FS,A5020,A5020: FS,,Task Dependent,Fixed Duration & Units,
A5020,Not Started,Hercules_15082023-6.CONSTRUCTION.Main Works.Level 1.125.1,1,"125 Isolate and draindown pipework  (WT.K, LS, ABL, AP, WAI, DH, DK, CHW)",29/08/2023 08:00,29/08/2023 17:00,0,68,A5170,A5170: FS,A4920,A4920: FS,,Task Dependent,Fixed Duration & Units,
A4920,Not Started,Hercules_15082023-6.CONSTRUCTION.Main Works.Level 1.125.1,2,125 Disconnect pipework,30/08/2023 08:00,31/08/2023 17:00,0,68,"A5020, A4910","A5020: FS, A4910: FS",A5070,A5070: FS,,Task Dependent,Fixed Duration & Units,
A5070,Not Started,Hercules_15082023-6.CONSTRUCTION.Main Works.Level 1.125.1,5,125 Removal of AP Water Generation & distribution skid,01/09/2023 08:00,07/09/2023 17:00,27,68,"A4910, A4920","A4910: FS, A4920: FS",A4950,A4950: FS,,Task Dependent,Fixed Duration & Units,
A4950,Not Started,Hercules_15082023-6.CONSTRUCTION.Main Works.Level 1.125.1,3,125 Installation of AP Water Generator & Distribution Skid (BWT AQUA),16/10/2023 16:00,19/10/2023 16:00,0,41,"A6170, A5070","A6170: FS, A5070: FS",A4960,A4960: FS,,Task Dependent,Fixed Duration & Units,
A4960,Not Started,Hercules_15082023-6.CONSTRUCTION.Main Works.Level 1.125.1,10,"125 Pipework hookups (WT.K, LS, ABL, AP, WAI, DH, DK, CHW)",19/10/2023 16:00,02/11/2023 16:00,0,41,A4950,A4950: FS,"A4970, A34220","A4970: FS, A34220: FS",,Task Dependent,Fixed Duration & Units,
A4970,Not Started,Hercules_15082023-6.CONSTRUCTION.Main Works.Level 1.125.1,5,125 E&I hookups,02/11/2023 16:00,09/11/2023 16:00,0,170,A4960,A4960: FS,A4980,A4980: FS,,Task Dependent,Fixed Duration & Units,
A4980,Not Started,Hercules_15082023-6.CONSTRUCTION.Main Works.Level 1.125.1,1,125 E&I dead test verification,09/11/2023 16:00,10/11/2023 16:00,0,170,A4970,A4970: FS,A4990,A4990: FS,,Task Dependent,Fixed Duration & Units,
A4990,Not Started,Hercules_15082023-6.CONSTRUCTION.Main Works.Level 1.125.1,5,125 Pipework/valve reinstatement & verification,10/11/2023 16:00,17/11/2023 16:00,0,170,A4980,A4980: FS,A5000,A5000: FS,,Task Dependent,Fixed Duration & Units,
A5000,Not Started,Hercules_15082023-6.CONSTRUCTION.Main Works.Level 1.125.1,4,125 Pipework Insulation,17/11/2023 16:00,23/11/2023 16:00,0,170,A4990,A4990: FS,A5060,A5060: FS,,Task Dependent,Fixed Duration & Units,
A5060,Not Started,Hercules_15082023-6.CONSTRUCTION.Main Works.Level 1.125.1,2,125 Cleaning,23/11/2023 16:00,27/11/2023 16:00,10,170,A5000,A5000: FS,"A39660, A1660","A39660: FF, A1660: FF",,Task Dependent,Fixed Duration & Units,
A33650,Completed,Hercules_15082023-6.CONSTRUCTION.Main Works.Level 1.125.2,1,125 LOTO and perform E&I dead testing,11/08/2023 08:00,11/08/2023 17:00,,,A4910,A4910: FS,"A33760, A33770","A33760: FS, A33770: FS",,Task Dependent,Fixed Duration & Units,
A33770,In Progress,Hercules_15082023-6.CONSTRUCTION.Main Works.Level 1.125.2,11,125 Remove associated E&I Cabling,14/08/2023 08:00,29/08/2023 17:00,0,66,A33650,A33650: FS,A33740,A33740: FS,,Task Dependent,Fixed Duration & Units,
A33740,Not Started,Hercules_15082023-6.CONSTRUCTION.Main Works.Level 1.125.2,1,"125 Isolate and draindown pipework  (LS, AP, WAI, DH, DK, DR, CHW, WFI, SIV)",30/08/2023 08:00,30/08/2023 17:00,0,66,A33770,A33770: FS,A33660,A33660: FS,,Task Dependent,Fixed Duration & Units,
A33660,Not Started,Hercules_15082023-6.CONSTRUCTION.Main Works.Level 1.125.2,3,125 Disconnect pipework,31/08/2023 08:00,04/09/2023 17:00,0,66,A33740,A33740: FS,A33760,A33760: FS,,Task Dependent,Fixed Duration & Units,
A33760,Not Started,Hercules_15082023-6.CONSTRUCTION.Main Works.Level 1.125.2,5,125 Removal of WFI / CSG distribution skid,05/09/2023 08:00,11/09/2023 17:00,35,66,"A33650, A33660","A33650: FS, A33660: FS",A33680,A33680: FS,,Task Dependent,Fixed Duration & Units,
A33680,Not Started,Hercules_15082023-6.CONSTRUCTION.Main Works.Level 1.125.2,3,125 Installation of WFI / CSG distribution skid (BWT AQUA),30/10/2023 16:00,02/11/2023 16:00,0,31,"A33760, A6180","A33760: FS, A6180: FS",A33690,A33690: FS,,Task Dependent,Fixed Duration & Units,
A33690,Not Started,Hercules_15082023-6.CONSTRUCTION.Main Works.Level 1.125.2,10,"125 Pipework hookups (LS, AP, WAI, DH, DK, DR, CHW, WFI, SIV)",02/11/2023 16:00,16/11/2023 16:00,0,31,A33680,A33680: FS,"A33700, A34220","A33700: FS, A34220: FS",,Task Dependent,Fixed Duration & Units,
A33700,Not Started,Hercules_15082023-6.CONSTRUCTION.Main Works.Level 1.125.2,5,125 E&I hookups,16/11/2023 16:00,23/11/2023 16:00,0,160,A33690,A33690: FS,A33710,A33710: FS,,Task Dependent,Fixed Duration & Units,
A33710,Not Started,Hercules_15082023-6.CONSTRUCTION.Main Works.Level 1.125.2,1,125 E&I dead test verification,23/11/2023 16:00,24/11/2023 16:00,0,160,A33700,A33700: FS,A33720,A33720: FS,,Task Dependent,Fixed Duration & Units,
A33720,Not Started,Hercules_15082023-6.CONSTRUCTION.Main Works.Level 1.125.2,5,125 Pipework/valve reinstatement & verification,24/11/2023 16:00,01/12/2023 16:00,0,160,A33710,A33710: FS,A33730,A33730: FS,,Task Dependent,Fixed Duration & Units,
A33730,Not Started,Hercules_15082023-6.CONSTRUCTION.Main Works.Level 1.125.2,4,125 Pipework Insulation,01/12/2023 16:00,07/12/2023 16:00,0,160,A33720,A33720: FS,A33750,A33750: FS,,Task Dependent,Fixed Duration & Units,
A33750,Not Started,Hercules_15082023-6.CONSTRUCTION.Main Works.Level 1.125.2,2,125 Cleaning,07/12/2023 16:00,11/12/2023 16:00,0,160,A33730,A33730: FS,"A39660, A1660","A39660: FF, A1660: FF",,Task Dependent,Fixed Duration & Units,
A6220,Not Started,Hercules_15082023-6.CONSTRUCTION.Main Works.Level 1.126,1,126 EMS Panel Disinvestment n. 53,29/08/2023 08:00,29/08/2023 17:00,0,37,"A1040, A18440","A1040: SS, A18440: FS","A6210, 5, A29460","A6210: FS, 5: FS, A29460: FS",,Task Dependent,Fixed Duration & Units,
A29460,Not Started,Hercules_15082023-6.CONSTRUCTION.Main Works.Level 1.126,1,126 Wall make good after EMS Panel removal,30/08/2023 08:00,30/08/2023 17:00,0,61,"A6220, A29370","A6220: FS, A29370: FS","A39670, 6, A29590, 13","A39670: FF, 6: FF, A29590: FF, 13: FS",,Task Dependent,Fixed Duration & Units,
A6210,Not Started,Hercules_15082023-6.CONSTRUCTION.Main Works.Level 1.127.1,1,127.1 EMS Panel Disinvestment n. 58,30/08/2023 08:00,30/08/2023 17:00,0,37,"A1040, A6220, A18440","A1040: SS, A6220: FS, A18440: FS","A6230, 5, A29470","A6230: FS, 5: FS, A29470: FS",,Task Dependent,Fixed Duration & Units,
A29470,Not Started,Hercules_15082023-6.CONSTRUCTION.Main Works.Level 1.127.1,1,127.1 Wall make good after EMS Panel removal,31/08/2023 08:00,31/08/2023 17:00,0,60,"A6210, A29370","A6210: FS, A29370: FS","A39680, 6, A29600, 13","A39680: FF, 6: FF, A29600: FF, 13: FS",,Task Dependent,Fixed Duration & Units,
A6230,Not Started,Hercules_15082023-6.CONSTRUCTION.Main Works.Level 1.127.2,1,127.2 EMS Panel Disinvestment n. 55,31/08/2023 08:00,31/08/2023 17:00,0,37,"A1040, A6210, A18440","A1040: SS, A6210: FS, A18440: FS","A6190, 5, A29480","A6190: FS, 5: FS, A29480: FS",,Task Dependent,Fixed Duration & Units,
A29480,Not Started,Hercules_15082023-6.CONSTRUCTION.Main Works.Level 1.127.2,1,127.2 Wall make good after EMS Panel removal,01/09/2023 08:00,01/09/2023 17:00,0,59,"A6230, A29370","A6230: FS, A29370: FS","A39690, 6, A29610, 13","A39690: FF, 6: FF, A29610: FF, 13: FS",,Task Dependent,Fixed Duration & Units,
A6190,Not Started,Hercules_15082023-6.CONSTRUCTION.Main Works.Level 1.127.3,1,127.3 EMS Panel Disinvestment n. 56,01/09/2023 08:00,01/09/2023 17:00,0,37,"A1040, A6230, A18440","A1040: SS, A6230: FS, A18440: FS","A6200, 5, A29490","A6200: FS, 5: FS, A29490: FS",,Task Dependent,Fixed Duration & Units,
A29490,Not Started,Hercules_15082023-6.CONSTRUCTION.Main Works.Level 1.127.3,1,127.3 Wall make good after EMS Panel removal,04/09/2023 08:00,04/09/2023 17:00,0,58,"A6190, A29370","A6190: FS, A29370: FS","A39700, 6, A29620, 13","A39700: FF, 6: FF, A29620: FF, 13: FS",,Task Dependent,Fixed Duration & Units,
A6200,Not Started,Hercules_15082023-6.CONSTRUCTION.Main Works.Level 1.127.4,1,127.4 EMS Panel Disinvestment n. 57,04/09/2023 08:00,04/09/2023 17:00,0,37,"A1040, A6190, A18440","A1040: SS, A6190: FS, A18440: FS","A6390, 5, A29500","A6390: FS, 5: FS, A29500: FS",,Task Dependent,Fixed Duration & Units,
A29500,Not Started,Hercules_15082023-6.CONSTRUCTION.Main Works.Level 1.127.4,1,127.4 Wall make good after EMS Panel removal,05/09/2023 08:00,05/09/2023 17:00,0,57,"A6200, A29370","A6200: FS, A29370: FS","A39710, 6, A29630, 13","A39710: FF, 6: FF, A29630: FF, 13: FS",,Task Dependent,Fixed Duration & Units,
A5080,Not Started,Hercules_15082023-6.CONSTRUCTION.Main Works.Level 1.Changing Area,1,Changing Area Removal of Existing Equipment,29/08/2023 08:00,29/08/2023 17:00,0,41,A1040,A1040: SS,A5090,A5090: FS,,Task Dependent,Fixed Duration & Units,
A5090,Not Started,Hercules_15082023-6.CONSTRUCTION.Main Works.Level 1.Changing Area,1,Changing Area Cap Off Existing Services,30/08/2023 08:00,30/08/2023 17:00,0,41,A5080,A5080: FS,A5100,A5100: FS,,Task Dependent,Fixed Duration & Units,
A5100,Not Started,Hercules_15082023-6.CONSTRUCTION.Main Works.Level 1.Changing Area,20,"Changing Area Protect Area, Remove/Modify Existing Wall Panels & Doors",31/08/2023 08:00,27/09/2023 17:00,0,41,A5090,A5090: FS,"A29640, 13, A5120","A29640: FF, 13: FS, A5120: FS",,Task Dependent,Fixed Duration & Units,
A5120,Not Started,Hercules_15082023-6.CONSTRUCTION.Main Works.Level 1.Changing Area,1,Changing Area Cleaning,28/09/2023 08:00,28/09/2023 17:00,0,212,"A29360, A5100","A29360: FS, A5100: FS","A39720, A1660","A39720: FF, A1660: FF",,Task Dependent,Fixed Duration & Units,
A29580,Not Started,Hercules_15082023-6.CONSTRUCTION.Main Works.Level 1.Ready,0,125 Ready for new installations,,29/08/2023 08:00,235,235,A4910,A4910: FF,,,,Finish Milestone,Fixed Duration and Units/Time,
A29570,Not Started,Hercules_15082023-6.CONSTRUCTION.Main Works.Level 1.Ready,0,122 Ready for new installations,,29/08/2023 17:00,234,234,"A4900, A1040","A4900: FS, A1040: SF",,,,Finish Milestone,Fixed Duration and Units/Time,
A29590,Not Started,Hercules_15082023-6.CONSTRUCTION.Main Works.Level 1.Ready,0,126 Ready for new installations,,30/08/2023 17:00,233,233,A29460,A29460: FF,,,,Finish Milestone,Fixed Duration and Units/Time,
A29600,Not Started,Hercules_15082023-6.CONSTRUCTION.Main Works.Level 1.Ready,0,127.1 Ready for new installations,,31/08/2023 17:00,232,232,A29470,A29470: FF,,,,Finish Milestone,Fixed Duration and Units/Time,
A29610,Not Started,Hercules_15082023-6.CONSTRUCTION.Main Works.Level 1.Ready,0,127.2 Ready for new installations,,01/09/2023 17:00,231,231,A29480,A29480: FF,,,,Finish Milestone,Fixed Duration and Units/Time,
A29620,Not Started,Hercules_15082023-6.CONSTRUCTION.Main Works.Level 1.Ready,0,127.3 Ready for new installations,,04/09/2023 17:00,230,230,A29490,A29490: FF,,,,Finish Milestone,Fixed Duration and Units/Time,
A29630,Not Started,Hercules_15082023-6.CONSTRUCTION.Main Works.Level 1.Ready,0,127.4 Ready for new installations,,05/09/2023 17:00,229,229,A29500,A29500: FF,,,,Finish Milestone,Fixed Duration and Units/Time,
A29640,Not Started,Hercules_15082023-6.CONSTRUCTION.Main Works.Level 1.Ready,0,Changing Area Ready for new installations,,27/09/2023 17:00,213,213,A5100,A5100: FF,,,,Finish Milestone,Fixed Duration and Units/Time,
A1670,Not Started,Hercules_15082023-6.CONSTRUCTION.Main Works.Level 2.Blue.200,5,200 Furniture protection during construction phase,29/08/2023 08:00,04/09/2023 17:00,0,220,A1040,A1040: SS,"A29650, A1680, A2640","A29650: FF, A1680: FS, A2640: FS",,Task Dependent,Fixed Duration & Units,
A2640,Not Started,Hercules_15082023-6.CONSTRUCTION.Main Works.Level 2.Blue.200,5,200 Removal of furniture,05/09/2023 08:00,11/09/2023 17:00,114,220,A1670,A1670: FS,A1680,A1680: FS,,Task Dependent,Fixed Duration & Units,
A1680,Not Started,Hercules_15082023-6.CONSTRUCTION.Main Works.Level 2.Blue.200,5,200 Remove protection at end of construction phase,04/03/2024 08:00,08/03/2024 17:00,0,106,"A1670, A40400, A2640","A1670: FS, A40400: FS, A2640: FS","A39840, A1660","A39840: FF, A1660: FF",,Task Dependent,Fixed Duration & Units,
A1630,Not Started,Hercules_15082023-6.CONSTRUCTION.Main Works.Level 2.Blue.201,5,201 Floor protection during construction phase,29/08/2023 08:00,04/09/2023 17:00,0,220,"A1040, A18160","A1040: SS, A18160: FS",A1640,A1640: FS,,Task Dependent,Fixed Duration & Units,
A1640,Not Started,Hercules_15082023-6.CONSTRUCTION.Main Works.Level 2.Blue.201,5,201 Furniture protection during construction phase,05/09/2023 08:00,11/09/2023 17:00,0,220,A1630,A1630: FS,"A29660, A1650","A29660: FF, A1650: FS",,Task Dependent,Fixed Duration & Units,
A1650,Not Started,Hercules_15082023-6.CONSTRUCTION.Main Works.Level 2.Blue.201,5,201 Remove protection at end of construction phase,04/03/2024 08:00,08/03/2024 17:00,0,106,"A1640, A40400","A1640: FS, A40400: FS","A39850, A1660","A39850: FF, A1660: FF",,Task Dependent,Fixed Duration & Units,
A2120,Not Started,Hercules_15082023-6.CONSTRUCTION.Main Works.Level 2.Blue.202,5,202 Floor protection during construction phase,29/08/2023 08:00,04/09/2023 17:00,119,225,"A1040, A18160","A1040: SS, A18160: FS",A2130,A2130: FS,,Task Dependent,Fixed Duration & Units,
A6390,Not Started,Hercules_15082023-6.CONSTRUCTION.Main Works.Level 2.Blue.202,1,202 EMS Panel Disinvestment n. 32,05/09/2023 08:00,05/09/2023 17:00,0,37,"A1040, A6200, A18440","A1040: SS, A6200: FS, A18440: FS","5, A6400","5: FS, A6400: FS",,Task Dependent,Fixed Duration & Units,
A6400,Not Started,Hercules_15082023-6.CONSTRUCTION.Main Works.Level 2.Blue.202,1,202 EMS Panel Disinvestment n. 31,06/09/2023 08:00,06/09/2023 17:00,0,37,"A1040, A6390, A18440","A1040: SS, A6390: FS, A18440: FS","5, A6410","5: FS, A6410: FS",,Task Dependent,Fixed Duration & Units,
A6410,Not Started,Hercules_15082023-6.CONSTRUCTION.Main Works.Level 2.Blue.202,1,202 EMS Panel Disinvestment n. 54,07/09/2023 08:00,07/09/2023 17:00,0,37,"A1040, A6400, A18440","A1040: SS, A6400: FS, A18440: FS","A6420, 5","A6420: FS, 5: FS",,Task Dependent,Fixed Duration & Units,
A6420,Not Started,Hercules_15082023-6.CONSTRUCTION.Main Works.Level 2.Blue.202,1,202 EMS Panel Disinvestment n. 30,08/09/2023 08:00,08/09/2023 17:00,0,37,"A1040, A6410, A18440","A1040: SS, A6410: FS, A18440: FS","5, A6430","5: FS, A6430: FS",,Task Dependent,Fixed Duration & Units,
A6430,Not Started,Hercules_15082023-6.CONSTRUCTION.Main Works.Level 2.Blue.202,1,202 EMS Panel Disinvestment n. 2,11/09/2023 08:00,11/09/2023 17:00,0,37,"A1040, A6420, A18440","A1040: SS, A6420: FS, A18440: FS","5, A6440, A6740","5: FS, A6440: FS, A6740: FS",,Task Dependent,Fixed Duration & Units,
A6440,Not Started,Hercules_15082023-6.CONSTRUCTION.Main Works.Level 2.Blue.202,1,202 EMS Panel Disinvestment n. 26,12/09/2023 08:00,12/09/2023 17:00,0,37,"A1040, A6430, A18440","A1040: SS, A6430: FS, A18440: FS","5, A6450","5: FS, A6450: FS",,Task Dependent,Fixed Duration & Units,
A6740,Not Started,Hercules_15082023-6.CONSTRUCTION.Main Works.Level 2.Blue.202,1,202 EMS Panel Disinvestment n. 1,12/09/2023 08:00,12/09/2023 17:00,0,77,"A6430, A18440","A6430: FS, A18440: FS","5, A6750","5: FS, A6750: FS",,Task Dependent,Fixed Duration & Units,
A6450,Not Started,Hercules_15082023-6.CONSTRUCTION.Main Works.Level 2.Blue.202,1,202 EMS Panel Disinvestment n. 45,13/09/2023 08:00,13/09/2023 17:00,0,37,"A1040, A6440, A18440","A1040: SS, A6440: FS, A18440: FS","5, A6460","5: FS, A6460: FS",,Task Dependent,Fixed Duration & Units,
A6750,Not Started,Hercules_15082023-6.CONSTRUCTION.Main Works.Level 2.Blue.202,1,202 EMS Panel Disinvestment n. 35,13/09/2023 08:00,13/09/2023 17:00,14,77,"A6740, A18440","A6740: FS, A18440: FS",5,5: FS,,Task Dependent,Fixed Duration & Units,
A6460,Not Started,Hercules_15082023-6.CONSTRUCTION.Main Works.Level 2.Blue.202,1,202 EMS Panel Disinvestment n. 44,14/09/2023 08:00,14/09/2023 17:00,0,37,"A1040, A6450, A18440","A1040: SS, A6450: FS, A18440: FS","5, A6470","5: FS, A6470: FS",,Task Dependent,Fixed Duration & Units,
A6470,Not Started,Hercules_15082023-6.CONSTRUCTION.Main Works.Level 2.Blue.202,1,202 EMS Panel Disinvestment n. 27,15/09/2023 08:00,15/09/2023 17:00,0,37,"A1040, A6460, A18440","A1040: SS, A6460: FS, A18440: FS","5, A6480","5: FS, A6480: FS",,Task Dependent,Fixed Duration & Units,
A6480,Not Started,Hercules_15082023-6.CONSTRUCTION.Main Works.Level 2.Blue.202,1,202 EMS Panel Disinvestment n. 8,18/09/2023 08:00,18/09/2023 17:00,0,37,"A1040, A6470, A18440","A1040: SS, A6470: FS, A18440: FS","A6500, 5, A2130, A7700","A6500: FS, 5: FS, A2130: FS, A7700: FS",,Task Dependent,Fixed Duration & Units,
A7700,Not Started,Hercules_15082023-6.CONSTRUCTION.Main Works.Level 2.Blue.202,2,202 Wall make good after EMS Panel removal,19/09/2023 08:00,20/09/2023 17:00,0,46,"A6480, A29370","A6480: FS, A29370: FS","6, A2130, A29670, 13","6: FF, A2130: FS, A29670: FF, 13: FS",,Task Dependent,Fixed Duration & Units,
A2130,Not Started,Hercules_15082023-6.CONSTRUCTION.Main Works.Level 2.Blue.202,5,202 Remove protection at end of construction phase,04/03/2024 08:00,08/03/2024 17:00,0,106,"A6480, A7700, A2120, A40400","A6480: FS, A7700: FS, A2120: FS, A40400: FS","A39860, A1660","A39860: FF, A1660: FF",,Task Dependent,Fixed Duration & Units,
A7710,Not Started,Hercules_15082023-6.CONSTRUCTION.Main Works.Level 2.Blue.203,1,203 Floor protection during construction phase,29/08/2023 08:00,29/08/2023 17:00,0,52,"A1040, A18160","A1040: SS, A18160: FS","A1690, A29680, A7720","A1690: FS, A29680: FF, A7720: FS",,Task Dependent,Fixed Duration & Units,
A7720,Not Started,Hercules_15082023-6.CONSTRUCTION.Main Works.Level 2.Blue.203,5,203 Removal of furniture,30/08/2023 08:00,05/09/2023 17:00,4,52,A7710,A7710: FS,A1690,A1690: FS,,Task Dependent,Fixed Duration & Units,
A1690,Not Started,Hercules_15082023-6.CONSTRUCTION.Main Works.Level 2.Blue.203,5,203 Electrical adaptation because new wall opening tbc,12/09/2023 08:00,18/09/2023 17:00,0,48,"A7710, A1040, A29410, A29370, A7720","A7710: FS, A1040: SS, A29410: FS, A29370: FS, A7720: FS","A39870, 13","A39870: FF, 13: FS",,Task Dependent,Fixed Duration & Units,
A6720,Not Started,Hercules_15082023-6.CONSTRUCTION.Main Works.Level 2.Blue.204,1,204 EMS Panel Disinvestment n. 3,29/08/2023 08:00,29/08/2023 17:00,0,33,"A1040, A18440","A1040: SS, A18440: FS","5, A6730","5: FS, A6730: FS",,Task Dependent,Fixed Duration & Units,
A1700,Not Started,Hercules_15082023-6.CONSTRUCTION.Main Works.Level 2.Blue.204,1,204 Path through removal,29/08/2023 08:00,29/08/2023 17:00,0,41,A1040,A1040: SS,A1710,A1710: FS,,Task Dependent,Fixed Duration & Units,
A1710,Not Started,Hercules_15082023-6.CONSTRUCTION.Main Works.Level 2.Blue.204,2,204 Partial clean wall pannels removal,30/08/2023 08:00,31/08/2023 17:00,0,41,"A1700, A29360, A29370, A18220","A1700: FS, A29360: FS, A29370: FS, A18220: FS","A29690, A1720, 13","A29690: FF, A1720: FS, 13: FS",,Task Dependent,Fixed Duration & Units,
A1720,Not Started,Hercules_15082023-6.CONSTRUCTION.Main Works.Level 2.Blue.204,2,204 Floor repair where wall have been removed,01/09/2023 08:00,04/09/2023 17:00,0,41,"A1710, A18160, A29370","A1710: FS, A18160: FS, A29370: FS","A1730, 13","A1730: FS, 13: FS",,Task Dependent,Fixed Duration & Units,
A1730,Not Started,Hercules_15082023-6.CONSTRUCTION.Main Works.Level 2.Blue.204,12,"204 Existing floor to be sanded down, new finish coat applied to full area",05/09/2023 08:00,20/09/2023 17:00,0,41,"A1720, A18160","A1720: FS, A18160: FS",A1740,A1740: FS,,Task Dependent,Fixed Duration & Units,
A1740,Not Started,Hercules_15082023-6.CONSTRUCTION.Main Works.Level 2.Blue.204,0,204 Floor protection,,20/09/2023 17:00,0,41,"A1730, A18160","A1730: FS, A18160: FF",A1750,A1750: FS,,Finish Milestone,Fixed Duration and Units/Time,
A1750,Not Started,Hercules_15082023-6.CONSTRUCTION.Main Works.Level 2.Blue.204,3,"204 skirting finish, existing coving resin to make good where required and re-finished",21/09/2023 08:00,25/09/2023 17:00,0,41,A1740,A1740: FS,A1760,A1760: FS,,Task Dependent,Fixed Duration & Units,
A1760,Not Started,Hercules_15082023-6.CONSTRUCTION.Main Works.Level 2.Blue.204,2,204 Ceiling to make good where wall have been removed,26/09/2023 08:00,27/09/2023 17:00,0,41,"A1750, A29370","A1750: FS, A29370: FS","A1770, 13","A1770: FS, 13: FS",,Task Dependent,Fixed Duration & Units,
A1770,Not Started,Hercules_15082023-6.CONSTRUCTION.Main Works.Level 2.Blue.204,2,204 Existing clean pannels to make good where required (Repairs if necessary),28/09/2023 08:00,29/09/2023 17:00,0,208,"A1760, A29360","A1760: FS, A29360: FS",A1780,A1780: FS,,Task Dependent,Fixed Duration & Units,
A1780,Not Started,Hercules_15082023-6.CONSTRUCTION.Main Works.Level 2.Blue.204,2,204 Electrical adaptation if required tbc (eg light),02/10/2023 08:00,03/10/2023 17:00,0,208,"A1770, A29410","A1770: FS, A29410: FS",A1790,A1790: FS,,Task Dependent,Fixed Duration & Units,
A1790,Not Started,Hercules_15082023-6.CONSTRUCTION.Main Works.Level 2.Blue.204,1,"204 Existing door EX 205 (room 204->room 203) to be permanently closed, locked and sealed",04/10/2023 08:00,04/10/2023 17:00,0,208,A1780,A1780: FS,"A39880, A1800","A39880: FF, A1800: FS",,Task Dependent,Fixed Duration & Units,
A1800,Not Started,Hercules_15082023-6.CONSTRUCTION.Main Works.Level 2.Blue.204,0,204 Protection removing at end of construction phase,,04/10/2023 17:00,0,208,A1790,A1790: FS,"A39880, A1660","A39880: FF, A1660: FF",,Finish Milestone,Fixed Duration and Units/Time,
A40410,Not Started,Hercules_15082023-6.CONSTRUCTION.Main Works.Level 2.Blue.205,1,205 Floor protection during construction phase,29/08/2023 08:00,29/08/2023 17:00,0,224,"A1040, A18160","A1040: SS, A18160: FS","A40430, A40420","A40430: FS, A40420: FS",,Task Dependent,Fixed Duration & Units,
A40420,Not Started,Hercules_15082023-6.CONSTRUCTION.Main Works.Level 2.Blue.205,5,205 Removal of furniture,30/08/2023 08:00,05/09/2023 17:00,0,224,A40410,A40410: FS,A40430,A40430: FS,,Task Dependent,Fixed Duration & Units,
A40430,Not Started,Hercules_15082023-6.CONSTRUCTION.Main Works.Level 2.Blue.205,5,205 Electrical adaptation because new wall opening tbc,06/09/2023 08:00,12/09/2023 17:00,224,224,"A40410, A40420","A40410: FS, A40420: FS",,,,Task Dependent,Fixed Duration & Units,
A6730,Not Started,Hercules_15082023-6.CONSTRUCTION.Main Works.Level 2.Blue.206,1,206 EMS Panel Disinvestment n. 4,30/08/2023 08:00,30/08/2023 17:00,0,33,"A6720, A18440","A6720: FS, A18440: FS",A1840,A1840: FS,,Task Dependent,Fixed Duration & Units,
A1840,Not Started,Hercules_15082023-6.CONSTRUCTION.Main Works.Level 2.Blue.206,3,"206 Existing glazing to remove, to install a new door",31/08/2023 08:00,04/09/2023 17:00,0,33,"A6730, A1040","A6730: FS, A1040: SS",A1850,A1850: FS,,Task Dependent,Fixed Duration & Units,
A1850,Not Started,Hercules_15082023-6.CONSTRUCTION.Main Works.Level 2.Blue.206,2,206 Opening to create in Clean wall pannel for a door,05/09/2023 08:00,06/09/2023 17:00,0,33,"A1840, A29360, A29370","A1840: FS, A29360: FS, A29370: FS","A1860, 13","A1860: FS, 13: FS",,Task Dependent,Fixed Duration & Units,
A1860,Not Started,Hercules_15082023-6.CONSTRUCTION.Main Works.Level 2.Blue.206,2,206 New door installation DR 221 (room 206 -> corridor 258),07/09/2023 08:00,08/09/2023 17:00,0,33,A1850,A1850: FS,A1870,A1870: FS,,Task Dependent,Fixed Duration & Units,
A1870,Not Started,Hercules_15082023-6.CONSTRUCTION.Main Works.Level 2.Blue.206,2,"206 Partial clean wall pannel removal (between room 206 and 207), door to remove",11/09/2023 08:00,12/09/2023 17:00,0,33,"A1860, A29360, A29370, A18220","A1860: FS, A29360: FS, A29370: FS, A18220: FS","A1880, 13","A1880: FS, 13: FS",,Task Dependent,Fixed Duration & Units,
A1880,Not Started,Hercules_15082023-6.CONSTRUCTION.Main Works.Level 2.Blue.206,2,206 Floor repair where wall have been removed,13/09/2023 08:00,14/09/2023 17:00,0,33,"A1870, A18160, A29370","A1870: FS, A18160: FS, A29370: FS","A1890, 13","A1890: FS, 13: FS",,Task Dependent,Fixed Duration & Units,
A1890,Not Started,Hercules_15082023-6.CONSTRUCTION.Main Works.Level 2.Blue.206,12,"206 Existing floor to be sanded down, new finish coat applied to full area",15/09/2023 08:00,02/10/2023 17:00,0,33,"A1880, A18160","A1880: FS, A18160: FS",A1900,A1900: FS,,Task Dependent,Fixed Duration & Units,
A1900,Not Started,Hercules_15082023-6.CONSTRUCTION.Main Works.Level 2.Blue.206,3,"206 skirting finish, existing coving resin to make good where required and re-finished",03/10/2023 08:00,05/10/2023 17:00,0,33,A1890,A1890: FS,A1910,A1910: FS,,Task Dependent,Fixed Duration & Units,
A1910,Not Started,Hercules_15082023-6.CONSTRUCTION.Main Works.Level 2.Blue.206,0,206 Floor protection,,05/10/2023 17:00,0,33,"A1900, A18160","A1900: FS, A18160: FF",A1920,A1920: FS,,Finish Milestone,Fixed Duration and Units/Time,
A1920,Not Started,Hercules_15082023-6.CONSTRUCTION.Main Works.Level 2.Blue.206,2,206 Ceiling to make good where wall have been removed,06/10/2023 08:00,09/10/2023 17:00,0,33,"A1910, A29370","A1910: FS, A29370: FS","A29720, A1930, 13","A29720: FF, A1930: FS, 13: FS",,Task Dependent,Fixed Duration & Units,
A1930,Not Started,Hercules_15082023-6.CONSTRUCTION.Main Works.Level 2.Blue.206,2,206 Existing clean pannels to make good where required (Repairs if necessary),10/10/2023 08:00,11/10/2023 17:00,0,197,"A1920, A29360","A1920: FS, A29360: FS",A1940,A1940: FS,,Task Dependent,Fixed Duration & Units,
A1940,Not Started,Hercules_15082023-6.CONSTRUCTION.Main Works.Level 2.Blue.206,2,206 Electrical adaptation if required tbc (eg light),12/10/2023 08:00,13/10/2023 17:00,0,197,"A1930, A29410","A1930: FS, A29410: FS",A1950,A1950: FS,,Task Dependent,Fixed Duration & Units,
A1950,Not Started,Hercules_15082023-6.CONSTRUCTION.Main Works.Level 2.Blue.206,3,206 Sink modification tbc / new furniture tbc / wash eye installation,16/10/2023 08:00,18/10/2023 17:00,0,197,A1940,A1940: FS,"A39910, A1960","A39910: FF, A1960: FS",,Task Dependent,Fixed Duration & Units,
A1960,Not Started,Hercules_15082023-6.CONSTRUCTION.Main Works.Level 2.Blue.206,0,206 Protection removing at end of construction phase,,18/10/2023 17:00,0,197,A1950,A1950: FS,"A39910, A1970","A39910: FF, A1970: FS",,Finish Milestone,Fixed Duration and Units/Time,
A1970,Not Started,Hercules_15082023-6.CONSTRUCTION.Main Works.Level 2.Blue.206,1,"206 Door DR 221 (room 206 -> corridor 258) to be permanently closed & only used for fire escape, mainten",19/10/2023 08:00,19/10/2023 17:00,0,197,A1960,A1960: FS,"A39910, A1660","A39910: FF, A1660: FF",,Task Dependent,Fixed Duration & Units,
A1980,Not Started,Hercules_15082023-6.CONSTRUCTION.Main Works.Level 2.Blue.207,2,207 Floor repair at wall opening location tbc,29/08/2023 08:00,30/08/2023 17:00,0,61,"A1040, A18160, A29370","A1040: SS, A18160: FS, A29370: FS","A1990, 13","A1990: FS, 13: FS",,Task Dependent,Fixed Duration & Units,
A1990,Not Started,Hercules_15082023-6.CONSTRUCTION.Main Works.Level 2.Blue.207,2,207 Existing clean pannels to make good where required (Repairs if necessary),31/08/2023 08:00,01/09/2023 17:00,0,202,"A1980, A29360","A1980: FS, A29360: FS","A29700, A2000","A29700: FF, A2000: FS",,Task Dependent,Fixed Duration & Units,
A2000,Not Started,Hercules_15082023-6.CONSTRUCTION.Main Works.Level 2.Blue.207,0,207 Furniture / sink modification,,01/09/2023 17:00,16,202,A1990,A1990: FS,A2010,A2010: FS,,Finish Milestone,Fixed Duration and Units/Time,
A6500,Not Started,Hercules_15082023-6.CONSTRUCTION.Main Works.Level 2.Blue.207,1,207 EMS Panel Disinvestment n. 5,19/09/2023 08:00,19/09/2023 17:00,0,37,"A1040, A6480, A18440","A1040: SS, A6480: FS, A18440: FS","A6680, 5","A6680: FS, 5: FS",,Task Dependent,Fixed Duration & Units,
A2010,Not Started,Hercules_15082023-6.CONSTRUCTION.Main Works.Level 2.Blue.207,2,207 Existing clean pannels ceiling modifications for ventilation (2 x new holes for duct passing),26/09/2023 08:00,27/09/2023 17:00,0,186,"A2000, A19050, A29360","A2000: FS, A19050: FS, A29360: FS",A2020,A2020: FS,,Task Dependent,Fixed Duration & Units,
A2020,Not Started,Hercules_15082023-6.CONSTRUCTION.Main Works.Level 2.Blue.207,4,207 Installation 2x ducts box (clean pannels),28/09/2023 08:00,03/10/2023 17:00,0,186,"A2010, A19050","A2010: FS, A19050: FS",A2030,A2030: FS,,Task Dependent,Fixed Duration & Units,
A2030,Not Started,Hercules_15082023-6.CONSTRUCTION.Main Works.Level 2.Blue.207,3,207 Ducts installation in duct box,04/10/2023 08:00,06/10/2023 17:00,0,186,"A2020, A19050","A2020: FS, A19050: FS",A2040,A2040: FS,,Task Dependent,Fixed Duration & Units,
A2040,Not Started,Hercules_15082023-6.CONSTRUCTION.Main Works.Level 2.Blue.207,2,207 Installation 2 x ventilation inlet on duct box,09/10/2023 08:00,10/10/2023 17:00,0,186,"A2030, A19050","A2030: FS, A19050: FS",A2050,A2050: FS,,Task Dependent,Fixed Duration & Units,
A2050,Not Started,Hercules_15082023-6.CONSTRUCTION.Main Works.Level 2.Blue.207,2,207 Electrical adaptation if required tbc (eg light),11/10/2023 08:00,12/10/2023 17:00,0,186,"A2040, A29410","A2040: FS, A29410: FS",A2060,A2060: FS,,Task Dependent,Fixed Duration & Units,
A2060,Not Started,Hercules_15082023-6.CONSTRUCTION.Main Works.Level 2.Blue.207,12,"207 Existing floor to be sanded down, new finish coat applied to full area",13/10/2023 08:00,30/10/2023 17:00,0,186,"A2050, A18160","A2050: FS, A18160: FS",A2070,A2070: FS,,Task Dependent,Fixed Duration & Units,
A2070,Not Started,Hercules_15082023-6.CONSTRUCTION.Main Works.Level 2.Blue.207,3,"207 skirting finish, existing coving resin to make good where required and re-finished",31/10/2023 08:00,02/11/2023 17:00,0,186,A2060,A2060: FS,A2080,A2080: FS,,Task Dependent,Fixed Duration & Units,
A2080,Not Started,Hercules_15082023-6.CONSTRUCTION.Main Works.Level 2.Blue.207,1,207 Floor protection,03/11/2023 08:00,03/11/2023 17:00,0,186,"A2070, A18160","A2070: FS, A18160: FS",A2090,A2090: FS,,Task Dependent,Fixed Duration & Units,
A2090,Not Started,Hercules_15082023-6.CONSTRUCTION.Main Works.Level 2.Blue.207,0,207 Protection removing at end of construction phase,,03/11/2023 17:00,0,186,A2080,A2080: FS,"A39890, A1660","A39890: FF, A1660: FF",,Finish Milestone,Fixed Duration and Units/Time,
A2150,Not Started,Hercules_15082023-6.CONSTRUCTION.Main Works.Level 2.Blue.214,1,214 room to close during construction phase tbc,29/08/2023 08:00,29/08/2023 17:00,0,234,A1040,A1040: SS,"A39900, A29710, A1660","A39900: FF, A29710: FF, A1660: FF",,Task Dependent,Fixed Duration & Units,
A2160,Not Started,Hercules_15082023-6.CONSTRUCTION.Main Works.Level 2.Blue.215,1,215 room to close during construction phase tbc,29/08/2023 08:00,29/08/2023 17:00,0,234,A1040,A1040: SS,"A39930, A29770, A1660","A39930: FF, A29770: FF, A1660: FF",,Task Dependent,Fixed Duration & Units,
A2140,Not Started,Hercules_15082023-6.CONSTRUCTION.Main Works.Level 2.Blue.216,1,216 room to close during construction phase tbc,29/08/2023 08:00,29/08/2023 17:00,146,234,A1040,A1040: SS,A1660,A1660: FF,,Task Dependent,Fixed Duration & Units,
A6680,Not Started,Hercules_15082023-6.CONSTRUCTION.Main Works.Level 2.Blue.216,1,216 EMS Panel Disinvestment n. 7,20/09/2023 08:00,20/09/2023 17:00,0,37,"A1040, A6500, A18440","A1040: SS, A6500: FS, A18440: FS","A6360, 5, A7750","A6360: FS, 5: FS, A7750: FS",,Task Dependent,Fixed Duration & Units,
A7750,Not Started,Hercules_15082023-6.CONSTRUCTION.Main Works.Level 2.Blue.216,5,216 Make wall good,21/09/2023 08:00,27/09/2023 17:00,0,41,"A6680, A29370","A6680: FS, A29370: FS","A39940, A29780, 13","A39940: FF, A29780: FF, 13: FS",,Task Dependent,Fixed Duration & Units,
A2170,Not Started,Hercules_15082023-6.CONSTRUCTION.Main Works.Level 2.Blue.217,1,217 room to close during construction phase tbc,29/08/2023 08:00,29/08/2023 17:00,0,234,A1040,A1040: SS,"A39950, A29790, A1660","A39950: FF, A29790: FF, A1660: FF",,Task Dependent,Fixed Duration & Units,
A2180,Not Started,Hercules_15082023-6.CONSTRUCTION.Main Works.Level 2.Blue.218,1,218 room to close during construction phase tbc,29/08/2023 08:00,29/08/2023 17:00,146,234,A1040,A1040: SS,A1660,A1660: FF,,Task Dependent,Fixed Duration & Units,
A6360,Not Started,Hercules_15082023-6.CONSTRUCTION.Main Works.Level 2.Blue.218,1,218 EMS Panel Disinvestment n. 9,21/09/2023 08:00,21/09/2023 17:00,0,37,"A1040, A6680, A18440","A1040: SS, A6680: FS, A18440: FS","A6370, 5","A6370: FS, 5: FS",,Task Dependent,Fixed Duration & Units,
A6370,Not Started,Hercules_15082023-6.CONSTRUCTION.Main Works.Level 2.Blue.218,1,218 EMS Panel Disinvestment n. 46,22/09/2023 08:00,22/09/2023 17:00,0,37,"A1040, A6360, A18440","A1040: SS, A6360: FS, A18440: FS","A6350, 5, A7760","A6350: FS, 5: FS, A7760: FS",,Task Dependent,Fixed Duration & Units,
A7760,Not Started,Hercules_15082023-6.CONSTRUCTION.Main Works.Level 2.Blue.218,5,218 Make wall good,25/09/2023 08:00,29/09/2023 17:00,0,39,"A6370, A29370","A6370: FS, A29370: FS","A39960, A29800, 13","A39960: FF, A29800: FF, 13: FS",,Task Dependent,Fixed Duration & Units,
A2190,Not Started,Hercules_15082023-6.CONSTRUCTION.Main Works.Level 2.Blue.219,1,219 room to close during construction phase tbc,29/08/2023 08:00,29/08/2023 17:00,146,234,A1040,A1040: SS,A1660,A1660: FF,,Task Dependent,Fixed Duration & Units,
A6350,Not Started,Hercules_15082023-6.CONSTRUCTION.Main Works.Level 2.Blue.219,1,219 EMS Panel Disinvestment n. 10,25/09/2023 08:00,25/09/2023 17:00,0,37,"A1040, A6370, A18440","A1040: SS, A6370: FS, A18440: FS","A6560, 5, A7770","A6560: FS, 5: FS, A7770: FS",,Task Dependent,Fixed Duration & Units,
A7770,Not Started,Hercules_15082023-6.CONSTRUCTION.Main Works.Level 2.Blue.219,5,219 Make wall good,26/09/2023 08:00,02/10/2023 17:00,0,38,"A6350, A29370","A6350: FS, A29370: FS","A39970, A29810, 13","A39970: FF, A29810: FF, 13: FS",,Task Dependent,Fixed Duration & Units,
A2200,Not Started,Hercules_15082023-6.CONSTRUCTION.Main Works.Level 2.Blue.220,1,220 room to close during construction phase tbc,29/08/2023 08:00,29/08/2023 17:00,146,234,A1040,A1040: SS,A1660,A1660: FF,,Task Dependent,Fixed Duration & Units,
A6560,Not Started,Hercules_15082023-6.CONSTRUCTION.Main Works.Level 2.Blue.220,1,220 EMS Panel Disinvestment n. 11,26/09/2023 08:00,26/09/2023 17:00,0,37,"A1040, A6350, A18440","A1040: SS, A6350: FS, A18440: FS","5, A7780","5: FS, A7780: FS",,Task Dependent,Fixed Duration & Units,
A7780,Not Started,Hercules_15082023-6.CONSTRUCTION.Main Works.Level 2.Blue.220,5,220 Make wall good,27/09/2023 08:00,03/10/2023 17:00,0,37,"A6560, A29370","A6560: FS, A29370: FS","A39980, A29820, 13","A39980: FF, A29820: FF, 13: FS",,Task Dependent,Fixed Duration & Units,
A1170,Not Started,Hercules_15082023-6.CONSTRUCTION.Main Works.Level 2.Blue.221,1,221 Existing floor protection,29/08/2023 08:00,29/08/2023 17:00,0,234,"A1040, A18160","A1040: SS, A18160: FS","A39990, A29830, A1660","A39990: FF, A29830: FF, A1660: FF",,Task Dependent,Fixed Duration & Units,
A1050,Not Started,Hercules_15082023-6.CONSTRUCTION.Main Works.Level 2.Blue.222,1,"222 Furniture removing, temporary storage / Furniture protection",29/08/2023 08:00,29/08/2023 17:00,0,40,A1040,A1040: SS,A1060,A1060: FS,,Task Dependent,Fixed Duration & Units,
A1060,Not Started,Hercules_15082023-6.CONSTRUCTION.Main Works.Level 2.Blue.222,2,222 Partial clean wall pannels removal,30/08/2023 08:00,31/08/2023 17:00,0,40,"A1050, A29360, A29370, A18220","A1050: FS, A29360: FS, A29370: FS, A18220: FS","A1070, 13","A1070: FS, 13: FS",,Task Dependent,Fixed Duration & Units,
A1070,Not Started,Hercules_15082023-6.CONSTRUCTION.Main Works.Level 2.Blue.222,5,222 Floor repair where wall have been removed,01/09/2023 08:00,07/09/2023 17:00,0,40,"A1060, A18160, A29370","A1060: FS, A18160: FS, A29370: FS","A1080, 13","A1080: FS, 13: FS",,Task Dependent,Fixed Duration & Units,
A1080,Not Started,Hercules_15082023-6.CONSTRUCTION.Main Works.Level 2.Blue.222,1,222 Existing floor protection,08/09/2023 08:00,08/09/2023 17:00,0,40,"A1070, A18160","A1070: FS, A18160: FS","A29840, A1090","A29840: FF, A1090: FS",,Task Dependent,Fixed Duration and Units/Time,
A1090,Not Started,Hercules_15082023-6.CONSTRUCTION.Main Works.Level 2.Blue.222,2,"222 New wall installation, adaptation to existing",11/09/2023 08:00,12/09/2023 17:00,0,40,"A1080, A29370","A1080: FS, A29370: FS","A1100, 13","A1100: FS, 13: FS",,Task Dependent,Fixed Duration & Units,
A1100,Not Started,Hercules_15082023-6.CONSTRUCTION.Main Works.Level 2.Blue.222,2,222 New door installation DR 209 (corridor 202->room 222),13/09/2023 08:00,14/09/2023 17:00,0,40,A1090,A1090: FS,A1110,A1110: FS,,Task Dependent,Fixed Duration & Units,
A1110,Not Started,Hercules_15082023-6.CONSTRUCTION.Main Works.Level 2.Blue.222,5,222 Existing floor to make good with new finish coat localised only,15/09/2023 08:00,21/09/2023 17:00,0,40,"A1100, A18160","A1100: FS, A18160: FS",A1120,A1120: FS,,Task Dependent,Fixed Duration & Units,
A1120,Not Started,Hercules_15082023-6.CONSTRUCTION.Main Works.Level 2.Blue.222,3,"222 skirting finish, existing coving resin to make good where required and re-finished",22/09/2023 08:00,26/09/2023 17:00,0,40,A1110,A1110: FS,A1130,A1130: FS,,Task Dependent,Fixed Duration & Units,
A1130,Not Started,Hercules_15082023-6.CONSTRUCTION.Main Works.Level 2.Blue.222,2,222 Ceiling to make good where wall have been removed,27/09/2023 08:00,28/09/2023 17:00,0,40,"A1120, A29370","A1120: FS, A29370: FS","A1140, 13","A1140: FS, 13: FS",,Task Dependent,Fixed Duration & Units,
A1140,Not Started,Hercules_15082023-6.CONSTRUCTION.Main Works.Level 2.Blue.222,4,"222 Sanitary modification (new sink, …) tbc",29/09/2023 08:00,04/10/2023 17:00,0,204,A1130,A1130: FS,A1150,A1150: FS,,Task Dependent,Fixed Duration & Units,
A1150,Not Started,Hercules_15082023-6.CONSTRUCTION.Main Works.Level 2.Blue.222,3,"222 Electrical adaptation tbc (lights,… )vity",05/10/2023 08:00,09/10/2023 17:00,0,204,"A1140, A29410","A1140: FS, A29410: FS",A1160,A1160: FS,,Task Dependent,Fixed Duration & Units,
A1160,Not Started,Hercules_15082023-6.CONSTRUCTION.Main Works.Level 2.Blue.222,1,222 Furniture installation,10/10/2023 08:00,10/10/2023 17:00,0,204,A1150,A1150: FS,"A40000, A1660","A40000: FF, A1660: FF",,Task Dependent,Fixed Duration & Units,
A1180,Completed,Hercules_15082023-6.CONSTRUCTION.Main Works.Level 2.Blue.223,0,223 External Platform installation for lifting,,18/08/2023 08:00,,,"A28300, A29450","A28300: FS, A29450: FS",A1190,A1190: FS,,Finish Milestone,Fixed Duration and Units/Time,
A1190,Completed,Hercules_15082023-6.CONSTRUCTION.Main Works.Level 2.Blue.223,3,223 External façade glazing removal,21/08/2023 08:00,23/08/2023 17:00,,,"A1040, A1180","A1040: SS, A1180: FS",A1200,A1200: FS,,Task Dependent,Fixed Duration & Units,
A1210,Completed,Hercules_15082023-6.CONSTRUCTION.Main Works.Level 2.Blue.223,6,223 External cladding removal,21/08/2023 08:00,29/08/2023 17:00,,,A1200,A1200: FS,A1220,A1220: FS,,Task Dependent,Fixed Duration & Units,
A1200,Completed,Hercules_15082023-6.CONSTRUCTION.Main Works.Level 2.Blue.223,2,223 Steel structure removal,24/08/2023 08:00,25/08/2023 17:00,,,A1190,A1190: FS,A1210,A1210: FS,,Task Dependent,Fixed Duration & Units,
A1220,In Progress,Hercules_15082023-6.CONSTRUCTION.Main Works.Level 2.Blue.223,1,223 Temporary closing (raining protection),29/08/2023 08:00,29/08/2023 17:00,0,-3,A1210,A1210: FS,A1230,A1230: FS,,Task Dependent,Fixed Duration & Units,
A1230,Not Started,Hercules_15082023-6.CONSTRUCTION.Main Works.Level 2.Blue.223,2,223 Glazing of room 223 removal for Equipement Removing and installation,30/08/2023 08:00,31/08/2023 17:00,0,-3,A1220,A1220: FS,A1240,A1240: FS,,Task Dependent,Fixed Duration & Units,
A1240,Not Started,Hercules_15082023-6.CONSTRUCTION.Main Works.Level 2.Blue.223,1,"223 Furniture removing, temporary storage / Furniture protection",01/09/2023 08:00,01/09/2023 17:00,0,-3,A1230,A1230: FS,A1250,A1250: FS,,Task Dependent,Fixed Duration & Units,
A1250,Not Started,Hercules_15082023-6.CONSTRUCTION.Main Works.Level 2.Blue.223,1,223 Floor temporary protection,04/09/2023 08:00,04/09/2023 17:00,0,-3,"A1240, A18160","A1240: FS, A18160: FS","A1260, A34040","A1260: FS, A34040: FS",,Task Dependent,Fixed Duration & Units,
A34040,Not Started,Hercules_15082023-6.CONSTRUCTION.Main Works.Level 2.Blue.223,1,223 LOTO and perform E&I dead testing,05/09/2023 08:00,05/09/2023 17:00,0,-3,A1250,A1250: FS,A34030,A34030: FS,,Task Dependent,Fixed Duration & Units,
A34030,Not Started,Hercules_15082023-6.CONSTRUCTION.Main Works.Level 2.Blue.223,1,223 Remove associated E&I Cabling,06/09/2023 08:00,06/09/2023 17:00,0,-3,A34040,A34040: FS,A34050,A34050: FS,,Task Dependent,Fixed Duration & Units,
A34050,Not Started,Hercules_15082023-6.CONSTRUCTION.Main Works.Level 2.Blue.223,1,"223 Isolate and draindown utilities pipework  (LS, DR, PN,PO, DH, AP,CHW, WAA, ABL)",07/09/2023 08:00,07/09/2023 17:00,0,-3,A34030,A34030: FS,A1260,A1260: FS,,Task Dependent,Fixed Duration & Units,
A1260,Not Started,Hercules_15082023-6.CONSTRUCTION.Main Works.Level 2.Blue.223,1,223 Disconnect utilities pipework,08/09/2023 08:00,08/09/2023 17:00,0,-3,"A1250, A34050","A1250: FS, A34050: FS","A1270, A31180","A1270: FS, A31180: FF",,Task Dependent,Fixed Duration & Units,
A1270,Not Started,Hercules_15082023-6.CONSTRUCTION.Main Works.Level 2.Blue.223,1,223 Disconnect vendor interconnecting pipework & cabling,11/09/2023 08:00,11/09/2023 17:00,0,-3,A1260,A1260: FS,"A1280, A31180","A1280: FS, A31180: FF",,Task Dependent,Fixed Duration & Units,
A1280,Not Started,Hercules_15082023-6.CONSTRUCTION.Main Works.Level 2.Blue.223,1,223 Fermenter removal,12/09/2023 08:00,12/09/2023 17:00,0,-3,A1270,A1270: FS,"A1290, A31180","A1290: FS, A31180: FF",,Task Dependent,Fixed Duration & Units,
A1290,Not Started,Hercules_15082023-6.CONSTRUCTION.Main Works.Level 2.Blue.223,1,223 Centrafuge removal,13/09/2023 08:00,13/09/2023 17:00,0,-3,A1280,A1280: FS,A1300,A1300: FS,,Task Dependent,Fixed Duration & Units,
A1300,Not Started,Hercules_15082023-6.CONSTRUCTION.Main Works.Level 2.Blue.223,1,223 Fixed tanks removal,14/09/2023 08:00,14/09/2023 17:00,0,-3,A1290,A1290: FS,"A6240, A1310","A6240: FS, A1310: FS",,Task Dependent,Fixed Duration & Units,
A6240,Not Started,Hercules_15082023-6.CONSTRUCTION.Main Works.Level 2.Blue.223,1,223 EMS Panel Disinvestment n. 12,15/09/2023 08:00,15/09/2023 17:00,0,-3,"A1040, A1300, A18440","A1040: SS, A1300: FS, A18440: FS","A6490, 5, A1310, A7790","A6490: FS, 5: FS, A1310: FS, A7790: FS",,Task Dependent,Fixed Duration & Units,
A7790,Not Started,Hercules_15082023-6.CONSTRUCTION.Main Works.Level 2.Blue.223,1,223 Make wall good,18/09/2023 08:00,18/09/2023 17:00,0,-3,"A6240, A29370","A6240: FS, A29370: FS","A1310, 13","A1310: FS, 13: FS",,Task Dependent,Fixed Duration & Units,
A1310,Not Started,Hercules_15082023-6.CONSTRUCTION.Main Works.Level 2.Blue.223,2,223 Floor repair where Equipment have been removed,19/09/2023 08:00,20/09/2023 17:00,0,-3,"A6240, A7790, A1300, A18160","A6240: FS, A7790: FS, A1300: FS, A18160: FS",A1320,A1320: FS,,Task Dependent,Fixed Duration & Units,
A1320,Not Started,Hercules_15082023-6.CONSTRUCTION.Main Works.Level 2.Blue.223,2,223 Existing clean pannels to make good where required (Repairs if necessary),21/09/2023 08:00,22/09/2023 17:00,0,-3,"A1310, A29360","A1310: FS, A29360: FS",A1330,A1330: FS,,Task Dependent,Fixed Duration & Units,
A1330,Not Started,Hercules_15082023-6.CONSTRUCTION.Main Works.Level 2.Blue.223,2,223 Existing clean pannels ceiling to make good where required,25/09/2023 08:00,26/09/2023 17:00,0,-3,"A1320, A29360","A1320: FS, A29360: FS",A1340,A1340: FS,,Task Dependent,Fixed Duration & Units,
A1340,Not Started,Hercules_15082023-6.CONSTRUCTION.Main Works.Level 2.Blue.223,2,"223 Existing clean pannels ceiling  refurbishment in case of modification (lights, ventilation, piping)",27/09/2023 08:00,28/09/2023 17:00,0,-3,"A1330, A29360","A1330: FS, A29360: FS","A29850, A1350","A29850: FF, A1350: FS",,Task Dependent,Fixed Duration & Units,
A1350,Not Started,Hercules_15082023-6.CONSTRUCTION.Main Works.Level 2.Blue.223,2,"223 Existing clean pannels ceiling modifications (lights, ventilation, piping)",29/09/2023 08:00,02/10/2023 17:00,0,-3,"A1340, A29360","A1340: FS, A29360: FS",A1360,A1360: FS,,Task Dependent,Fixed Duration & Units,
A1360,Not Started,Hercules_15082023-6.CONSTRUCTION.Main Works.Level 2.Blue.223,12,"223 Existing floor to be sanded down, new finish coat applied to full area",03/10/2023 08:00,18/10/2023 17:00,0,-3,"A1350, A18160","A1350: FS, A18160: FS",A1370,A1370: FS,,Task Dependent,Fixed Duration & Units,
A1370,Not Started,Hercules_15082023-6.CONSTRUCTION.Main Works.Level 2.Blue.223,1,223 Floor protection after final flooring,19/10/2023 08:00,19/10/2023 17:00,0,-3,"A1360, A18160","A1360: FS, A18160: FS",A1380,A1380: FS,,Task Dependent,Fixed Duration & Units,
A1380,Not Started,Hercules_15082023-6.CONSTRUCTION.Main Works.Level 2.Blue.223,3,"223 Skirting finish, existing coving resin to make good where required and re-finished",20/10/2023 08:00,24/10/2023 17:00,0,-3,A1370,A1370: FS,A1390,A1390: FS,,Task Dependent,Fixed Duration & Units,
A1390,Not Started,Hercules_15082023-6.CONSTRUCTION.Main Works.Level 2.Blue.223,2,223 Existing clean pannels ceiling modifications for equipement installation (holes for piping and Electrical),25/10/2023 08:00,26/10/2023 17:00,0,-3,"A1380, A29360, A29410","A1380: FS, A29360: FS, A29410: FS","A1480, A1400","A1480: FS, A1400: FS",,Task Dependent,Fixed Duration & Units,
A1480,Not Started,Hercules_15082023-6.CONSTRUCTION.Main Works.Level 2.Blue.223,2,223 Existing clean pannels ceiling modifications for ventilation tbc (new holes for inlet/outlet),27/10/2023 08:00,30/10/2023 17:00,0,-3,"A1390, A29360","A1390: FS, A29360: FS",A1490,A1490: SS,,Task Dependent,Fixed Duration & Units,
A1490,Not Started,Hercules_15082023-6.CONSTRUCTION.Main Works.Level 2.Blue.223,4,223 Existing clean pannels wall modifications for ventilation tbc (new holes for inlet),27/10/2023 08:00,01/11/2023 17:00,0,-3,"A1480, A29360, A29370","A1480: SS, A29360: FS, A29370: FS","A1500, 13","A1500: FS, 13: FS",,Task Dependent,Fixed Duration & Units,
A1500,Not Started,Hercules_15082023-6.CONSTRUCTION.Main Works.Level 2.Blue.223,2,223 Existing clean pannels ceiling modifications for ventilation in Corridor 252.1 tbc (new holes for ducts crossing),02/11/2023 08:00,03/11/2023 17:00,0,-3,"A1490, A19050, A29360","A1490: FS, A19050: FS, A29360: FS",A1510,A1510: FS,,Task Dependent,Fixed Duration & Units,
A1510,Not Started,Hercules_15082023-6.CONSTRUCTION.Main Works.Level 2.Blue.223,2,223 Installation new ducts in corridor 252.1 and inlet in room 223,06/11/2023 08:00,07/11/2023 17:00,0,-3,"A1500, A19050","A1500: FS, A19050: FS","A1520, A1520, A32330","A1520: FF, A1520: FS, A32330: FS",,Task Dependent,Fixed Duration & Units,
A1520,Not Started,Hercules_15082023-6.CONSTRUCTION.Main Works.Level 2.Blue.223,4,223 Installation ducts box in corridor 252.1 (clean pannels),08/11/2023 08:00,13/11/2023 17:00,0,-3,"A1510, A1510, A19050","A1510: FF, A1510: FS, A19050: FS","A4680, A1530, A32330","A4680: FS, A1530: FS, A32330: FS",,Task Dependent,Fixed Duration & Units,
A1530,Not Started,Hercules_15082023-6.CONSTRUCTION.Main Works.Level 2.Blue.223,3,"223 Skirting finish, coving resin at location of new duct box",14/11/2023 08:00,16/11/2023 17:00,0,157,"A1520, A19050","A1520: FS, A19050: FS",A1540,A1540: FS,,Task Dependent,Fixed Duration & Units,
A1540,Not Started,Hercules_15082023-6.CONSTRUCTION.Main Works.Level 2.Blue.223,2,223 Existing clean pannels ceiling modifications for Electrical (Lights) tbc,17/11/2023 08:00,20/11/2023 17:00,0,157,"A1530, A29360, A29410","A1530: FS, A29360: FS, A29410: FS",A1550,A1550: FS,,Task Dependent,Fixed Duration & Units,
A1550,Not Started,Hercules_15082023-6.CONSTRUCTION.Main Works.Level 2.Blue.223,3,223 Electrical adaptations / modifications (eg lights),21/11/2023 08:00,23/11/2023 17:00,0,157,"A1540, A29410","A1540: FS, A29410: FS",A1560,A1560: FS,,Task Dependent,Fixed Duration & Units,
A1560,Not Started,Hercules_15082023-6.CONSTRUCTION.Main Works.Level 2.Blue.223,4,223 Steel structure re-installation,24/11/2023 08:00,29/11/2023 17:00,0,157,A1550,A1550: FS,A1570,A1570: FS,,Task Dependent,Fixed Duration & Units,
A1400,Not Started,Hercules_15082023-6.CONSTRUCTION.Main Works.Level 2.Blue.223,3,223 New equipement installation : Skid Tank,27/11/2023 16:00,30/11/2023 16:00,0,6,"A6130, A1390","A6130: FS, A1390: FS","A1410, A30880","A1410: SS, A30880: FF",,Task Dependent,Fixed Duration & Units,
A1420,Not Started,Hercules_15082023-6.CONSTRUCTION.Main Works.Level 2.Blue.223,5,223 New equipement installation : Fermenter skid,27/11/2023 16:00,04/12/2023 16:00,0,6,"A4850, A1410","A4850: FS, A1410: SS","A1440, A7930, A31180, A1470","A1440: FS, A7930: FS, A31180: FF, A1470: FS",,Task Dependent,Fixed Duration & Units,
A1410,Not Started,Hercules_15082023-6.CONSTRUCTION.Main Works.Level 2.Blue.223,10,223 New equipement installation : Centrafuge skid,27/11/2023 16:00,11/12/2023 16:00,0,6,"A4860, A1400","A4860: FS, A1400: SS","A1420, A1440, A30870","A1420: SS, A1440: FS, A30870: FF",,Task Dependent,Fixed Duration & Units,
A1570,Not Started,Hercules_15082023-6.CONSTRUCTION.Main Works.Level 2.Blue.223,3,223 External façade glazing re-installation,30/11/2023 08:00,04/12/2023 17:00,0,157,A1560,A1560: FS,A1580,A1580: FS,,Task Dependent,Fixed Duration & Units,
A1470,Not Started,Hercules_15082023-6.CONSTRUCTION.Main Works.Level 2.Blue.223,15,"223 Pipework hookups (LS, DR, PN,PO, DH, AP,CHW, WAA, ABL)",04/12/2023 16:00,08/01/2024 16:00,0,6,A1420,A1420: FS,"A7930, A30870, A30880, A31180, A1460, A6150","A7930: FS, A30870: FS, A30880: FS, A31180: FF, A1460: SS 5, A6150: FS",,Task Dependent,Fixed Duration & Units,
A1580,Not Started,Hercules_15082023-6.CONSTRUCTION.Main Works.Level 2.Blue.223,3,223 External cladding re-installation,05/12/2023 08:00,07/12/2023 17:00,0,157,A1570,A1570: FS,A1590,A1590: FS,,Task Dependent,Fixed Duration & Units,
A1590,Not Started,Hercules_15082023-6.CONSTRUCTION.Main Works.Level 2.Blue.223,1,223 Furniture re-installation (retained),08/12/2023 08:00,08/12/2023 17:00,36,157,A1580,A1580: FS,A1600,A1600: FS,,Task Dependent,Fixed Duration & Units,
A1440,Not Started,Hercules_15082023-6.CONSTRUCTION.Main Works.Level 2.Blue.223,3,223 Wall glazing re-installation after Equiment installation,11/12/2023 16:00,14/12/2023 16:00,0,156,"A1420, A1410, A29370","A1420: FS, A1410: FS, A29370: FS",A1450,A1450: FS,,Task Dependent,Fixed Duration & Units,
A1460,Not Started,Hercules_15082023-6.CONSTRUCTION.Main Works.Level 2.Blue.223,15,223 Install vendor interconnecting pipework & cabling,11/12/2023 16:00,15/01/2024 16:00,0,6,A1470,A1470: SS 5,"A7930, A30870, A30880, A31180","A7930: FS 19, A30870: FS 19, A30880: FS 19, A31180: FF",,Task Dependent,Fixed Duration & Units,
A1450,Not Started,Hercules_15082023-6.CONSTRUCTION.Main Works.Level 2.Blue.223,1,223 Wall glazing protection near equipment to connect,14/12/2023 16:00,15/12/2023 16:00,156,156,"A1440, A29370","A1440: FS, A29370: FS",,,,Task Dependent,Fixed Duration & Units,
A6150,Not Started,Hercules_15082023-6.CONSTRUCTION.Main Works.Level 2.Blue.223,12,223 E&I hookups,08/01/2024 16:00,24/01/2024 16:00,0,121,A1470,A1470: FS,A34060,A34060: FS,,Task Dependent,Fixed Duration & Units,
A34060,Not Started,Hercules_15082023-6.CONSTRUCTION.Main Works.Level 2.Blue.223,2,223 E&I dead test verification,24/01/2024 16:00,26/01/2024 16:00,0,121,A6150,A6150: FS,A34070,A34070: FS,,Task Dependent,Fixed Duration & Units,
A34070,Not Started,Hercules_15082023-6.CONSTRUCTION.Main Works.Level 2.Blue.223,7,223 Pipework reinstatement & verification,26/01/2024 16:00,06/02/2024 16:00,0,121,A34060,A34060: FS,A34080,A34080: FS,,Task Dependent,Fixed Duration & Units,
A34080,Not Started,Hercules_15082023-6.CONSTRUCTION.Main Works.Level 2.Blue.223,4,223 Pipework Insulation,06/02/2024 16:00,12/02/2024 16:00,0,121,A34070,A34070: FS,A1600,A1600: FS,,Task Dependent,Fixed Duration & Units,
A1600,Not Started,Hercules_15082023-6.CONSTRUCTION.Main Works.Level 2.Blue.223,1,223 Protection removing at end of construction phase,12/02/2024 16:00,13/02/2024 16:00,0,121,"A34080, A1590","A34080: FS, A1590: FS",A1610,A1610: FS,,Task Dependent,Fixed Duration & Units,
A1610,Not Started,Hercules_15082023-6.CONSTRUCTION.Main Works.Level 2.Blue.223,3,223 External lifting platform dismantling,13/02/2024 16:00,16/02/2024 16:00,0,121,A1600,A1600: FS,"A40010, A1660","A40010: FF, A1660: FF",,Task Dependent,Fixed Duration & Units,
A2100,Not Started,Hercules_15082023-6.CONSTRUCTION.Main Works.Level 2.Blue.224,1,224 Floor protection during construction phase,29/08/2023 08:00,29/08/2023 17:00,146,234,"A1040, A18160","A1040: SS, A18160: FS","A1660, A1660","A1660: FF, A1660: SF",,Task Dependent,Fixed Duration & Units,
A6490,Not Started,Hercules_15082023-6.CONSTRUCTION.Main Works.Level 2.Blue.224,1,224 EMS Panel Disinvestment n. 28,18/09/2023 08:00,18/09/2023 17:00,0,43,"A1040, A6240, A18440","A1040: SS, A6240: FS, A18440: FS","A6630, 5, A7800","A6630: FS, 5: FS, A7800: FS",,Task Dependent,Fixed Duration & Units,
A7800,Not Started,Hercules_15082023-6.CONSTRUCTION.Main Works.Level 2.Blue.224,5,224 Make wall good,19/09/2023 08:00,25/09/2023 17:00,0,43,"A6490, A29370","A6490: FS, A29370: FS","A2110, A29860, 13","A2110: FS, A29860: FF, 13: FS",,Task Dependent,Fixed Duration & Units,
A2110,Not Started,Hercules_15082023-6.CONSTRUCTION.Main Works.Level 2.Blue.224,1,224 Remove protection at end of construction phase,04/03/2024 08:00,04/03/2024 17:00,0,110,"A7800, A40400","A7800: FS, A40400: FS","A40020, A1660","A40020: FF, A1660: FF",,Task Dependent,Fixed Duration & Units,
A1620,Not Started,Hercules_15082023-6.CONSTRUCTION.Main Works.Level 2.Blue.225,1,"225 Existing door EX 203 (corridor 202->room 225) to be permanently closed & only used for fire escape, mainte",29/08/2023 08:00,29/08/2023 17:00,0,234,A1040,A1040: SS,"A40030, A29870, A1660","A40030: FF, A29870: FF, A1660: FF",,Task Dependent,Fixed Duration & Units,
A1820,Not Started,Hercules_15082023-6.CONSTRUCTION.Main Works.Level 2.Blue.229,1,229 Floor protection during construction phase,29/08/2023 08:00,29/08/2023 17:00,0,233,"A1040, A18160","A1040: SS, A18160: FS","A29880, A1830","A29880: FF, A1830: FS",,Task Dependent,Fixed Duration & Units,
A1830,Not Started,Hercules_15082023-6.CONSTRUCTION.Main Works.Level 2.Blue.229,1,229 Remove protection at end of construction phase,04/03/2024 08:00,04/03/2024 17:00,0,110,"A1820, A40400","A1820: FS, A40400: FS","A40040, A1660","A40040: FF, A1660: FF",,Task Dependent,Fixed Duration & Units,
A3300,Not Started,Hercules_15082023-6.CONSTRUCTION.Main Works.Level 2.Green.208,1,208 Floor protection during construction phase,29/08/2023 08:00,29/08/2023 17:00,0,232,"A18160, A1040","A18160: FS, A1040: SS","A3320, A30050","A3320: FS, A30050: FF",,Task Dependent,Fixed Duration & Units,
A3320,Not Started,Hercules_15082023-6.CONSTRUCTION.Main Works.Level 2.Green.208,1,"208 Existing door EX 200 (room 207-> room 208) to be permanently closed & only used for fire escape, mainten",30/08/2023 08:00,30/08/2023 17:00,122,232,A3300,A3300: FS,A3310,A3310: FS,,Task Dependent,Fixed Duration & Units,
A3310,Not Started,Hercules_15082023-6.CONSTRUCTION.Main Works.Level 2.Green.208,1,208 Remove protection at end of construction phase,04/03/2024 08:00,04/03/2024 17:00,0,110,"A3320, A40400","A3320: FS, A40400: FS","A40200, A1660","A40200: FF, A1660: FF",,Task Dependent,Fixed Duration & Units,
A6650,Not Started,Hercules_15082023-6.CONSTRUCTION.Main Works.Level 2.Green.209,1,209 EMS Panel Disinvestment n. 43,29/08/2023 08:00,29/08/2023 17:00,0,55,"A1040, A18440","A1040: SS, A18440: FS","A6660, 5","A6660: FS, 5: FS",,Task Dependent,Fixed Duration & Units,
A3260,Not Started,Hercules_15082023-6.CONSTRUCTION.Main Works.Level 2.Green.209,1,209 Floor protection during construction phase,29/08/2023 08:00,29/08/2023 17:00,146,234,"A18160, A1040","A18160: FS, A1040: SS","A1660, A1660","A1660: FF, A1660: SF",,Task Dependent,Fixed Duration & Units,
A6660,Not Started,Hercules_15082023-6.CONSTRUCTION.Main Works.Level 2.Green.209,1,209 EMS Panel Disinvestment n. 47,30/08/2023 08:00,30/08/2023 17:00,0,55,"A1040, A6650, A18440","A1040: SS, A6650: FS, A18440: FS","A6670, 5","A6670: FS, 5: FS",,Task Dependent,Fixed Duration & Units,
A6670,Not Started,Hercules_15082023-6.CONSTRUCTION.Main Works.Level 2.Green.209,1,209 EMS Panel Disinvestment n. 29,31/08/2023 08:00,31/08/2023 17:00,0,55,"A1040, A6660, A18440","A1040: SS, A6660: FS, A18440: FS","5, A7820","5: FS, A7820: FS",,Task Dependent,Fixed Duration & Units,
A7820,Not Started,Hercules_15082023-6.CONSTRUCTION.Main Works.Level 2.Green.209,5,209 Make wall good,01/09/2023 08:00,07/09/2023 17:00,0,55,"A6670, A29370","A6670: FS, A29370: FS","A3270, A30030, 13","A3270: FS, A30030: FF, 13: FS",,Task Dependent,Fixed Duration & Units,
A3270,Not Started,Hercules_15082023-6.CONSTRUCTION.Main Works.Level 2.Green.209,1,209 Remove protection at end of construction phase,04/03/2024 08:00,04/03/2024 17:00,0,110,"A7820, A40400","A7820: FS, A40400: FS","A40180, A1660","A40180: FF, A1660: FF",,Task Dependent,Fixed Duration & Units,
A3280,Not Started,Hercules_15082023-6.CONSTRUCTION.Main Works.Level 2.Green.210,1,210 Floor protection during construction phase,29/08/2023 08:00,29/08/2023 17:00,0,233,"A18160, A1040","A18160: FS, A1040: SS","A40190, A30040, A3290","A40190: FF, A30040: FF, A3290: FS",,Task Dependent,Fixed Duration & Units,
A3290,Not Started,Hercules_15082023-6.CONSTRUCTION.Main Works.Level 2.Green.210,1,210 Remove protection at end of construction phase,04/03/2024 08:00,04/03/2024 17:00,0,110,"A3280, A40400","A3280: FS, A40400: FS","A40190, A1660","A40190: FF, A1660: FF",,Task Dependent,Fixed Duration & Units,
A2600,Not Started,Hercules_15082023-6.CONSTRUCTION.Main Works.Level 2.Green.211,1,211 room to close during construction phase tbc,29/08/2023 08:00,29/08/2023 17:00,0,234,A1040,A1040: SS,"A40080, A29930, A1660","A40080: FF, A29930: FF, A1660: FF",,Task Dependent,Fixed Duration & Units,
A2610,Not Started,Hercules_15082023-6.CONSTRUCTION.Main Works.Level 2.Green.212,1,212 Floor protection during construction phase,29/08/2023 08:00,29/08/2023 17:00,0,233,"A1040, A18160","A1040: SS, A18160: FS","A29940, A2620","A29940: FF, A2620: FS",,Task Dependent,Fixed Duration & Units,
A2620,Not Started,Hercules_15082023-6.CONSTRUCTION.Main Works.Level 2.Green.212,1,212 Remove protection at end of construction phase,04/03/2024 08:00,04/03/2024 17:00,0,110,"A2610, A40400","A2610: FS, A40400: FS","A40090, A1660","A40090: FF, A1660: FF",,Task Dependent,Fixed Duration & Units,
A2630,Not Started,Hercules_15082023-6.CONSTRUCTION.Main Works.Level 2.Green.213 / 265,1,213 / 265 Floor protection,29/08/2023 08:00,29/08/2023 17:00,0,51,"A1040, A18160","A1040: SS, A18160: FS",A2670,A2670: FS,,Task Dependent,Fixed Duration & Units,
A2670,Not Started,Hercules_15082023-6.CONSTRUCTION.Main Works.Level 2.Green.213 / 265,1,213 / 265 Protection retained Equipement and Furniture,30/08/2023 08:00,30/08/2023 17:00,0,51,A2630,A2630: FS,"A2680, A2680","A2680: FS, A2680: FF",,Task Dependent,Fixed Duration & Units,
A2680,Not Started,Hercules_15082023-6.CONSTRUCTION.Main Works.Level 2.Green.213 / 265,2,213 / 265 Partial clean wall pannel removal,31/08/2023 08:00,01/09/2023 17:00,0,51,"A2670, A29360, A2670, A29370, A18220","A2670: FS, A29360: FS, A2670: FF, A29370: FS, A18220: FS","A2690, A2780, A33880, 13","A2690: FS, A2780: FS, A33880: FS, 13: FS",,Task Dependent,Fixed Duration & Units,
A2690,Not Started,Hercules_15082023-6.CONSTRUCTION.Main Works.Level 2.Green.213 / 265,2,213 / 265 Floor repair where wall have been removed,04/09/2023 08:00,05/09/2023 17:00,0,51,"A2680, A18160, A29370","A2680: FS, A18160: FS, A29370: FS","A2700, 13","A2700: FS, 13: FS",,Task Dependent,Fixed Duration & Units,
A2700,Not Started,Hercules_15082023-6.CONSTRUCTION.Main Works.Level 2.Green.213 / 265,2,213 / 265 Ceiling to make good where wall have been removed,06/09/2023 08:00,07/09/2023 17:00,0,51,"A2690, A29370","A2690: FS, A29370: FS","A29950, A2710, 13","A29950: FF, A2710: FS, 13: FS",,Task Dependent,Fixed Duration & Units,
A2710,Not Started,Hercules_15082023-6.CONSTRUCTION.Main Works.Level 2.Green.213 / 265,4,"213 / 265 New wall clean rooms pannel installation, adaptation to existing",08/09/2023 08:00,13/09/2023 17:00,0,51,"A2700, A29360, A29370","A2700: FS, A29360: FS, A29370: FS","A2720, 13","A2720: FS, 13: FS",,Task Dependent,Fixed Duration & Units,
A2720,Not Started,Hercules_15082023-6.CONSTRUCTION.Main Works.Level 2.Green.213 / 265,2,213 / 265 Ceiling adaptation for ventilation inlet/outlet tbc,14/09/2023 08:00,15/09/2023 17:00,0,55,A2710,A2710: FS,A2730,A2730: FS,,Task Dependent,Fixed Duration & Units,
A2730,Not Started,Hercules_15082023-6.CONSTRUCTION.Main Works.Level 2.Green.213 / 265,2,213 / 265 Ceiling adaptation for electr tbc,18/09/2023 08:00,19/09/2023 17:00,0,55,A2720,A2720: FS,A2740,A2740: FS,,Task Dependent,Fixed Duration & Units,
A2740,Not Started,Hercules_15082023-6.CONSTRUCTION.Main Works.Level 2.Green.213 / 265,2,213 / 265 Existing clean pannels to make good where required (Repairs if necessary),20/09/2023 08:00,21/09/2023 17:00,0,55,"A2730, A29360","A2730: FS, A29360: FS",A2750,A2750: FS,,Task Dependent,Fixed Duration & Units,
A6540,Not Started,Hercules_15082023-6.CONSTRUCTION.Main Works.Level 2.Green.213 / 265,1,213 / 265 EMS Panel Disinvestment n. 21,21/09/2023 08:00,21/09/2023 17:00,0,63,"A1040, A6640, A18440","A1040: SS, A6640: FS, A18440: FS","A6550, 5","A6550: FS, 5: FS",,Task Dependent,Fixed Duration & Units,
A6550,Not Started,Hercules_15082023-6.CONSTRUCTION.Main Works.Level 2.Green.213 / 265,1,213 / 265 EMS Panel Disinvestment n. 48,22/09/2023 08:00,22/09/2023 17:00,0,63,"A1040, A6540, A18440","A1040: SS, A6540: FS, A18440: FS","A6570, 5","A6570: FS, 5: FS",,Task Dependent,Fixed Duration & Units,
A2750,Not Started,Hercules_15082023-6.CONSTRUCTION.Main Works.Level 2.Green.213 / 265,5,213 / 265 Existing floor to make good with new finish coat localised only,22/09/2023 08:00,28/09/2023 17:00,0,55,"A2740, A18160","A2740: FS, A18160: FS",A2760,A2760: FS,,Task Dependent,Fixed Duration & Units,
A2760,Not Started,Hercules_15082023-6.CONSTRUCTION.Main Works.Level 2.Green.213 / 265,3,"213 / 265 skirting finish, existing coving resin to make good where required and re-finished",29/09/2023 08:00,03/10/2023 17:00,0,55,A2750,A2750: FS,A2770,A2770: FS,,Task Dependent,Fixed Duration & Units,
A2770,Not Started,Hercules_15082023-6.CONSTRUCTION.Main Works.Level 2.Green.213 / 265,1,213 / 265 Floor protection,04/10/2023 08:00,04/10/2023 17:00,8,55,"A2760, A18160","A2760: FS, A18160: FS","A33820, A33930","A33820: FS, A33930: FS",,Task Dependent,Fixed Duration & Units,
A2810,Not Started,Hercules_15082023-6.CONSTRUCTION.Main Works.Level 2.Green.213 / 265,1,213 / 265 Assembly test of equipement cladding versus clean wall,07/12/2023 16:00,08/12/2023 16:00,0,155,"A29360, A33870, A33980, A29370","A29360: FS, A33870: FS, A33980: FS, A29370: FS",A2820,A2820: FS,,Task Dependent,Fixed Duration & Units,
A2820,Not Started,Hercules_15082023-6.CONSTRUCTION.Main Works.Level 2.Green.213 / 265,2,213 / 265 Eventual adaptation of clean walls to Autoclav and Part washer,08/12/2023 16:00,12/12/2023 16:00,0,155,"A2810, A29360, A29370","A2810: FS, A29360: FS, A29370: FS",A2880,A2880: FS,,Task Dependent,Fixed Duration & Units,
A2880,Not Started,Hercules_15082023-6.CONSTRUCTION.Main Works.Level 2.Green.213 / 265,2,213 / 265 Cladding installation of Autoclav and Part washer,12/12/2023 16:00,14/12/2023 16:00,0,155,A2820,A2820: FS,A2890,A2890: FS,,Task Dependent,Fixed Duration & Units,
A2890,Not Started,Hercules_15082023-6.CONSTRUCTION.Main Works.Level 2.Green.213 / 265,1,"213 / 265 Furniture re-installation (retained), protection removal",14/12/2023 16:00,15/12/2023 16:00,45,155,A2880,A2880: FS,A2900,A2900: FS,,Task Dependent,Fixed Duration & Units,
A2900,Not Started,Hercules_15082023-6.CONSTRUCTION.Main Works.Level 2.Green.213 / 265,1,213 / 265 Remove protection at end of construction phase,04/03/2024 08:00,04/03/2024 17:00,0,110,"A2890, A40400","A2890: FS, A40400: FS","A40100, A1660","A40100: FF, A1660: FF",,Task Dependent,Fixed Duration & Units,
A2780,Not Started,Hercules_15082023-6.CONSTRUCTION.Main Works.Level 2.Green.213 / 265.1,1,213 / 265 LOTO and perform E&I dead testing,04/09/2023 08:00,04/09/2023 17:00,0,67,A2680,A2680: FS,A33780,A33780: FS,,Task Dependent,Fixed Duration & Units,
A33780,Not Started,Hercules_15082023-6.CONSTRUCTION.Main Works.Level 2.Green.213 / 265.1,2,213 / 265 Remove associated E&I Cabling,05/09/2023 08:00,06/09/2023 17:00,0,67,A2780,A2780: FS,A33790,A33790: FS,,Task Dependent,Fixed Duration & Units,
A33790,Not Started,Hercules_15082023-6.CONSTRUCTION.Main Works.Level 2.Green.213 / 265.1,1,"213 / 265 Isolate and draindown pipework  (CHW, DR, DH, LS, WBE, ABL, WAI, SIV, WAI, DK)",07/09/2023 08:00,07/09/2023 17:00,0,67,A33780,A33780: FS,A33800,A33800: FS,,Task Dependent,Fixed Duration & Units,
A33800,Not Started,Hercules_15082023-6.CONSTRUCTION.Main Works.Level 2.Green.213 / 265.1,5,213 / 265 Disconnect pipework,08/09/2023 08:00,14/09/2023 17:00,0,67,A33790,A33790: FS,A33810,A33810: FS,,Task Dependent,Fixed Duration & Units,
A33810,Not Started,Hercules_15082023-6.CONSTRUCTION.Main Works.Level 2.Green.213 / 265.1,2,213 / 265 Removal of Parts washer x2,15/09/2023 08:00,18/09/2023 17:00,20,67,A33800,A33800: FS,A33820,A33820: FS,,Task Dependent,Fixed Duration & Units,
A33820,Not Started,Hercules_15082023-6.CONSTRUCTION.Main Works.Level 2.Green.213 / 265.1,3,213 / 265 Installation of Autoclave,16/10/2023 16:00,19/10/2023 16:00,0,47,"A33810, A2770, A4870, A4890","A33810: FS, A2770: FS, A4870: FS, A4890: FS","A33830, A30890","A33830: FS, A30890: FF",Start On or After,Task Dependent,Fixed Duration & Units,
A33830,Not Started,Hercules_15082023-6.CONSTRUCTION.Main Works.Level 2.Green.213 / 265.1,20,"213 / 265 Pipework Hookups  (CHW, DR, DH, LS, WBE, ABL, WAI, SIV, WAI, DK)",19/10/2023 16:00,16/11/2023 16:00,0,47,A33820,A33820: FS,"A33840, A30890","A33840: FS, A30890: FF",,Task Dependent,Fixed Duration & Units,
A33840,Not Started,Hercules_15082023-6.CONSTRUCTION.Main Works.Level 2.Green.213 / 265.1,5,213 / 265 E&I hookups,16/11/2023 16:00,23/11/2023 16:00,0,47,A33830,A33830: FS,A33850,A33850: FS,,Task Dependent,Fixed Duration & Units,
A33850,Not Started,Hercules_15082023-6.CONSTRUCTION.Main Works.Level 2.Green.213 / 265.1,2,213 / 265 LE&I dead test verification,23/11/2023 16:00,27/11/2023 16:00,0,47,A33840,A33840: FS,A33860,A33860: FS,,Task Dependent,Fixed Duration & Units,
A33860,Not Started,Hercules_15082023-6.CONSTRUCTION.Main Works.Level 2.Green.213 / 265.1,4,213 / 265 Pipework/valve reinstatement & verification,27/11/2023 16:00,01/12/2023 16:00,0,47,A33850,A33850: FS,A33870,A33870: FS,,Task Dependent,Fixed Duration & Units,
A33870,Not Started,Hercules_15082023-6.CONSTRUCTION.Main Works.Level 2.Green.213 / 265.1,4,213 / 265 Pipework Insulation,01/12/2023 16:00,07/12/2023 16:00,0,47,A33860,A33860: FS,"A40100, A2810, A30890","A40100: FF, A2810: FS, A30890: FF",,Task Dependent,Fixed Duration & Units,
A33880,Not Started,Hercules_15082023-6.CONSTRUCTION.Main Works.Level 2.Green.213 / 265.2,1,213 / 265 LOTO and perform E&I dead testing,04/09/2023 08:00,04/09/2023 17:00,0,79,A2680,A2680: FS,A33890,A33890: FS,,Task Dependent,Fixed Duration & Units,
A33890,Not Started,Hercules_15082023-6.CONSTRUCTION.Main Works.Level 2.Green.213 / 265.2,2,213 / 265 Remove associated E&I Cabling,05/09/2023 08:00,06/09/2023 17:00,0,79,A33880,A33880: FS,A33900,A33900: FS,,Task Dependent,Fixed Duration & Units,
A33900,Not Started,Hercules_15082023-6.CONSTRUCTION.Main Works.Level 2.Green.213 / 265.2,1,"213 / 265 Isolate and draindown pipework  (AP, WFI, WT.K, LS,  245.05 EA,  WAI, DK)",07/09/2023 08:00,07/09/2023 17:00,0,79,A33890,A33890: FS,A33910,A33910: FS,,Task Dependent,Fixed Duration & Units,
A33910,Not Started,Hercules_15082023-6.CONSTRUCTION.Main Works.Level 2.Green.213 / 265.2,5,213 / 265 Disconnect pipework,08/09/2023 08:00,14/09/2023 17:00,0,79,A33900,A33900: FS,A33920,A33920: FS,,Task Dependent,Fixed Duration & Units,
A33920,Not Started,Hercules_15082023-6.CONSTRUCTION.Main Works.Level 2.Green.213 / 265.2,2,213 / 265 Removal of Autoclave,15/09/2023 08:00,18/09/2023 17:00,26,79,A33910,A33910: FS,A33930,A33930: FS,,Task Dependent,Fixed Duration & Units,
A33930,Not Started,Hercules_15082023-6.CONSTRUCTION.Main Works.Level 2.Green.213 / 265.2,3,213 / 265 Installation of Parts Washer,24/10/2023 16:00,27/10/2023 16:00,0,53,"A33920, A4880, A2770","A33920: FS, A4880: FS, A2770: FS","A33940, A30900","A33940: FS, A30900: FF",Start On or After,Task Dependent,Fixed Duration & Units,
A33940,Not Started,Hercules_15082023-6.CONSTRUCTION.Main Works.Level 2.Green.213 / 265.2,10,"213 / 265 Pipework Hookups  (AP, WFI, WT.K, LS,  245.05 EA,  WAI, DK)",27/10/2023 16:00,10/11/2023 16:00,0,53,A33930,A33930: FS,"A30900, A33950","A30900: FF, A33950: FS",,Task Dependent,Fixed Duration & Units,
A33950,Not Started,Hercules_15082023-6.CONSTRUCTION.Main Works.Level 2.Green.213 / 265.2,5,213 / 265 E&I hookups,10/11/2023 16:00,17/11/2023 16:00,0,53,A33940,A33940: FS,"A30900, A33960","A30900: FF, A33960: FS",,Task Dependent,Fixed Duration & Units,
A33960,Not Started,Hercules_15082023-6.CONSTRUCTION.Main Works.Level 2.Green.213 / 265.2,2,213 / 265 LE&I dead test verification,17/11/2023 16:00,21/11/2023 16:00,0,53,A33950,A33950: FS,"A30900, A33970","A30900: FF, A33970: FS",,Task Dependent,Fixed Duration & Units,
A33970,Not Started,Hercules_15082023-6.CONSTRUCTION.Main Works.Level 2.Green.213 / 265.2,4,213 / 265 Pipework/valve reinstatement & verification,21/11/2023 16:00,27/11/2023 16:00,0,159,A33960,A33960: FS,A33980,A33980: FS,,Task Dependent,Fixed Duration & Units,
A33980,Not Started,Hercules_15082023-6.CONSTRUCTION.Main Works.Level 2.Green.213 / 265.2,4,213 / 265 Pipework Insulation,27/11/2023 16:00,01/12/2023 16:00,4,159,A33970,A33970: FS,"A40100, A2810","A40100: FF, A2810: FS",,Task Dependent,Fixed Duration & Units,
A2910,Not Started,Hercules_15082023-6.CONSTRUCTION.Main Works.Level 2.Green.232,1,232 Floor protection during construction phase,29/08/2023 08:00,29/08/2023 17:00,0,48,"A1040, A18160","A1040: SS, A18160: FS",A2920,A2920: FS,,Task Dependent,Fixed Duration & Units,
A2920,Not Started,Hercules_15082023-6.CONSTRUCTION.Main Works.Level 2.Green.232,2,232 Existing clean pannels to make good where required (Repairs if necessary),30/08/2023 08:00,31/08/2023 17:00,0,48,"A2910, A29360","A2910: FS, A29360: FS","A29960, A2930","A29960: FF, A2930: FS",,Task Dependent,Fixed Duration & Units,
A2930,Not Started,Hercules_15082023-6.CONSTRUCTION.Main Works.Level 2.Green.232,2,232 Clean Wall finishing at the localization of new wall and modification,01/09/2023 08:00,04/09/2023 17:00,0,48,"A2920, A29360, A29370","A2920: FS, A29360: FS, A29370: FS","A2940, 13","A2940: FS, 13: FS",,Task Dependent,Fixed Duration & Units,
A2940,Not Started,Hercules_15082023-6.CONSTRUCTION.Main Works.Level 2.Green.232,2,232 New door installation DR 228 (room 265 -> corridor 232),05/09/2023 08:00,06/09/2023 17:00,0,48,A2930,A2930: FS,A2950,A2950: FS,,Task Dependent,Fixed Duration & Units,
A2950,Not Started,Hercules_15082023-6.CONSTRUCTION.Main Works.Level 2.Green.232,2,232 New double door installation DR 202 to have key lock only (corridor 261 -> corridor 232),07/09/2023 08:00,08/09/2023 17:00,0,48,A2940,A2940: FS,A2960,A2960: FS,,Task Dependent,Fixed Duration & Units,
A2960,Not Started,Hercules_15082023-6.CONSTRUCTION.Main Works.Level 2.Green.232,4,232 Clean Wall opening to allow equipement logistic tbc,11/09/2023 08:00,14/09/2023 17:00,0,48,"A2950, A29360, A29370","A2950: FS, A29360: FS, A29370: FS","A2970, 13","A2970: FS, 13: FS",,Task Dependent,Fixed Duration & Units,
A2970,Not Started,Hercules_15082023-6.CONSTRUCTION.Main Works.Level 2.Green.232,2,232 Ceiling to make good where wall have been removed,15/09/2023 08:00,18/09/2023 17:00,0,48,"A2960, A29370","A2960: FS, A29370: FS","A2980, 13","A2980: FS, 13: FS",,Task Dependent,Fixed Duration & Units,
A2980,Not Started,Hercules_15082023-6.CONSTRUCTION.Main Works.Level 2.Green.232,3,"232 Electrical adaptations / modifications (eg lights, doors connections)",19/09/2023 08:00,21/09/2023 17:00,0,199,"A2970, A29410","A2970: FS, A29410: FS",A2990,A2990: FS,,Task Dependent,Fixed Duration & Units,
A2990,Not Started,Hercules_15082023-6.CONSTRUCTION.Main Works.Level 2.Green.232,5,232 Existing floor to make good with new finish coat localised only,22/09/2023 08:00,28/09/2023 17:00,0,199,"A2980, A18160","A2980: FS, A18160: FS",A3000,A3000: FS,,Task Dependent,Fixed Duration & Units,
A6570,Not Started,Hercules_15082023-6.CONSTRUCTION.Main Works.Level 2.Green.232,1,232 EMS Panel Disinvestment n. 14,25/09/2023 08:00,25/09/2023 17:00,0,63,"A1040, A6550, A18440","A1040: SS, A6550: FS, A18440: FS","A6580, 5","A6580: FS, 5: FS",,Task Dependent,Fixed Duration & Units,
A6580,Not Started,Hercules_15082023-6.CONSTRUCTION.Main Works.Level 2.Green.232,1,232 EMS Panel Disinvestment n. 13,26/09/2023 08:00,26/09/2023 17:00,0,63,"A1040, A6570, A18440","A1040: SS, A6570: FS, A18440: FS","A6590, 5","A6590: FS, 5: FS",,Task Dependent,Fixed Duration & Units,
A6590,Not Started,Hercules_15082023-6.CONSTRUCTION.Main Works.Level 2.Green.232,1,232 EMS Panel Disinvestment n. 33,27/09/2023 08:00,27/09/2023 17:00,0,63,"A1040, A6580, A18440","A1040: SS, A6580: FS, A18440: FS","A6600, 5","A6600: FS, 5: FS",,Task Dependent,Fixed Duration & Units,
A6600,Not Started,Hercules_15082023-6.CONSTRUCTION.Main Works.Level 2.Green.232,1,232 EMS Panel Disinvestment n. 49,28/09/2023 08:00,28/09/2023 17:00,0,63,"A1040, A6590, A18440","A1040: SS, A6590: FS, A18440: FS","A6610, 5","A6610: FS, 5: FS",,Task Dependent,Fixed Duration & Units,
A6610,Not Started,Hercules_15082023-6.CONSTRUCTION.Main Works.Level 2.Green.232,1,232 EMS Panel Disinvestment n. 50,29/09/2023 08:00,29/09/2023 17:00,0,63,"A1040, A6600, A18440","A1040: SS, A6600: FS, A18440: FS","A6620, 5","A6620: FS, 5: FS",,Task Dependent,Fixed Duration & Units,
A3000,Not Started,Hercules_15082023-6.CONSTRUCTION.Main Works.Level 2.Green.232,3,"232 skirting finish, existing coving resin to make good where required and re-finished",29/09/2023 08:00,03/10/2023 17:00,0,199,A2990,A2990: FS,A3010,A3010: FS,,Task Dependent,Fixed Duration & Units,
A6620,Not Started,Hercules_15082023-6.CONSTRUCTION.Main Works.Level 2.Green.232,1,232 EMS Panel Disinvestment n. 60,02/10/2023 08:00,02/10/2023 17:00,0,63,"A1040, A6610, A18440","A1040: SS, A6610: FS, A18440: FS","A6690, 5","A6690: FS, 5: FS",,Task Dependent,Fixed Duration & Units,
A3010,Not Started,Hercules_15082023-6.CONSTRUCTION.Main Works.Level 2.Green.232,1,"232 Existing door EX 204 (room 240 -> corridor 232) to be permanently closed, locked and sealed",04/10/2023 08:00,04/10/2023 17:00,0,199,A3000,A3000: FS,A3020,A3020: FS,,Task Dependent,Fixed Duration & Units,
A3020,Not Started,Hercules_15082023-6.CONSTRUCTION.Main Works.Level 2.Green.232,1,"232 Existing door EX 201 (room 243 -> corridor 232) to be permanently closed, locked and sealed",05/10/2023 08:00,05/10/2023 17:00,0,199,A3010,A3010: FS,A3030,A3030: FS,,Task Dependent,Fixed Duration & Units,
A3030,Not Started,Hercules_15082023-6.CONSTRUCTION.Main Works.Level 2.Green.232,3,"232 Existing door (EX 206, toward room 242) access control to be added",06/10/2023 08:00,10/10/2023 17:00,0,199,A3020,A3020: FS,A3040,A3040: FS,,Task Dependent,Fixed Duration & Units,
A3040,Not Started,Hercules_15082023-6.CONSTRUCTION.Main Works.Level 2.Green.232,3,"232 Existing door (EX 207, toward room 241) access control to be added",11/10/2023 08:00,13/10/2023 17:00,0,199,A3030,A3030: FS,A3050,A3050: FS,,Task Dependent,Fixed Duration & Units,
A3050,Not Started,Hercules_15082023-6.CONSTRUCTION.Main Works.Level 2.Green.232,1,232 Floor protection,16/10/2023 08:00,16/10/2023 17:00,0,199,"A3040, A18160","A3040: FS, A18160: FS",A3060,A3060: FS,,Task Dependent,Fixed Duration & Units,
A3060,Not Started,Hercules_15082023-6.CONSTRUCTION.Main Works.Level 2.Green.232,1,232 Protection removing at end of construction phase,17/10/2023 08:00,17/10/2023 17:00,0,199,A3050,A3050: FS,"A40110, A1660","A40110: FF, A1660: FF",,Task Dependent,Fixed Duration & Units,
A3070,Not Started,Hercules_15082023-6.CONSTRUCTION.Main Works.Level 2.Green.232.1,1,232.1 room to close during construction phase tbc,29/08/2023 08:00,29/08/2023 17:00,0,232,A1040,A1040: SS,"A29970, A3080, A1660","A29970: FF, A3080: FS, A1660: FF",,Task Dependent,Fixed Duration & Units,
A3080,Not Started,Hercules_15082023-6.CONSTRUCTION.Main Works.Level 2.Green.232.1,2,232.1 Electrical adaptations  (eg lights) tbc,12/09/2023 08:00,13/09/2023 17:00,0,223,"A3070, A29410","A3070: FS, A29410: FS","A40120, A1660","A40120: FF, A1660: FF",,Task Dependent,Fixed Duration & Units,
A3100,Not Started,Hercules_15082023-6.CONSTRUCTION.Main Works.Level 2.Green.235,1,235 Floor protection during construction phase,29/08/2023 08:00,29/08/2023 17:00,0,233,"A1040, A18160","A1040: SS, A18160: FS","A29990, A3110, A1660","A29990: FF, A3110: FS, A1660: FF",,Task Dependent,Fixed Duration & Units,
A3110,Not Started,Hercules_15082023-6.CONSTRUCTION.Main Works.Level 2.Green.235,1,235 Protection removing at end of construction phase,30/08/2023 08:00,30/08/2023 17:00,0,233,A3100,A3100: FS,"A40140, A1660","A40140: FF, A1660: FF",,Task Dependent,Fixed Duration & Units,
A3120,Not Started,Hercules_15082023-6.CONSTRUCTION.Main Works.Level 2.Green.236,1,236 Floor protection during construction phase,29/08/2023 08:00,29/08/2023 17:00,0,56,"A1040, A18160","A1040: SS, A18160: FS",A3130,A3130: FS,,Task Dependent,Fixed Duration & Units,
A3130,Not Started,Hercules_15082023-6.CONSTRUCTION.Main Works.Level 2.Green.236,2,"236 Partial clean wall pannel removal, and door to extend the room",30/08/2023 08:00,31/08/2023 17:00,0,56,"A3120, A29360, A29370, A18220","A3120: FS, A29360: FS, A29370: FS, A18220: FS","A3140, 13","A3140: FS, 13: FS",,Task Dependent,Fixed Duration & Units,
A3140,Not Started,Hercules_15082023-6.CONSTRUCTION.Main Works.Level 2.Green.236,2,236 Floor repair where wall have been removed,01/09/2023 08:00,04/09/2023 17:00,0,56,"A3130, A18160, A29370","A3130: FS, A18160: FS, A29370: FS","A3150, 13","A3150: FS, 13: FS",,Task Dependent,Fixed Duration & Units,
A3150,Not Started,Hercules_15082023-6.CONSTRUCTION.Main Works.Level 2.Green.236,2,236 Ceiling to make good where wall have been removed,05/09/2023 08:00,06/09/2023 17:00,0,56,"A3140, A29370","A3140: FS, A29370: FS","A3160, 13","A3160: FS, 13: FS",,Task Dependent,Fixed Duration & Units,
A3160,Not Started,Hercules_15082023-6.CONSTRUCTION.Main Works.Level 2.Green.236,2,236 Existing clean pannels to make good where required (Repairs if necessary),07/09/2023 08:00,08/09/2023 17:00,0,210,"A3150, A29360","A3150: FS, A29360: FS",A3170,A3170: FS,,Task Dependent,Fixed Duration & Units,
A3170,Not Started,Hercules_15082023-6.CONSTRUCTION.Main Works.Level 2.Green.236,5,236 Existing floor to make good with new finish coat localised only,11/09/2023 08:00,15/09/2023 17:00,0,210,"A3160, A18160","A3160: FS, A18160: FS",A3180,A3180: FS,,Task Dependent,Fixed Duration & Units,
A3180,Not Started,Hercules_15082023-6.CONSTRUCTION.Main Works.Level 2.Green.236,3,"236 Skirting finish, existing coving resin to make good where required and re-finished",18/09/2023 08:00,20/09/2023 17:00,0,210,A3170,A3170: FS,"A30000, A3190","A30000: FF, A3190: FS",,Task Dependent,Fixed Duration & Units,
A3190,Not Started,Hercules_15082023-6.CONSTRUCTION.Main Works.Level 2.Green.236,3,236 Electrical adaptation to new room,21/09/2023 08:00,25/09/2023 17:00,0,210,"A3180, A29410","A3180: FS, A29410: FS",A3200,A3200: FS,,Task Dependent,Fixed Duration & Units,
A3200,Not Started,Hercules_15082023-6.CONSTRUCTION.Main Works.Level 2.Green.236,2,236 Ventilation adaptation to new room,26/09/2023 08:00,27/09/2023 17:00,0,210,A3190,A3190: FS,A3210,A3210: FS,,Task Dependent,Fixed Duration & Units,
A3210,Not Started,Hercules_15082023-6.CONSTRUCTION.Main Works.Level 2.Green.236,2,236 Existing Whb to be removed and caped,28/09/2023 08:00,29/09/2023 17:00,0,210,A3200,A3200: FS,A3220,A3220: FS,,Task Dependent,Fixed Duration & Units,
A3220,Not Started,Hercules_15082023-6.CONSTRUCTION.Main Works.Level 2.Green.236,1,236 Protection removing at end of construction phase,02/10/2023 08:00,02/10/2023 17:00,1,210,A3210,A3210: FS,"A40150, A1660","A40150: FF, A1660: FF",,Task Dependent,Fixed Duration & Units,
A6690,Not Started,Hercules_15082023-6.CONSTRUCTION.Main Works.Level 2.Green.236,1,236 EMS Panel Disinvestment n. 15,03/10/2023 08:00,03/10/2023 17:00,0,63,"A1040, A6620, A18440","A1040: SS, A6620: FS, A18440: FS","A40150, 5","A40150: FF, 5: FS",,Task Dependent,Fixed Duration & Units,
A3090,Not Started,Hercules_15082023-6.CONSTRUCTION.Main Works.Level 2.Green.237,1,237 room to close during construction phase tbc,29/08/2023 08:00,29/08/2023 17:00,146,234,A1040,A1040: SS,"A1660, A1660","A1660: FF, A1660: SF",,Task Dependent,Fixed Duration & Units,
A6760,Not Started,Hercules_15082023-6.CONSTRUCTION.Main Works.Level 2.Green.237,1,237 EMS Panel Disinvestment n. 16,04/09/2023 08:00,04/09/2023 17:00,0,53,"A6790, A18440","A6790: FS, A18440: FS","5, A6640, A7810","5: FS, A6640: FS, A7810: FS",,Task Dependent,Fixed Duration & Units,
A7810,Not Started,Hercules_15082023-6.CONSTRUCTION.Main Works.Level 2.Green.237,5,237 Wall make good,05/09/2023 08:00,11/09/2023 17:00,0,53,"A6760, A29370","A6760: FS, A29370: FS","A40130, A29980, 13","A40130: FF, A29980: FF, 13: FS",,Task Dependent,Fixed Duration & Units,
A3230,Not Started,Hercules_15082023-6.CONSTRUCTION.Main Works.Level 2.Green.238,1,238 Room to close during construction phase tbc,29/08/2023 08:00,29/08/2023 17:00,0,234,A1040,A1040: SS,"A40160, A30010, A1660","A40160: FF, A30010: FF, A1660: FF",,Task Dependent,Fixed Duration & Units,
A3240,Not Started,Hercules_15082023-6.CONSTRUCTION.Main Works.Level 2.Green.239,1,239 Floor protection during construction phase,29/08/2023 08:00,29/08/2023 17:00,0,233,"A18160, A1040","A18160: FS, A1040: SS","A30020, A3250, A1660","A30020: FF, A3250: FS, A1660: FF",,Task Dependent,Fixed Duration & Units,
A3250,Not Started,Hercules_15082023-6.CONSTRUCTION.Main Works.Level 2.Green.239,1,239 Protection removing at end of construction phase,30/08/2023 08:00,30/08/2023 17:00,0,233,A3240,A3240: FS,"A40170, A1660","A40170: FF, A1660: FF",,Task Dependent,Fixed Duration & Units,
A2210,Not Started,Hercules_15082023-6.CONSTRUCTION.Main Works.Level 2.Green.240,1,240 Existing floor protection,29/08/2023 08:00,29/08/2023 17:00,0,38,"A1040, A18160","A1040: SS, A18160: FS",A2220,A2220: FS,,Task Dependent,Fixed Duration & Units,
A2220,Not Started,Hercules_15082023-6.CONSTRUCTION.Main Works.Level 2.Green.240,2,"240 Partial clean wall pannel removal, including door",30/08/2023 08:00,31/08/2023 17:00,0,38,"A2210, A29360, A29370, A18220","A2210: FS, A29360: FS, A29370: FS, A18220: FS","A2230, 13","A2230: FS, 13: FS",,Task Dependent,Fixed Duration & Units,
A2230,Not Started,Hercules_15082023-6.CONSTRUCTION.Main Works.Level 2.Green.240,2,240 Opening in the clean wall for door toward room 242,01/09/2023 08:00,04/09/2023 17:00,0,38,"A2220, A29360, A29370","A2220: FS, A29360: FS, A29370: FS","A2240, 13","A2240: FS, 13: FS",,Task Dependent,Fixed Duration & Units,
A2240,Not Started,Hercules_15082023-6.CONSTRUCTION.Main Works.Level 2.Green.240,2,240 Floor repair where wall have been removed,05/09/2023 08:00,06/09/2023 17:00,0,38,"A2230, A18160, A29370","A2230: FS, A18160: FS, A29370: FS","A29900, A2250, 13","A29900: FF, A2250: FS, 13: FS",,Task Dependent,Fixed Duration & Units,
A2250,Not Started,Hercules_15082023-6.CONSTRUCTION.Main Works.Level 2.Green.240,4,240 New clean wall pannel installation for new partition with room 241,07/09/2023 08:00,12/09/2023 17:00,0,38,"A2240, A29360, A29370","A2240: FS, A29360: FS, A29370: FS","A2260, 13","A2260: FS, 13: FS",,Task Dependent,Fixed Duration & Units,
A2260,Not Started,Hercules_15082023-6.CONSTRUCTION.Main Works.Level 2.Green.240,2,240 New door installation DR 226 (room 242 -> room 240),13/09/2023 08:00,14/09/2023 17:00,0,38,A2250,A2250: FS,A2270,A2270: FS,,Task Dependent,Fixed Duration & Units,
A2270,Not Started,Hercules_15082023-6.CONSTRUCTION.Main Works.Level 2.Green.240,2,240 Ceiling adaptation for ventilation inlet/outlet tbc,15/09/2023 08:00,18/09/2023 17:00,0,38,A2260,A2260: FS,A2280,A2280: FS,,Task Dependent,Fixed Duration & Units,
A6630,Not Started,Hercules_15082023-6.CONSTRUCTION.Main Works.Level 2.Green.240,1,240 EMS Panel Disinvestment n. 59,19/09/2023 08:00,19/09/2023 17:00,0,63,"A1040, A6490, A18440","A1040: SS, A6490: FS, A18440: FS","A6640, 5","A6640: FS, 5: FS",,Task Dependent,Fixed Duration & Units,
A2280,Not Started,Hercules_15082023-6.CONSTRUCTION.Main Works.Level 2.Green.240,2,240 Ceiling adaptation for lights tbc,19/09/2023 08:00,20/09/2023 17:00,0,38,A2270,A2270: FS,A2290,A2290: FS,,Task Dependent,Fixed Duration & Units,
A6640,Not Started,Hercules_15082023-6.CONSTRUCTION.Main Works.Level 2.Green.240,1,240 EMS Panel Disinvestment n. 17,20/09/2023 08:00,20/09/2023 17:00,0,63,"A1040, A6630, A6760, A18440","A1040: SS, A6630: FS, A6760: FS, A18440: FS","A6540, 5, A6770","A6540: FS, 5: FS, A6770: FS",,Task Dependent,Fixed Duration & Units,
A2290,Not Started,Hercules_15082023-6.CONSTRUCTION.Main Works.Level 2.Green.240,2,240 Electrical adaptations / modifications (eg lights),21/09/2023 08:00,22/09/2023 17:00,0,38,"A2280, A29410","A2280: FS, A29410: FS",A2300,A2300: FS,,Task Dependent,Fixed Duration & Units,
A2300,Not Started,Hercules_15082023-6.CONSTRUCTION.Main Works.Level 2.Green.240,2,240 Electrical adaptation because new wall opening tbc,25/09/2023 08:00,26/09/2023 17:00,0,38,"A2290, A29410, A29370","A2290: FS, A29410: FS, A29370: FS","A2310, 13","A2310: FS, 13: FS",,Task Dependent,Fixed Duration & Units,
A2310,Not Started,Hercules_15082023-6.CONSTRUCTION.Main Works.Level 2.Green.240,2,240 Ventilation adaptation to the new rooms and new functions tbc,27/09/2023 08:00,28/09/2023 17:00,0,38,A2300,A2300: FS,A2320,A2320: FS,,Task Dependent,Fixed Duration & Units,
A2320,Not Started,Hercules_15082023-6.CONSTRUCTION.Main Works.Level 2.Green.240,2,240 Ceiling to make good where wall have been removed,29/09/2023 08:00,02/10/2023 17:00,0,38,"A2310, A29370","A2310: FS, A29370: FS","A2330, 13","A2330: FS, 13: FS",,Task Dependent,Fixed Duration & Units,
A2330,Not Started,Hercules_15082023-6.CONSTRUCTION.Main Works.Level 2.Green.240,2,240 Existing clean pannels to make good where required (Repairs if necessary),03/10/2023 08:00,04/10/2023 17:00,0,197,"A2320, A29360","A2320: FS, A29360: FS",A2340,A2340: FS,,Task Dependent,Fixed Duration & Units,
A2340,Not Started,Hercules_15082023-6.CONSTRUCTION.Main Works.Level 2.Green.240,5,240 Existing floor to make good with new finish coat localised only,05/10/2023 08:00,11/10/2023 17:00,0,197,"A2330, A18160","A2330: FS, A18160: FS",A2350,A2350: FS,,Task Dependent,Fixed Duration & Units,
A2350,Not Started,Hercules_15082023-6.CONSTRUCTION.Main Works.Level 2.Green.240,3,"240 skirting finish, existing coving resin to make good where required and re-finished",12/10/2023 08:00,16/10/2023 17:00,0,197,A2340,A2340: FS,A2360,A2360: FS,,Task Dependent,Fixed Duration & Units,
A2360,Not Started,Hercules_15082023-6.CONSTRUCTION.Main Works.Level 2.Green.240,1,240 Floor protection,17/10/2023 08:00,17/10/2023 17:00,0,197,"A2350, A18160","A2350: FS, A18160: FS",A2370,A2370: FS,,Task Dependent,Fixed Duration & Units,
A2370,Not Started,Hercules_15082023-6.CONSTRUCTION.Main Works.Level 2.Green.240,1,240 Furniture installation,18/10/2023 08:00,18/10/2023 17:00,87,197,A2360,A2360: FS,A2380,A2380: FS,,Task Dependent,Fixed Duration & Units,
A2380,Not Started,Hercules_15082023-6.CONSTRUCTION.Main Works.Level 2.Green.240,1,240 Remove protection at end of construction phase,04/03/2024 08:00,04/03/2024 17:00,0,110,"A2370, A40400","A2370: FS, A40400: FS","A40050, A1660","A40050: FF, A1660: FF",,Task Dependent,Fixed Duration & Units,
A2490,Not Started,Hercules_15082023-6.CONSTRUCTION.Main Works.Level 2.Green.241,4,241 New rolling door installation DR 227 (room 240->241),29/08/2023 08:00,01/09/2023 17:00,0,212,A1040,A1040: SS,A2500,A2500: FS,,Task Dependent,Fixed Duration & Units,
A2500,Not Started,Hercules_15082023-6.CONSTRUCTION.Main Works.Level 2.Green.241,1,241 Floor protection,04/09/2023 08:00,04/09/2023 17:00,0,212,"A2490, A18160","A2490: FS, A18160: FS",A2510,A2510: FS,,Task Dependent,Fixed Duration & Units,
A2510,Not Started,Hercules_15082023-6.CONSTRUCTION.Main Works.Level 2.Green.241,1,241 Remove equipement and furniture,05/09/2023 08:00,05/09/2023 17:00,0,212,A2500,A2500: FS,"A29920, A2520","A29920: FF, A2520: FS",,Task Dependent,Fixed Duration & Units,
A2520,Not Started,Hercules_15082023-6.CONSTRUCTION.Main Works.Level 2.Green.241,2,"241 Electrical adaptations / modifications (eg lights, switchs, doors connections)",12/09/2023 08:00,13/09/2023 17:00,0,208,"A2510, A29410","A2510: FS, A29410: FS",A2530,A2530: FS,,Task Dependent,Fixed Duration & Units,
A2530,Not Started,Hercules_15082023-6.CONSTRUCTION.Main Works.Level 2.Green.241,2,241 Ceiling adaptation for ventilation inlet/outlet tbc,14/09/2023 08:00,15/09/2023 17:00,0,208,A2520,A2520: FS,A2540,A2540: FS,,Task Dependent,Fixed Duration & Units,
A2540,Not Started,Hercules_15082023-6.CONSTRUCTION.Main Works.Level 2.Green.241,2,241 Ventilation adaptation to the new rooms function tbc,18/09/2023 08:00,19/09/2023 17:00,0,208,A2530,A2530: FS,A2550,A2550: FS,,Task Dependent,Fixed Duration & Units,
A2550,Not Started,Hercules_15082023-6.CONSTRUCTION.Main Works.Level 2.Green.241,2,241 Existing clean pannels to make good where required (Repairs if necessary),20/09/2023 08:00,21/09/2023 17:00,0,208,"A2540, A29360","A2540: FS, A29360: FS",A2560,A2560: FS,,Task Dependent,Fixed Duration & Units,
A6770,Not Started,Hercules_15082023-6.CONSTRUCTION.Main Works.Level 2.Green.241,1,241 EMS Panel Disinvestment n. 18,21/09/2023 08:00,21/09/2023 17:00,0,70,"A6640, A18440","A6640: FS, A18440: FS","5, A6780","5: FS, A6780: FS",,Task Dependent,Fixed Duration & Units,
A2560,Not Started,Hercules_15082023-6.CONSTRUCTION.Main Works.Level 2.Green.241,5,241 Existing floor to make good with new finish coat localised only,22/09/2023 08:00,28/09/2023 17:00,0,208,"A2550, A18160","A2550: FS, A18160: FS",A2570,A2570: FS,,Task Dependent,Fixed Duration & Units,
A2570,Not Started,Hercules_15082023-6.CONSTRUCTION.Main Works.Level 2.Green.241,2,241 Floor marking to separe the areas,29/09/2023 08:00,02/10/2023 17:00,0,208,"A2560, A18160","A2560: FS, A18160: FS",A2580,A2580: FS,,Task Dependent,Fixed Duration & Units,
A2580,Not Started,Hercules_15082023-6.CONSTRUCTION.Main Works.Level 2.Green.241,1,241 Floor protection,03/10/2023 08:00,03/10/2023 17:00,98,208,"A2570, A18160","A2570: FS, A18160: FS",A2590,A2590: FS,,Task Dependent,Fixed Duration & Units,
A2590,Not Started,Hercules_15082023-6.CONSTRUCTION.Main Works.Level 2.Green.241,1,241 Remove protection at end of construction phase,04/03/2024 08:00,04/03/2024 17:00,0,110,"A2580, A40400","A2580: FS, A40400: FS","A40070, A1660","A40070: FF, A1660: FF",,Task Dependent,Fixed Duration & Units,
A2390,Not Started,Hercules_15082023-6.CONSTRUCTION.Main Works.Level 2.Green.242,1,242 Floor protection,29/08/2023 08:00,29/08/2023 17:00,0,217,"A1040, A18160","A1040: SS, A18160: FS",A2400,A2400: FS,,Task Dependent,Fixed Duration & Units,
A2400,Not Started,Hercules_15082023-6.CONSTRUCTION.Main Works.Level 2.Green.242,1,242 Remove weighting equipement and eventual furniture,30/08/2023 08:00,30/08/2023 17:00,0,217,A2390,A2390: FS,"A29910, A2410","A29910: FF, A2410: FS",,Task Dependent,Fixed Duration & Units,
A2410,Not Started,Hercules_15082023-6.CONSTRUCTION.Main Works.Level 2.Green.242,2,"242 Electrical adaptations / modifications (eg lights, switchs, doors connections)",12/09/2023 08:00,13/09/2023 17:00,0,209,"A2400, A29410","A2400: FS, A29410: FS",A2420,A2420: FS,,Task Dependent,Fixed Duration & Units,
A2420,Not Started,Hercules_15082023-6.CONSTRUCTION.Main Works.Level 2.Green.242,2,242 Ceiling adaptation for ventilation inlet/outlet tbc,14/09/2023 08:00,15/09/2023 17:00,0,209,A2410,A2410: FS,A2430,A2430: FS,,Task Dependent,Fixed Duration & Units,
A2430,Not Started,Hercules_15082023-6.CONSTRUCTION.Main Works.Level 2.Green.242,2,242 Ventilation adaptation to the new rooms function tbc,18/09/2023 08:00,19/09/2023 17:00,0,209,A2420,A2420: FS,A2440,A2440: FS,,Task Dependent,Fixed Duration & Units,
A2440,Not Started,Hercules_15082023-6.CONSTRUCTION.Main Works.Level 2.Green.242,2,242 Existing clean pannels to make good where required (Repairs if necessary),20/09/2023 08:00,21/09/2023 17:00,0,209,A2430,A2430: FS,A2450,A2450: FS,,Task Dependent,Fixed Duration & Units,
A6780,Not Started,Hercules_15082023-6.CONSTRUCTION.Main Works.Level 2.Green.242,1,242 EMS Panel Disinvestment n. 19,22/09/2023 08:00,22/09/2023 17:00,7,70,"A6770, A18440","A6770: FS, A18440: FS",5,5: FS,,Task Dependent,Fixed Duration & Units,
A2450,Not Started,Hercules_15082023-6.CONSTRUCTION.Main Works.Level 2.Green.242,5,242 Existing floor to make good with new finish coat localised only,22/09/2023 08:00,28/09/2023 17:00,0,209,"A2440, A18160","A2440: FS, A18160: FS",A2460,A2460: FS,,Task Dependent,Fixed Duration & Units,
A2460,Not Started,Hercules_15082023-6.CONSTRUCTION.Main Works.Level 2.Green.242,1,242 Floor protection,29/09/2023 08:00,29/09/2023 17:00,0,209,"A2450, A18160","A2450: FS, A18160: FS",A2470,A2470: FS,,Task Dependent,Fixed Duration & Units,
A2470,Not Started,Hercules_15082023-6.CONSTRUCTION.Main Works.Level 2.Green.242,1,242 Furniture installation,02/10/2023 08:00,02/10/2023 17:00,99,209,A2460,A2460: FS,A2480,A2480: FS,,Task Dependent,Fixed Duration & Units,
A2480,Not Started,Hercules_15082023-6.CONSTRUCTION.Main Works.Level 2.Green.242,1,242 Remove protection at end of construction phase,04/03/2024 08:00,04/03/2024 17:00,0,110,"A2470, A40400","A2470: FS, A40400: FS","A40060, A1660","A40060: FF, A1660: FF",,Task Dependent,Fixed Duration & Units,
A29730,Not Started,Hercules_15082023-6.CONSTRUCTION.Main Works.Level 2.Ready.Blue,0,205 Ready for new installations,,29/08/2023 08:00,235,235,,,,,,Finish Milestone,Fixed Duration and Units/Time,
A29830,Not Started,Hercules_15082023-6.CONSTRUCTION.Main Works.Level 2.Ready.Blue,0,221 Ready for new installations,,29/08/2023 17:00,234,234,A1170,A1170: FF,,,,Finish Milestone,Fixed Duration and Units/Time,
A29870,Not Started,Hercules_15082023-6.CONSTRUCTION.Main Works.Level 2.Ready.Blue,0,225 Ready for new installations,,29/08/2023 17:00,234,234,A1620,A1620: FF,,,,Finish Milestone,Fixed Duration and Units/Time,
A29880,Not Started,Hercules_15082023-6.CONSTRUCTION.Main Works.Level 2.Ready.Blue,0,229 Ready for new installations,,29/08/2023 17:00,234,234,A1820,A1820: FF,,,,Finish Milestone,Fixed Duration and Units/Time,
A29680,Not Started,Hercules_15082023-6.CONSTRUCTION.Main Works.Level 2.Ready.Blue,0,203 Ready for new installations,,29/08/2023 17:00,234,234,A7710,A7710: FF,,,,Finish Milestone,Fixed Duration and Units/Time,
A29710,Not Started,Hercules_15082023-6.CONSTRUCTION.Main Works.Level 2.Ready.Blue,0,214 Ready for new installations,,29/08/2023 17:00,234,234,A2150,A2150: FF,,,,Finish Milestone,Fixed Duration and Units/Time,
A29770,Not Started,Hercules_15082023-6.CONSTRUCTION.Main Works.Level 2.Ready.Blue,0,215 Ready for new installations,,29/08/2023 17:00,234,234,A2160,A2160: FF,,,,Finish Milestone,Fixed Duration and Units/Time,
A29790,Not Started,Hercules_15082023-6.CONSTRUCTION.Main Works.Level 2.Ready.Blue,0,217 Ready for new installations,,29/08/2023 17:00,234,234,A2170,A2170: FF,,,,Finish Milestone,Fixed Duration and Units/Time,
A29690,Not Started,Hercules_15082023-6.CONSTRUCTION.Main Works.Level 2.Ready.Blue,0,204 Ready for new installations,,31/08/2023 17:00,232,232,A1710,A1710: FF,,,,Finish Milestone,Fixed Duration and Units/Time,
A29700,Not Started,Hercules_15082023-6.CONSTRUCTION.Main Works.Level 2.Ready.Blue,0,207 Ready for new installations,,01/09/2023 17:00,231,231,A1990,A1990: FF,,,,Finish Milestone,Fixed Duration and Units/Time,
A29650,Not Started,Hercules_15082023-6.CONSTRUCTION.Main Works.Level 2.Ready.Blue,0,200 Ready for new installations,,04/09/2023 17:00,230,230,A1670,A1670: FF,,,,Finish Milestone,Fixed Duration and Units/Time,
A29840,Not Started,Hercules_15082023-6.CONSTRUCTION.Main Works.Level 2.Ready.Blue,0,222 Ready for new installations,,08/09/2023 17:00,226,226,A1080,A1080: FF,,,,Finish Milestone,Fixed Duration and Units/Time,
A29660,Not Started,Hercules_15082023-6.CONSTRUCTION.Main Works.Level 2.Ready.Blue,0,201 Ready for new installations,,11/09/2023 17:00,225,225,A1640,A1640: FF,,,,Finish Milestone,Fixed Duration and Units/Time,
A29670,Not Started,Hercules_15082023-6.CONSTRUCTION.Main Works.Level 2.Ready.Blue,0,202 Ready for new installations,,20/09/2023 17:00,218,218,A7700,A7700: FF,,,,Finish Milestone,Fixed Duration and Units/Time,
A29860,Not Started,Hercules_15082023-6.CONSTRUCTION.Main Works.Level 2.Ready.Blue,0,224 Ready for new installations,,25/09/2023 17:00,215,215,A7800,A7800: FF,,,,Finish Milestone,Fixed Duration and Units/Time,
A29780,Not Started,Hercules_15082023-6.CONSTRUCTION.Main Works.Level 2.Ready.Blue,0,216 Ready for new installations,,27/09/2023 17:00,213,213,A7750,A7750: FF,,,,Finish Milestone,Fixed Duration and Units/Time,
A29850,Not Started,Hercules_15082023-6.CONSTRUCTION.Main Works.Level 2.Ready.Blue,0,223 Ready for new installations,,28/09/2023 17:00,212,212,A1340,A1340: FF,,,,Finish Milestone,Fixed Duration and Units/Time,
A29800,Not Started,Hercules_15082023-6.CONSTRUCTION.Main Works.Level 2.Ready.Blue,0,218 Ready for new installations,,29/09/2023 17:00,211,211,A7760,A7760: FF,,,,Finish Milestone,Fixed Duration and Units/Time,
A29810,Not Started,Hercules_15082023-6.CONSTRUCTION.Main Works.Level 2.Ready.Blue,0,219 Ready for new installations,,02/10/2023 17:00,210,210,A7770,A7770: FF,,,,Finish Milestone,Fixed Duration and Units/Time,
A29820,Not Started,Hercules_15082023-6.CONSTRUCTION.Main Works.Level 2.Ready.Blue,0,220 Ready for new installations,,03/10/2023 17:00,209,209,A7780,A7780: FF,,,,Finish Milestone,Fixed Duration and Units/Time,
A29720,Not Started,Hercules_15082023-6.CONSTRUCTION.Main Works.Level 2.Ready.Blue,0,206 Ready for new installations,,09/10/2023 17:00,205,205,A1920,A1920: FF,,,,Finish Milestone,Fixed Duration and Units/Time,
A30010,Not Started,Hercules_15082023-6.CONSTRUCTION.Main Works.Level 2.Ready.Green,0,238 Ready for new installations,,29/08/2023 17:00,234,234,A3230,A3230: FF,,,,Finish Milestone,Fixed Duration and Units/Time,
A30020,Not Started,Hercules_15082023-6.CONSTRUCTION.Main Works.Level 2.Ready.Green,0,239 Ready for new installations,,29/08/2023 17:00,234,234,A3240,A3240: FF,,,,Finish Milestone,Fixed Duration and Units/Time,
A30040,Not Started,Hercules_15082023-6.CONSTRUCTION.Main Works.Level 2.Ready.Green,0,210 Ready for new installations,,29/08/2023 17:00,234,234,A3280,A3280: FF,,,,Finish Milestone,Fixed Duration and Units/Time,
A30050,Not Started,Hercules_15082023-6.CONSTRUCTION.Main Works.Level 2.Ready.Green,0,208 Ready for new installations,,29/08/2023 17:00,234,234,A3300,A3300: FF,,,,Finish Milestone,Fixed Duration and Units/Time,
A29930,Not Started,Hercules_15082023-6.CONSTRUCTION.Main Works.Level 2.Ready.Green,0,211 Ready for new installations,,29/08/2023 17:00,234,234,A2600,A2600: FF,,,,Finish Milestone,Fixed Duration and Units/Time,
A29940,Not Started,Hercules_15082023-6.CONSTRUCTION.Main Works.Level 2.Ready.Green,0,212 Ready for new installations,,29/08/2023 17:00,234,234,A2610,A2610: FF,,,,Finish Milestone,Fixed Duration and Units/Time,
A29970,Not Started,Hercules_15082023-6.CONSTRUCTION.Main Works.Level 2.Ready.Green,0,232.1 Ready for new installations,,29/08/2023 17:00,234,234,A3070,A3070: FF,,,,Finish Milestone,Fixed Duration and Units/Time,
A29990,Not Started,Hercules_15082023-6.CONSTRUCTION.Main Works.Level 2.Ready.Green,0,235 Ready for new installations,,29/08/2023 17:00,234,234,A3100,A3100: FF,,,,Finish Milestone,Fixed Duration and Units/Time,
A29910,Not Started,Hercules_15082023-6.CONSTRUCTION.Main Works.Level 2.Ready.Green,0,242 Ready for new installations,,30/08/2023 17:00,233,233,A2400,A2400: FF,,,,Finish Milestone,Fixed Duration and Units/Time,
A29960,Not Started,Hercules_15082023-6.CONSTRUCTION.Main Works.Level 2.Ready.Green,0,232 Ready for new installations,,31/08/2023 17:00,232,232,A2920,A2920: FF,,,,Finish Milestone,Fixed Duration and Units/Time,
A29920,Not Started,Hercules_15082023-6.CONSTRUCTION.Main Works.Level 2.Ready.Green,0,241 Ready for new installations,,05/09/2023 17:00,229,229,A2510,A2510: FF,,,,Finish Milestone,Fixed Duration and Units/Time,
A29900,Not Started,Hercules_15082023-6.CONSTRUCTION.Main Works.Level 2.Ready.Green,0,240 Ready for new installations,,06/09/2023 17:00,228,228,A2240,A2240: FF,,,,Finish Milestone,Fixed Duration and Units/Time,
A30030,Not Started,Hercules_15082023-6.CONSTRUCTION.Main Works.Level 2.Ready.Green,0,209 Ready for new installations,,07/09/2023 17:00,227,227,A7820,A7820: FF,,,,Finish Milestone,Fixed Duration and Units/Time,
A29950,Not Started,Hercules_15082023-6.CONSTRUCTION.Main Works.Level 2.Ready.Green,0,213 / 265 Ready for new installations,,07/09/2023 17:00,227,227,A2700,A2700: FF,,,,Finish Milestone,Fixed Duration and Units/Time,
A29980,Not Started,Hercules_15082023-6.CONSTRUCTION.Main Works.Level 2.Ready.Green,0,237 Ready for new installations,,11/09/2023 17:00,225,225,A7810,A7810: FF,,,,Finish Milestone,Fixed Duration and Units/Time,
A30000,Not Started,Hercules_15082023-6.CONSTRUCTION.Main Works.Level 2.Ready.Green,0,236 Ready for new installations,,20/09/2023 17:00,218,218,A3180,A3180: FF,,,,Finish Milestone,Fixed Duration and Units/Time,
A30210,Not Started,Hercules_15082023-6.CONSTRUCTION.Main Works.Level 2.Ready.White,0,252.1 Ready for new installations,,29/08/2023 17:00,234,234,A4670,A4670: FF,,,,Finish Milestone,Fixed Duration and Units/Time,
A30220,Not Started,Hercules_15082023-6.CONSTRUCTION.Main Works.Level 2.Ready.White,0,257 Ready for new installations,,29/08/2023 17:00,234,234,A4610,A4610: FF,,,,Finish Milestone,Fixed Duration and Units/Time,
A30230,Not Started,Hercules_15082023-6.CONSTRUCTION.Main Works.Level 2.Ready.White,0,258 Ready for new installations,,08/09/2023 17:00,226,226,A4650,A4650: FF,,,,Finish Milestone,Fixed Duration and Units/Time,
A30200,Not Started,Hercules_15082023-6.CONSTRUCTION.Main Works.Level 2.Ready.White,0,252 Ready for new installations,,20/09/2023 17:00,218,218,A7890,A7890: FF,,,,Finish Milestone,Fixed Duration and Units/Time,
A30240,Not Started,Hercules_15082023-6.CONSTRUCTION.Main Works.Level 2.Ready.White,0,251 Ready for new installations,,27/09/2023 17:00,213,213,A7900,A7900: FF,,,,Finish Milestone,Fixed Duration and Units/Time,
A30100,Not Started,Hercules_15082023-6.CONSTRUCTION.Main Works.Level 2.Ready.Yellow,0,244 Ready for new installations,,29/08/2023 08:00,235,235,,,,,,Finish Milestone,Fixed Duration and Units/Time,
A30090,Not Started,Hercules_15082023-6.CONSTRUCTION.Main Works.Level 2.Ready.Yellow,0,233 Ready for new installations,,29/08/2023 17:00,234,234,A3640,A3640: FF,,,,Finish Milestone,Fixed Duration and Units/Time,
A30130,Not Started,Hercules_15082023-6.CONSTRUCTION.Main Works.Level 2.Ready.Yellow,0,249 Ready for new installations,,30/08/2023 17:00,233,233,A3750,A3750: FF,,,,Finish Milestone,Fixed Duration and Units/Time,
A30070,Not Started,Hercules_15082023-6.CONSTRUCTION.Main Works.Level 2.Ready.Yellow,0,266 Ready for new installations,,01/09/2023 17:00,231,231,A3380,A3380: FF,,,,Finish Milestone,Fixed Duration and Units/Time,
A30110,Not Started,Hercules_15082023-6.CONSTRUCTION.Main Works.Level 2.Ready.Yellow,0,247 Ready for new installations,,07/09/2023 17:00,227,227,A5220,A5220: FF,,,,Finish Milestone,Fixed Duration and Units/Time,
A30060,Not Started,Hercules_15082023-6.CONSTRUCTION.Main Works.Level 2.Ready.Yellow,0,243 Ready for new installations,,08/09/2023 17:00,226,226,A7830,A7830: FF,,,,Finish Milestone,Fixed Duration and Units/Time,
A30120,Not Started,Hercules_15082023-6.CONSTRUCTION.Main Works.Level 2.Ready.Yellow,0,246 Ready for new installations,,08/09/2023 17:00,226,226,A7850,A7850: FF,,,,Finish Milestone,Fixed Duration and Units/Time,
A30140,Not Started,Hercules_15082023-6.CONSTRUCTION.Main Works.Level 2.Ready.Yellow,0,248 Ready for new installations,,15/09/2023 17:00,221,221,A7860,A7860: FF,,,,Finish Milestone,Fixed Duration and Units/Time,
A30190,Not Started,Hercules_15082023-6.CONSTRUCTION.Main Works.Level 2.Ready.Yellow,0,261 Ready for new installations,,19/09/2023 17:00,219,219,A7880,A7880: FF,,,,Finish Milestone,Fixed Duration and Units/Time,
A30150,Not Started,Hercules_15082023-6.CONSTRUCTION.Main Works.Level 2.Ready.Yellow,0,262 / 268 Ready for new installations,,20/09/2023 17:00,218,218,A3960,A3960: FF,,,,Finish Milestone,Fixed Duration and Units/Time,
A30170,Not Started,Hercules_15082023-6.CONSTRUCTION.Main Works.Level 2.Ready.Yellow,0,261.1 Ready for new installations,,25/09/2023 17:00,215,215,A4320,A4320: FF,,,,Finish Milestone,Fixed Duration and Units/Time,
A30180,Not Started,Hercules_15082023-6.CONSTRUCTION.Main Works.Level 2.Ready.Yellow,0,231 Ready for new installations,,04/10/2023 17:00,208,208,A4440,A4440: FF,,,,Finish Milestone,Fixed Duration and Units/Time,
A30080,Not Started,Hercules_15082023-6.CONSTRUCTION.Main Works.Level 2.Ready.Yellow,0,259 / 259.1 / 260 / 245 Ready for new installations,,19/10/2023 17:00,197,197,A3540,A3540: FF,,,,Finish Milestone,Fixed Duration and Units/Time,
A30160,Not Started,Hercules_15082023-6.CONSTRUCTION.Main Works.Level 2.Ready.Yellow,0,267 (228) Ready for new installations,,20/10/2023 17:00,196,196,A4190,A4190: FF,,,,Finish Milestone,Fixed Duration and Units/Time,
A4750,Not Started,Hercules_15082023-6.CONSTRUCTION.Main Works.Level 2.White.251,1,251 Floor and wall protection during construction phase,29/08/2023 08:00,29/08/2023 17:00,46,62,"A1040, A18160, A29370","A1040: SS, A18160: FS, A29370: FS","A4760, 13","A4760: FS, 13: FS",,Task Dependent,Fixed Duration & Units,
A6510,Not Started,Hercules_15082023-6.CONSTRUCTION.Main Works.Level 2.White.251,1,251 EMS Panel Disinvestment n. 25,20/09/2023 08:00,20/09/2023 17:00,0,41,"A1040, A6530, A18440","A1040: SS, A6530: FS, A18440: FS","5, A7900","5: FS, A7900: FS",,Task Dependent,Fixed Duration & Units,
A7900,Not Started,Hercules_15082023-6.CONSTRUCTION.Main Works.Level 2.White.251,5,251 Make wall good,21/09/2023 08:00,27/09/2023 17:00,0,41,"A6510, A29370","A6510: FS, A29370: FS","A4760, A30240, 13","A4760: FS, A30240: FF, 13: FS",,Task Dependent,Fixed Duration & Units,
A4760,Not Started,Hercules_15082023-6.CONSTRUCTION.Main Works.Level 2.White.251,1,251 Remove floor and wall protection at end of construction phase,04/03/2024 08:00,04/03/2024 17:00,0,110,"A4750, A7900, A18160, A29370, A40400","A4750: FS, A7900: FS, A18160: FS, A29370: FS, A40400: FS",A39830,A39830: FF,,Task Dependent,Fixed Duration & Units,
A4710,Not Started,Hercules_15082023-6.CONSTRUCTION.Main Works.Level 2.White.252,1,252 Floor protection during construction phase,29/08/2023 08:00,29/08/2023 17:00,10,51,"A1040, A18160","A1040: SS, A18160: FS",A6280,A6280: FS,,Task Dependent,Fixed Duration & Units,
A6280,Not Started,Hercules_15082023-6.CONSTRUCTION.Main Works.Level 2.White.252,1,252 EMS Panel Disinvestment n. 6,13/09/2023 08:00,13/09/2023 17:00,0,41,"A1040, A6330, A18440, A4710","A1040: SS, A6330: FS, A18440: FS, A4710: FS","A6290, 5","A6290: FS, 5: FS",,Task Dependent,Fixed Duration & Units,
A6290,Not Started,Hercules_15082023-6.CONSTRUCTION.Main Works.Level 2.White.252,1,252 EMS Panel Disinvestment n. 39,14/09/2023 08:00,14/09/2023 17:00,0,41,"A1040, A6280, A18440","A1040: SS, A6280: FS, A18440: FS","A6300, 5","A6300: FS, 5: FS",,Task Dependent,Fixed Duration & Units,
A6300,Not Started,Hercules_15082023-6.CONSTRUCTION.Main Works.Level 2.White.252,1,252 EMS Panel Disinvestment n. 40,15/09/2023 08:00,15/09/2023 17:00,0,41,"A1040, A6290, A18440","A1040: SS, A6290: FS, A18440: FS","A6520, 5","A6520: FS, 5: FS",,Task Dependent,Fixed Duration & Units,
A6520,Not Started,Hercules_15082023-6.CONSTRUCTION.Main Works.Level 2.White.252,1,252 EMS Panel Disinvestment n. 41,18/09/2023 08:00,18/09/2023 17:00,0,41,"A1040, A6300, A18440","A1040: SS, A6300: FS, A18440: FS","A6530, 5","A6530: FS, 5: FS",,Task Dependent,Fixed Duration & Units,
A6530,Not Started,Hercules_15082023-6.CONSTRUCTION.Main Works.Level 2.White.252,1,252 EMS Panel Disinvestment n. 42,19/09/2023 08:00,19/09/2023 17:00,0,41,"A1040, A6520, A18440","A1040: SS, A6520: FS, A18440: FS","A6510, 5, A7890","A6510: FS, 5: FS, A7890: FS",,Task Dependent,Fixed Duration & Units,
A7890,Not Started,Hercules_15082023-6.CONSTRUCTION.Main Works.Level 2.White.252,1,252 Make wall good,20/09/2023 08:00,20/09/2023 17:00,0,46,"A6530, A29370","A6530: FS, A29370: FS","A4720, A30200, 13","A4720: FS, A30200: FF, 13: FS",,Task Dependent,Fixed Duration & Units,
A4720,Not Started,Hercules_15082023-6.CONSTRUCTION.Main Works.Level 2.White.252,0,252 No flooring,21/09/2023 08:00,21/09/2023 08:00,0,214,"A7890, A18160","A7890: FS, A18160: FS",A4730,A4730: FS,,Task Dependent,Fixed Duration & Units,
A4730,Not Started,Hercules_15082023-6.CONSTRUCTION.Main Works.Level 2.White.252,3,252 Electrical adaptation,21/09/2023 08:00,25/09/2023 17:00,104,214,"A4720, A29410","A4720: FS, A29410: FS",A4740,A4740: FS,,Task Dependent,Fixed Duration & Units,
A4740,Not Started,Hercules_15082023-6.CONSTRUCTION.Main Works.Level 2.White.252,1,252 Remove floor protection at end of construction phase,04/03/2024 08:00,04/03/2024 17:00,0,110,"A4730, A18160, A40400","A4730: FS, A18160: FS, A40400: FS","A39790, A1660","A39790: FF, A1660: FF",,Task Dependent,Fixed Duration & Units,
A4670,Not Started,Hercules_15082023-6.CONSTRUCTION.Main Works.Level 2.White.252.1,1,252.1 Floor protection during construction phase,29/08/2023 08:00,29/08/2023 17:00,0,229,"A1040, A18160","A1040: SS, A18160: FS","A4680, A30210","A4680: FS, A30210: FF",,Task Dependent,Fixed Duration & Units,
A4680,Not Started,Hercules_15082023-6.CONSTRUCTION.Main Works.Level 2.White.252.1,4,252.1 Ventilation ducts caising installation with clean wall pannels,14/11/2023 08:00,17/11/2023 17:00,0,175,"A4670, A1520, A19050, A29370","A4670: FS, A1520: FS, A19050: FS, A29370: FS",A4690,A4690: FS,,Task Dependent,Fixed Duration & Units,
A4690,Not Started,Hercules_15082023-6.CONSTRUCTION.Main Works.Level 2.White.252.1,0,252.1 No flooring,20/11/2023 08:00,20/11/2023 08:00,65,175,"A4680, A18160","A4680: FS, A18160: FS",A4700,A4700: FS,,Task Dependent,Fixed Duration & Units,
A4700,Not Started,Hercules_15082023-6.CONSTRUCTION.Main Works.Level 2.White.252.1,1,252.1 Remove floor protection at end of construction phase,04/03/2024 08:00,04/03/2024 17:00,0,110,"A4690, A18160, A40400","A4690: FS, A18160: FS, A40400: FS","A39800, A1660","A39800: FF, A1660: FF",,Task Dependent,Fixed Duration & Units,
A4610,Not Started,Hercules_15082023-6.CONSTRUCTION.Main Works.Level 2.White.257,1,257 Floor protection during construction phase,29/08/2023 08:00,29/08/2023 17:00,0,233,"A1040, A18160","A1040: SS, A18160: FS","A4620, A30220","A4620: FS, A30220: FF",,Task Dependent,Fixed Duration & Units,
A4620,Not Started,Hercules_15082023-6.CONSTRUCTION.Main Works.Level 2.White.257,1,257 Remove floor protection at end of construction phase,04/03/2024 08:00,04/03/2024 17:00,0,110,"A4610, A18160, A40400","A4610: FS, A18160: FS, A40400: FS","A39810, A1660","A39810: FF, A1660: FF",,Task Dependent,Fixed Duration & Units,
A4630,Not Started,Hercules_15082023-6.CONSTRUCTION.Main Works.Level 2.White.258,1,258 Floor protection during construction phase,29/08/2023 08:00,29/08/2023 17:00,0,225,"A1040, A18160","A1040: SS, A18160: FS",A4640,A4640: FS,,Task Dependent,Fixed Duration & Units,
A4640,Not Started,Hercules_15082023-6.CONSTRUCTION.Main Works.Level 2.White.258,5,258 Existing floor to make good with new finish coat localised only,30/08/2023 08:00,05/09/2023 17:00,0,225,"A4630, A18160","A4630: FS, A18160: FS",A4650,A4650: FS,,Task Dependent,Fixed Duration & Units,
A4650,Not Started,Hercules_15082023-6.CONSTRUCTION.Main Works.Level 2.White.258,3,"258 Skirting finish, existing coving resin to make good where required and re-finished",06/09/2023 08:00,08/09/2023 17:00,0,225,A4640,A4640: FS,"A4660, A30230","A4660: FS, A30230: FF",,Task Dependent,Fixed Duration & Units,
A4660,Not Started,Hercules_15082023-6.CONSTRUCTION.Main Works.Level 2.White.258,1,258 Remove floor protection at end of construction phase,04/03/2024 08:00,04/03/2024 17:00,0,110,"A4650, A18160, A40400","A4650: FS, A18160: FS, A40400: FS","A39820, A1660","A39820: FF, A1660: FF",,Task Dependent,Fixed Duration & Units,
A4360,Not Started,Hercules_15082023-6.CONSTRUCTION.Main Works.Level 2.Yellow.231,1,231 Floor protection during construction phase,29/08/2023 08:00,29/08/2023 17:00,0,51,"A1040, A18160","A1040: SS, A18160: FS",A4370,A4370: FS,,Task Dependent,Fixed Duration & Units,
A4370,Not Started,Hercules_15082023-6.CONSTRUCTION.Main Works.Level 2.Yellow.231,2,231 Partial clean wall pannel removal,30/08/2023 08:00,31/08/2023 17:00,0,51,"A4360, A29360, A29370, A18220","A4360: FS, A29360: FS, A29370: FS, A18220: FS","A4380, 13","A4380: FS, 13: FS",,Task Dependent,Fixed Duration & Units,
A4380,Not Started,Hercules_15082023-6.CONSTRUCTION.Main Works.Level 2.Yellow.231,2,231 Floor repair where wall have been removed,01/09/2023 08:00,04/09/2023 17:00,0,51,"A4370, A18160, A29370","A4370: FS, A18160: FS, A29370: FS","A4390, 13","A4390: FS, 13: FS",,Task Dependent,Fixed Duration & Units,
A4390,Not Started,Hercules_15082023-6.CONSTRUCTION.Main Works.Level 2.Yellow.231,5,231 Clean wall pannels installation,05/09/2023 08:00,11/09/2023 17:00,3,51,"A4380, A29360, A29370","A4380: FS, A29360: FS, A29370: FS","A4400, 13","A4400: FS, 13: FS",,Task Dependent,Fixed Duration & Units,
A6380,Not Started,Hercules_15082023-6.CONSTRUCTION.Main Works.Level 2.Yellow.231,1,231 EMS Panel Disinvestment n. 61,07/09/2023 08:00,07/09/2023 17:00,0,41,"A1040, A6710, A18440","A1040: SS, A6710: FS, A18440: FS","A6310, 5, A7870","A6310: FS, 5: FS, A7870: FS",,Task Dependent,Fixed Duration & Units,
A7870,Not Started,Hercules_15082023-6.CONSTRUCTION.Main Works.Level 2.Yellow.231,5,231 Make wall good,08/09/2023 08:00,14/09/2023 17:00,0,48,"A6380, A29370","A6380: FS, A29370: FS","A4400, 13","A4400: FS, 13: FS",,Task Dependent,Fixed Duration & Units,
A4400,Not Started,Hercules_15082023-6.CONSTRUCTION.Main Works.Level 2.Yellow.231,2,231 Ceiling to make good where wall have been removed,15/09/2023 08:00,18/09/2023 17:00,0,48,"A4390, A7870, A29370","A4390: FS, A7870: FS, A29370: FS","A4410, 13","A4410: FS, 13: FS",,Task Dependent,Fixed Duration & Units,
A4410,Not Started,Hercules_15082023-6.CONSTRUCTION.Main Works.Level 2.Yellow.231,2,231 Ventilation adaptation to the new rooms,19/09/2023 08:00,20/09/2023 17:00,0,205,A4400,A4400: FS,A4420,A4420: FS,,Task Dependent,Fixed Duration & Units,
A4420,Not Started,Hercules_15082023-6.CONSTRUCTION.Main Works.Level 2.Yellow.231,2,231 Existing clean pannels to make good where required (Repairs if necessary),21/09/2023 08:00,22/09/2023 17:00,0,205,"A4410, A29360","A4410: FS, A29360: FS",A4430,A4430: FS,,Task Dependent,Fixed Duration & Units,
A4430,Not Started,Hercules_15082023-6.CONSTRUCTION.Main Works.Level 2.Yellow.231,5,231 Existing floor to make good with new finish coat localised only,25/09/2023 08:00,29/09/2023 17:00,0,205,"A4420, A18160","A4420: FS, A18160: FS",A4440,A4440: FS,,Task Dependent,Fixed Duration & Units,
A4440,Not Started,Hercules_15082023-6.CONSTRUCTION.Main Works.Level 2.Yellow.231,3,"231 Skirting finish, existing coving resin to make good where required and re-finished",02/10/2023 08:00,04/10/2023 17:00,0,205,A4430,A4430: FS,"A4450, A30180","A4450: FS, A30180: FF",,Task Dependent,Fixed Duration & Units,
A4450,Not Started,Hercules_15082023-6.CONSTRUCTION.Main Works.Level 2.Yellow.231,2,231 New door installation DR 212 (room 248 -> room 231),05/10/2023 08:00,06/10/2023 17:00,95,205,A4440,A4440: FS,A4460,A4460: FS,,Task Dependent,Fixed Duration & Units,
A4460,Not Started,Hercules_15082023-6.CONSTRUCTION.Main Works.Level 2.Yellow.231,1,231 Remove floor protection at end of construction phase,04/03/2024 08:00,04/03/2024 17:00,0,110,"A4450, A18160, A40400","A4450: FS, A18160: FS, A40400: FS","A39770, A1660","A39770: FF, A1660: FF",,Task Dependent,Fixed Duration & Units,
A3640,Not Started,Hercules_15082023-6.CONSTRUCTION.Main Works.Level 2.Yellow.233,1,233 Room to close during construction phase tbc,29/08/2023 08:00,29/08/2023 17:00,0,234,A1040,A1040: SS,"A40240, A30090, A1660","A40240: FF, A30090: FF, A1660: FF",,Task Dependent,Fixed Duration & Units,
A3330,Not Started,Hercules_15082023-6.CONSTRUCTION.Main Works.Level 2.Yellow.243,1,243 Floor protection during construction phase,29/08/2023 08:00,29/08/2023 17:00,0,55,"A18160, A1040","A18160: FS, A1040: SS","A6790, A3340","A6790: FS, A3340: FS",,Task Dependent,Fixed Duration & Units,
A3340,Not Started,Hercules_15082023-6.CONSTRUCTION.Main Works.Level 2.Yellow.243,2,243 New door installation DR 201 (corridor 261 -> room 243),30/08/2023 08:00,31/08/2023 17:00,0,230,A3330,A3330: FS,"A3350, A1660","A3350: FS, A1660: FF",,Task Dependent,Fixed Duration & Units,
A6790,Not Started,Hercules_15082023-6.CONSTRUCTION.Main Works.Level 2.Yellow.243,1,243 EMS Panel Disinvestment n. 20,01/09/2023 08:00,01/09/2023 17:00,0,53,"A6270, A3330, A18440","A6270: FS, A3330: FS, A18440: FS","5, A6760, A7830","5: FS, A6760: FS, A7830: FS",,Task Dependent,Fixed Duration & Units,
A3350,Not Started,Hercules_15082023-6.CONSTRUCTION.Main Works.Level 2.Yellow.243,2,243 Existing floor to make good with new finish coat localised only,01/09/2023 08:00,04/09/2023 17:00,142,230,"A18160, A3340","A18160: FS, A3340: FS",A1660,A1660: FF,,Task Dependent,Fixed Duration & Units,
A7830,Not Started,Hercules_15082023-6.CONSTRUCTION.Main Works.Level 2.Yellow.243,5,243 Make wall good,04/09/2023 08:00,08/09/2023 17:00,0,54,"A6790, A29370","A6790: FS, A29370: FS","A3360, A30060, 13","A3360: FS, A30060: FF, 13: FS",,Task Dependent,Fixed Duration & Units,
A3360,Not Started,Hercules_15082023-6.CONSTRUCTION.Main Works.Level 2.Yellow.243,1,243 Remove protection at end of construction phase,04/03/2024 08:00,04/03/2024 17:00,0,110,"A7830, A40400","A7830: FS, A40400: FS","A40210, A1660","A40210: FF, A1660: FF",,Task Dependent,Fixed Duration & Units,
A3710,Not Started,Hercules_15082023-6.CONSTRUCTION.Main Works.Level 2.Yellow.246,1,246 Floor protection during construction phase,29/08/2023 08:00,29/08/2023 17:00,0,228,"A18160, A1040","A18160: FS, A1040: SS",A3720,A3720: FS,,Task Dependent,Fixed Duration & Units,
A3720,Not Started,Hercules_15082023-6.CONSTRUCTION.Main Works.Level 2.Yellow.246,5,246 Existing floor to make good with new finish coat localised only,30/08/2023 08:00,05/09/2023 17:00,0,228,"A18160, A3710","A18160: FS, A3710: FS",A3730,A3730: FS,,Task Dependent,Fixed Duration & Units,
A6260,Not Started,Hercules_15082023-6.CONSTRUCTION.Main Works.Level 2.Yellow.246,1,246 EMS Panel Disinvestment n. 34,01/09/2023 08:00,01/09/2023 17:00,0,41,"A1040, A6270, A18440","A1040: SS, A6270: FS, A18440: FS","A6250, 5, A7850","A6250: FS, 5: FS, A7850: FS",,Task Dependent,Fixed Duration & Units,
A7850,Not Started,Hercules_15082023-6.CONSTRUCTION.Main Works.Level 2.Yellow.246,5,246 Make wall good,04/09/2023 08:00,08/09/2023 17:00,0,54,"A6260, A29370","A6260: FS, A29370: FS","A40270, A30120, 13","A40270: FF, A30120: FF, 13: FS",,Task Dependent,Fixed Duration & Units,
A3730,Not Started,Hercules_15082023-6.CONSTRUCTION.Main Works.Level 2.Yellow.246,1,246 Remove floor protection at end of construction phase,06/09/2023 08:00,06/09/2023 17:00,140,228,"A18160, A3720","A18160: FS, A3720: FS",A1660,A1660: FF,,Task Dependent,Fixed Duration & Units,
A3650,Not Started,Hercules_15082023-6.CONSTRUCTION.Main Works.Level 2.Yellow.247,1,247 Floor protection during construction phase,29/08/2023 08:00,29/08/2023 17:00,0,41,"A18160, A1040","A18160: FS, A1040: SS","A3660, A40390","A3660: FS, A40390: FS",,Task Dependent,Fixed Duration & Units,
A40390,Not Started,Hercules_15082023-6.CONSTRUCTION.Main Works.Level 2.Yellow.247,1,247 Filling Line protection during construction phase,30/08/2023 08:00,30/08/2023 17:00,0,41,A3650,A3650: FS,A6270,A6270: FS,,Task Dependent,Fixed Duration & Units,
A6270,Not Started,Hercules_15082023-6.CONSTRUCTION.Main Works.Level 2.Yellow.247,1,247 EMS Panel Disinvestment n. 22,31/08/2023 08:00,31/08/2023 17:00,0,41,"A1040, A18440, A40390","A1040: SS, A18440: FS, A40390: FS","A6260, 5, A6790, A3660, A3670, A5220","A6260: FS, 5: FS, A6790: FS, A3660: FS, A3670: FS, A5220: FS",,Task Dependent,Fixed Duration & Units,
A5220,Not Started,Hercules_15082023-6.CONSTRUCTION.Main Works.Level 2.Yellow.247,5,247 Make wall good,01/09/2023 08:00,07/09/2023 17:00,0,55,"A6270, A29370","A6270: FS, A29370: FS","A3660, A3670, A30110, 9, 13","A3660: FS, A3670: FS, A30110: FF, 9: FS, 13: FS",,Task Dependent,Fixed Duration & Units,
A3660,Not Started,Hercules_15082023-6.CONSTRUCTION.Main Works.Level 2.Yellow.247,2,247 New door installation DR 210 (room 245 -> room 247),08/09/2023 08:00,11/09/2023 17:00,0,221,"A6270, A5220, A3650","A6270: FS, A5220: FS, A3650: FS",A3670,A3670: FS,,Task Dependent,Fixed Duration & Units,
A3670,Not Started,Hercules_15082023-6.CONSTRUCTION.Main Works.Level 2.Yellow.247,2,247 New door installation DR 219  (room 246 -> room 247),12/09/2023 08:00,13/09/2023 17:00,0,221,"A6270, A5220, A3660","A6270: FS, A5220: FS, A3660: FS",A3680,A3680: FS,,Task Dependent,Fixed Duration & Units,
A3680,Not Started,Hercules_15082023-6.CONSTRUCTION.Main Works.Level 2.Yellow.247,1,247 Furniture tbc,14/09/2023 08:00,14/09/2023 17:00,0,221,A3670,A3670: FS,A3690,A3690: FS,,Task Dependent,Fixed Duration & Units,
A3690,Not Started,Hercules_15082023-6.CONSTRUCTION.Main Works.Level 2.Yellow.247,0,247 No flooring planned,15/09/2023 08:00,15/09/2023 08:00,0,221,"A18160, A3680","A18160: FS, A3680: FS",A3700,A3700: FS,,Task Dependent,Fixed Duration & Units,
A3700,Not Started,Hercules_15082023-6.CONSTRUCTION.Main Works.Level 2.Yellow.247,1,247 Remove floor protection at end of construction phase,15/09/2023 08:00,15/09/2023 17:00,0,221,"A18160, A3690","A18160: FS, A3690: FS","A40260, A1660","A40260: FF, A1660: FF",,Task Dependent,Fixed Duration & Units,
A3820,Not Started,Hercules_15082023-6.CONSTRUCTION.Main Works.Level 2.Yellow.248,1,248 Floor protection during construction phase,29/08/2023 08:00,29/08/2023 17:00,13,58,"A1040, A18160","A1040: SS, A18160: FS",A3830,A3830: FS,,Task Dependent,Fixed Duration & Units,
A6700,Not Started,Hercules_15082023-6.CONSTRUCTION.Main Works.Level 2.Yellow.248,1,248 EMS Panel Disinvestment n. 23,05/09/2023 08:00,05/09/2023 17:00,0,41,"A1040, A6250, A18440","A1040: SS, A6250: FS, A18440: FS","A6710, 5","A6710: FS, 5: FS",,Task Dependent,Fixed Duration & Units,
A6710,Not Started,Hercules_15082023-6.CONSTRUCTION.Main Works.Level 2.Yellow.248,1,248 EMS Panel Disinvestment n. 52,06/09/2023 08:00,06/09/2023 17:00,0,41,"A1040, A6700, A18440","A1040: SS, A6700: FS, A18440: FS","A6380, 5, A7860, A5010","A6380: FS, 5: FS, A7860: FS, A5010: FS",,Task Dependent,Fixed Duration & Units,
A5010,Not Started,Hercules_15082023-6.CONSTRUCTION.Main Works.Level 2.Yellow.248,2,248 Installation LAF,07/09/2023 08:00,08/09/2023 17:00,0,45,A6710,A6710: FS,A7860,A7860: FS,,Task Dependent,Fixed Duration & Units,
A7860,Not Started,Hercules_15082023-6.CONSTRUCTION.Main Works.Level 2.Yellow.248,5,248 Make wall good,11/09/2023 08:00,15/09/2023 17:00,0,45,"A6710, A29370, A5010","A6710: FS, A29370: FS, A5010: FS","A3830, A30140, 13","A3830: FS, A30140: FF, 13: FS",,Task Dependent,Fixed Duration & Units,
A3830,Not Started,Hercules_15082023-6.CONSTRUCTION.Main Works.Level 2.Yellow.248,4,248 Wall adaptation (following new room partition),18/09/2023 08:00,21/09/2023 17:00,0,45,"A7860, A3820, A29370","A7860: FS, A3820: FS, A29370: FS","A3840, 13","A3840: FS, 13: FS",,Task Dependent,Fixed Duration & Units,
A3840,Not Started,Hercules_15082023-6.CONSTRUCTION.Main Works.Level 2.Yellow.248,2,248 New door installation DR 213 (room 267->room 248),22/09/2023 08:00,25/09/2023 17:00,0,196,A3830,A3830: FS,A3850,A3850: FS,,Task Dependent,Fixed Duration & Units,
A3850,Not Started,Hercules_15082023-6.CONSTRUCTION.Main Works.Level 2.Yellow.248,5,248 Existing floor to make good with new finish coat localised only,26/09/2023 08:00,02/10/2023 17:00,0,196,"A3840, A18160","A3840: FS, A18160: FS",A3860,A3860: FS,,Task Dependent,Fixed Duration & Units,
A3860,Not Started,Hercules_15082023-6.CONSTRUCTION.Main Works.Level 2.Yellow.248,3,"248 skirting finish, existing coving resin to make good where required and re-finished",03/10/2023 08:00,05/10/2023 17:00,0,196,A3850,A3850: FS,A3870,A3870: FS,,Task Dependent,Fixed Duration & Units,
A3870,Not Started,Hercules_15082023-6.CONSTRUCTION.Main Works.Level 2.Yellow.248,2,248 Existing clean pannels to make good where required (Repairs if necessary),06/10/2023 08:00,09/10/2023 17:00,0,196,"A3860, A29360","A3860: FS, A29360: FS",A3880,A3880: FS,,Task Dependent,Fixed Duration & Units,
A3880,Not Started,Hercules_15082023-6.CONSTRUCTION.Main Works.Level 2.Yellow.248,3,248 Electrical adaptation,10/10/2023 08:00,12/10/2023 17:00,0,196,"A3870, A29410","A3870: FS, A29410: FS",A3890,A3890: FS,,Task Dependent,Fixed Duration & Units,
A3890,Not Started,Hercules_15082023-6.CONSTRUCTION.Main Works.Level 2.Yellow.248,5,248 Existing floor to make good with new finish coat localised only,13/10/2023 08:00,19/10/2023 17:00,86,196,"A3880, A18160","A3880: FS, A18160: FS",A3900,A3900: FS,,Task Dependent,Fixed Duration & Units,
A3900,Not Started,Hercules_15082023-6.CONSTRUCTION.Main Works.Level 2.Yellow.248,1,248 Remove floor protection at end of construction phase,04/03/2024 08:00,04/03/2024 17:00,0,110,"A3890, A18160, A40400","A3890: FS, A18160: FS, A40400: FS","A39730, A1660","A39730: FF, A1660: FF",,Task Dependent,Fixed Duration & Units,
A3740,Not Started,Hercules_15082023-6.CONSTRUCTION.Main Works.Level 2.Yellow.249,1,249 Floor and equipment protection during construction phase,29/08/2023 08:00,29/08/2023 17:00,0,53,"A18160, A1040","A18160: FS, A1040: SS",A3750,A3750: FS,,Task Dependent,Fixed Duration & Units,
A3750,Not Started,Hercules_15082023-6.CONSTRUCTION.Main Works.Level 2.Yellow.249,1,249 Removing door and wall,30/08/2023 08:00,30/08/2023 17:00,0,53,A3740,A3740: FS,"A30130, A3760","A30130: FF, A3760: FS",,Task Dependent,Fixed Duration & Units,
A3760,Not Started,Hercules_15082023-6.CONSTRUCTION.Main Works.Level 2.Yellow.249,2,249 New door installation DR 220  (room 248 -> room 249),31/08/2023 08:00,01/09/2023 17:00,0,53,A3750,A3750: FS,A3770,A3770: FS,,Task Dependent,Fixed Duration & Units,
A6250,Not Started,Hercules_15082023-6.CONSTRUCTION.Main Works.Level 2.Yellow.249,1,249 EMS Panel Disinvestment n. 24,04/09/2023 08:00,04/09/2023 17:00,0,41,"A1040, A6260, A18440","A1040: SS, A6260: FS, A18440: FS","A6700, 5","A6700: FS, 5: FS",,Task Dependent,Fixed Duration & Units,
A3770,Not Started,Hercules_15082023-6.CONSTRUCTION.Main Works.Level 2.Yellow.249,2,249 New door installation DR 218 (room 246 -> room 249),04/09/2023 08:00,05/09/2023 17:00,14,53,A3760,A3760: FS,A3780,A3780: FS,,Task Dependent,Fixed Duration & Units,
A3780,Not Started,Hercules_15082023-6.CONSTRUCTION.Main Works.Level 2.Yellow.249,4,249 Creation new boxing out for ducts with clean wall pannels,26/09/2023 08:00,29/09/2023 17:00,0,39,"A3770, A19050, A29360, A29370","A3770: FS, A19050: FS, A29360: FS, A29370: FS","A3790, 13","A3790: FS, 13: FS",,Task Dependent,Fixed Duration & Units,
A3790,Not Started,Hercules_15082023-6.CONSTRUCTION.Main Works.Level 2.Yellow.249,5,249 Existing floor to make good with new finish coat localised only,02/10/2023 08:00,06/10/2023 17:00,0,202,"A3780, A18160","A3780: FS, A18160: FS",A3800,A3800: FS,,Task Dependent,Fixed Duration & Units,
A3800,Not Started,Hercules_15082023-6.CONSTRUCTION.Main Works.Level 2.Yellow.249,3,"249 Skirting finish, existing coving resin to make good where required and re-finished",09/10/2023 08:00,11/10/2023 17:00,92,202,A3790,A3790: FS,A3810,A3810: FS,,Task Dependent,Fixed Duration & Units,
A3810,Not Started,Hercules_15082023-6.CONSTRUCTION.Main Works.Level 2.Yellow.249,1,249 Remove floor protection at end of construction phase,04/03/2024 08:00,04/03/2024 17:00,0,110,"A3800, A18160, A40400","A3800: FS, A18160: FS, A40400: FS","A40280, A1660","A40280: FF, A1660: FF",,Task Dependent,Fixed Duration & Units,
A3480,Not Started,Hercules_15082023-6.CONSTRUCTION.Main Works.Level 2.Yellow.259/2591/260/253/245,10,259 / 259.1 / 260 / 253 / 245 / 244 Clean wall pannels removal,29/08/2023 08:00,11/09/2023 17:00,0,25,"A1040, A29360, A29370","A1040: SS, A29360: FS, A29370: FS","A3490, 13","A3490: FS, 13: FS",,Task Dependent,Fixed Duration & Units,
A3490,Not Started,Hercules_15082023-6.CONSTRUCTION.Main Works.Level 2.Yellow.259/2591/260/253/245,2,259 / 259.1 / 260 / 253 / 245 / 244 Floor repair where wall have been removed,12/09/2023 08:00,13/09/2023 17:00,0,25,"A18160, A3480, A29370","A18160: FS, A3480: FS, A29370: FS","A3500, 13","A3500: FS, 13: FS",,Task Dependent,Fixed Duration & Units,
A3500,Not Started,Hercules_15082023-6.CONSTRUCTION.Main Works.Level 2.Yellow.259/2591/260/253/245,15,259 / 259.1 / 260 / 253 / 245 / 244 Clean wall pannels installation rooms creation,14/09/2023 08:00,04/10/2023 17:00,0,25,"A3490, A29360, A29370","A3490: FS, A29360: FS, A29370: FS","A3510, 13","A3510: FS, 13: FS",,Task Dependent,Fixed Duration & Units,
A3510,Not Started,Hercules_15082023-6.CONSTRUCTION.Main Works.Level 2.Yellow.259/2591/260/253/245,5,259 / 259.1 / 260 / 253 / 245 / 244 Existing floor to make good with new finish coat localised only,05/10/2023 08:00,11/10/2023 17:00,0,25,"A18160, A3500","A18160: FS, A3500: FS",A3520,A3520: FS,,Task Dependent,Fixed Duration & Units,
A3520,Not Started,Hercules_15082023-6.CONSTRUCTION.Main Works.Level 2.Yellow.259/2591/260/253/245,3,"259 / 259.1 / 260 / 253 / 245 / 244 skirting finish, existing coving resin to make good where required and re-finished",12/10/2023 08:00,16/10/2023 17:00,0,25,A3510,A3510: FS,A3530,A3530: FS,,Task Dependent,Fixed Duration & Units,
A3530,Not Started,Hercules_15082023-6.CONSTRUCTION.Main Works.Level 2.Yellow.259/2591/260/253/245,1,259 / 259.1 / 260 / 253 / 245 / 244 Floor protection during construction phase,17/10/2023 08:00,17/10/2023 17:00,0,25,"A18160, A3520","A18160: FS, A3520: FS",A3540,A3540: FS,,Task Dependent,Fixed Duration & Units,
A3540,Not Started,Hercules_15082023-6.CONSTRUCTION.Main Works.Level 2.Yellow.259/2591/260/253/245,2,259 / 259.1 / 260 / 253 / 245 / 244 Ceiling to make good where wall have been removed,18/10/2023 08:00,19/10/2023 17:00,0,25,"A3530, A29370","A3530: FS, A29370: FS","A30080, A3550, 13","A30080: FF, A3550: FS, 13: FS",,Task Dependent,Fixed Duration & Units,
A3550,Not Started,Hercules_15082023-6.CONSTRUCTION.Main Works.Level 2.Yellow.259/2591/260/253/245,2,259 / 259.1 / 260 / 253 / 245 / 244 New door installation DR 203 (room 259 -> room 259.1),20/10/2023 08:00,23/10/2023 17:00,0,171,A3540,A3540: FS,A3560,A3560: FS,,Task Dependent,Fixed Duration & Units,
A3560,Not Started,Hercules_15082023-6.CONSTRUCTION.Main Works.Level 2.Yellow.259/2591/260/253/245,2,259 / 259.1 / 260 / 253 / 245 / 244 New door installation DR 216 (room 259 -> corridor 252),24/10/2023 08:00,25/10/2023 17:00,0,171,A3550,A3550: FS,A3570,A3570: FS,,Task Dependent,Fixed Duration & Units,
A3570,Not Started,Hercules_15082023-6.CONSTRUCTION.Main Works.Level 2.Yellow.259/2591/260/253/245,2,259 / 259.1 / 260 / 253 / 245 / 244 New door installation DR 215 (room 253 -> corridor 252),26/10/2023 08:00,27/10/2023 17:00,0,171,A3560,A3560: FS,A3580,A3580: FS,,Task Dependent,Fixed Duration & Units,
A3580,Not Started,Hercules_15082023-6.CONSTRUCTION.Main Works.Level 2.Yellow.259/2591/260/253/245,4,259 / 259.1 / 260 / 253 / 245 / 244 New rolling door installation DR 206 (room 253 -> corridor 260),30/10/2023 08:00,02/11/2023 17:00,0,171,A3570,A3570: FS,A3590,A3590: FS,,Task Dependent,Fixed Duration & Units,
A3590,Not Started,Hercules_15082023-6.CONSTRUCTION.Main Works.Level 2.Yellow.259/2591/260/253/245,2,259 / 259.1 / 260 / 253 / 245 / 244 New door installation DR 207 (room 260 -> room 245),03/11/2023 08:00,06/11/2023 17:00,0,171,A3580,A3580: FS,A3600,A3600: FS,,Task Dependent,Fixed Duration & Units,
A3600,Not Started,Hercules_15082023-6.CONSTRUCTION.Main Works.Level 2.Yellow.259/2591/260/253/245,2,259 / 259.1 / 260 / 253 / 245 / 244 Plumbing and ventilation adaptation to the new rooms function,07/11/2023 08:00,08/11/2023 17:00,0,171,A3590,A3590: FS,A3610,A3610: FS,,Task Dependent,Fixed Duration & Units,
A3610,Not Started,Hercules_15082023-6.CONSTRUCTION.Main Works.Level 2.Yellow.259/2591/260/253/245,10,259 / 259.1 / 260 / 253 / 245 / 244 Electrical adaptation,09/11/2023 08:00,22/11/2023 17:00,0,171,"A3600, A29410","A3600: FS, A29410: FS",A3620,A3620: FS,,Task Dependent,Fixed Duration & Units,
A3620,Not Started,Hercules_15082023-6.CONSTRUCTION.Main Works.Level 2.Yellow.259/2591/260/253/245,1,259 / 259.1 / 260 / 253 / 245 / 244 Furniture installation,23/11/2023 08:00,23/11/2023 17:00,0,171,A3610,A3610: FS,A3630,A3630: FS,,Task Dependent,Fixed Duration & Units,
A3630,Not Started,Hercules_15082023-6.CONSTRUCTION.Main Works.Level 2.Yellow.259/2591/260/253/245,1,259 / 259.1 / 260 / 253 / 245 / 244 Remove floor protection at end of construction phase,24/11/2023 08:00,24/11/2023 17:00,0,171,"A18160, A3620","A18160: FS, A3620: FS","A40230, A1660, A40250","A40230: FF, A1660: FF, A40250: FF",,Task Dependent,Fixed Duration & Units,
A4470,Not Started,Hercules_15082023-6.CONSTRUCTION.Main Works.Level 2.Yellow.261,1,261 Floor protection during construction phase,29/08/2023 08:00,29/08/2023 17:00,15,212,"A1040, A18160","A1040: SS, A18160: FS",A4480,A4480: FS,,Task Dependent,Fixed Duration & Units,
A6310,Not Started,Hercules_15082023-6.CONSTRUCTION.Main Works.Level 2.Yellow.261,1,261 EMS Panel Disinvestment n. 37,08/09/2023 08:00,08/09/2023 17:00,0,41,"A1040, A6380, A18440","A1040: SS, A6380: FS, A18440: FS","A6320, 5","A6320: FS, 5: FS",,Task Dependent,Fixed Duration & Units,
A6320,Not Started,Hercules_15082023-6.CONSTRUCTION.Main Works.Level 2.Yellow.261,1,261 EMS Panel Disinvestment n. 38,11/09/2023 08:00,11/09/2023 17:00,0,41,"A1040, A6310, A18440","A1040: SS, A6310: FS, A18440: FS","A6330, 5","A6330: FS, 5: FS",,Task Dependent,Fixed Duration & Units,
A6330,Not Started,Hercules_15082023-6.CONSTRUCTION.Main Works.Level 2.Yellow.261,1,261 EMS Panel Disinvestment n. 36,12/09/2023 08:00,12/09/2023 17:00,0,41,"A1040, A6320, A18440","A1040: SS, A6320: FS, A18440: FS","A6280, 5, A7880","A6280: FS, 5: FS, A7880: FS",,Task Dependent,Fixed Duration & Units,
A7880,Not Started,Hercules_15082023-6.CONSTRUCTION.Main Works.Level 2.Yellow.261,5,261 Make wall good,13/09/2023 08:00,19/09/2023 17:00,0,47,"A6330, A29370","A6330: FS, A29370: FS","A4480, A30190, 13","A4480: FS, A30190: FF, 13: FS",,Task Dependent,Fixed Duration & Units,
A4480,Not Started,Hercules_15082023-6.CONSTRUCTION.Main Works.Level 2.Yellow.261,2,261 New door installation DR 204  (room 259.1 -> corridor 261),20/09/2023 08:00,21/09/2023 17:00,0,197,"A4470, A7880","A4470: FS, A7880: FS",A4490,A4490: FS,,Task Dependent,Fixed Duration & Units,
A4490,Not Started,Hercules_15082023-6.CONSTRUCTION.Main Works.Level 2.Yellow.261,2,261 New door installation DR 205  (room 260 -> corridor 261),22/09/2023 08:00,25/09/2023 17:00,0,197,A4480,A4480: FS,A4500,A4500: FS,,Task Dependent,Fixed Duration & Units,
A4500,Not Started,Hercules_15082023-6.CONSTRUCTION.Main Works.Level 2.Yellow.261,2,261 New door installation DR 211 (room 261.1 -> corridor 261),26/09/2023 08:00,27/09/2023 17:00,0,197,A4490,A4490: FS,A4510,A4510: FS,,Task Dependent,Fixed Duration & Units,
A4510,Not Started,Hercules_15082023-6.CONSTRUCTION.Main Works.Level 2.Yellow.261,2,261 New door installation DR 208 (room 245 -> corridor 261),28/09/2023 08:00,29/09/2023 17:00,0,197,A4500,A4500: FS,A4520,A4520: FS,,Task Dependent,Fixed Duration & Units,
A4520,Not Started,Hercules_15082023-6.CONSTRUCTION.Main Works.Level 2.Yellow.261,2,261 New door installation DR 214 (room 248 -> corridor 261),02/10/2023 08:00,03/10/2023 17:00,0,197,A4510,A4510: FS,A4530,A4530: FS,,Task Dependent,Fixed Duration & Units,
A4530,Not Started,Hercules_15082023-6.CONSTRUCTION.Main Works.Level 2.Yellow.261,2,261 New door installation DR 230 (room 268 -> corridor 261),04/10/2023 08:00,05/10/2023 17:00,0,197,A4520,A4520: FS,A4540,A4540: FS,,Task Dependent,Fixed Duration & Units,
A4540,Not Started,Hercules_15082023-6.CONSTRUCTION.Main Works.Level 2.Yellow.261,1,"261 Existing door EX 202 (room 236 -> corridor 261) to be permanently closed, locked and sealed",06/10/2023 08:00,06/10/2023 17:00,0,197,A4530,A4530: FS,A4550,A4550: FS,,Task Dependent,Fixed Duration & Units,
A4550,Not Started,Hercules_15082023-6.CONSTRUCTION.Main Works.Level 2.Yellow.261,0,261 No flooring planned,09/10/2023 08:00,09/10/2023 08:00,0,197,"A4540, A18160","A4540: FS, A18160: FS",A4560,A4560: FS,,Task Dependent,Fixed Duration & Units,
A4560,Not Started,Hercules_15082023-6.CONSTRUCTION.Main Works.Level 2.Yellow.261,3,261 Electrical adaptation,09/10/2023 08:00,11/10/2023 17:00,0,197,"A4550, A29410","A4550: FS, A29410: FS",A4570,A4570: FS,,Task Dependent,Fixed Duration & Units,
A4570,Not Started,Hercules_15082023-6.CONSTRUCTION.Main Works.Level 2.Yellow.261,2,261 Ventilation adaptation,12/10/2023 08:00,13/10/2023 17:00,0,197,A4560,A4560: FS,A4580,A4580: FS,,Task Dependent,Fixed Duration & Units,
A4580,Not Started,Hercules_15082023-6.CONSTRUCTION.Main Works.Level 2.Yellow.261,2,261 Ceiling adaptation,16/10/2023 08:00,17/10/2023 17:00,0,197,A4570,A4570: FS,A4590,A4590: FS,,Task Dependent,Fixed Duration & Units,
A4590,Not Started,Hercules_15082023-6.CONSTRUCTION.Main Works.Level 2.Yellow.261,1,261 Furniture installation,18/10/2023 08:00,18/10/2023 17:00,87,197,A4580,A4580: FS,A4600,A4600: FS,,Task Dependent,Fixed Duration & Units,
A4600,Not Started,Hercules_15082023-6.CONSTRUCTION.Main Works.Level 2.Yellow.261,1,261 Remove floor protection at end of construction phase,04/03/2024 08:00,04/03/2024 17:00,0,110,"A4590, A18160, A40400","A4590: FS, A18160: FS, A40400: FS","A39780, A1660","A39780: FF, A1660: FF",,Task Dependent,Fixed Duration & Units,
A4260,Not Started,Hercules_15082023-6.CONSTRUCTION.Main Works.Level 2.Yellow.261.1,1,261.1 Floor protection during construction phase,29/08/2023 08:00,29/08/2023 17:00,0,43,"A1040, A18160","A1040: SS, A18160: FS",A4270,A4270: FS,,Task Dependent,Fixed Duration & Units,
A4270,Not Started,Hercules_15082023-6.CONSTRUCTION.Main Works.Level 2.Yellow.261.1,2,261.1 Partial clean wall pannel removal,30/08/2023 08:00,31/08/2023 17:00,0,43,"A4260, A29360, A29370, A18220","A4260: FS, A29360: FS, A29370: FS, A18220: FS","A4280, 13","A4280: FS, 13: FS",,Task Dependent,Fixed Duration & Units,
A4280,Not Started,Hercules_15082023-6.CONSTRUCTION.Main Works.Level 2.Yellow.261.1,2,261.1 Floor repair where wall have been removed,01/09/2023 08:00,04/09/2023 17:00,0,43,"A4270, A18160, A29370","A4270: FS, A18160: FS, A29370: FS","A4290, 13","A4290: FS, 13: FS",,Task Dependent,Fixed Duration & Units,
A4290,Not Started,Hercules_15082023-6.CONSTRUCTION.Main Works.Level 2.Yellow.261.1,5,261.1 Clean wall pannels installation room creation,05/09/2023 08:00,11/09/2023 17:00,0,43,"A4280, A29360, A29370","A4280: FS, A29360: FS, A29370: FS","A4300, 13","A4300: FS, 13: FS",,Task Dependent,Fixed Duration & Units,
A4300,Not Started,Hercules_15082023-6.CONSTRUCTION.Main Works.Level 2.Yellow.261.1,5,261.1 Existing floor to make good with new finish coat localised only,12/09/2023 08:00,18/09/2023 17:00,0,43,"A4290, A18160","A4290: FS, A18160: FS",A4310,A4310: FS,,Task Dependent,Fixed Duration & Units,
A4310,Not Started,Hercules_15082023-6.CONSTRUCTION.Main Works.Level 2.Yellow.261.1,3,"261.1 Skirting finish, existing coving resin to make good where required and re-finished",19/09/2023 08:00,21/09/2023 17:00,0,43,A4300,A4300: FS,A4320,A4320: FS,,Task Dependent,Fixed Duration & Units,
A4320,Not Started,Hercules_15082023-6.CONSTRUCTION.Main Works.Level 2.Yellow.261.1,2,261.1 Ceiling to make good where wall have been removed,22/09/2023 08:00,25/09/2023 17:00,0,43,"A4310, A29370","A4310: FS, A29370: FS","A4330, A30170, 13","A4330: FS, A30170: FF, 13: FS",,Task Dependent,Fixed Duration & Units,
A4330,Not Started,Hercules_15082023-6.CONSTRUCTION.Main Works.Level 2.Yellow.261.1,2,261.1 Plumbing and ventilation adaptation to the new rooms,26/09/2023 08:00,27/09/2023 17:00,0,210,A4320,A4320: FS,A4340,A4340: FS,,Task Dependent,Fixed Duration & Units,
A4340,Not Started,Hercules_15082023-6.CONSTRUCTION.Main Works.Level 2.Yellow.261.1,2,261.1 Electrical adaptation,28/09/2023 08:00,29/09/2023 17:00,100,210,"A4330, A29410","A4330: FS, A29410: FS",A4350,A4350: FS,,Task Dependent,Fixed Duration & Units,
A4350,Not Started,Hercules_15082023-6.CONSTRUCTION.Main Works.Level 2.Yellow.261.1,1,261.1 Remove floor protection at end of construction phase,04/03/2024 08:00,04/03/2024 17:00,0,110,"A4340, A18160, A40400","A4340: FS, A18160: FS, A40400: FS","A39760, A1660","A39760: FF, A1660: FF",,Task Dependent,Fixed Duration & Units,
A3910,Not Started,Hercules_15082023-6.CONSTRUCTION.Main Works.Level 2.Yellow.262/268,2,"262 / 268 Partial clean wall pannel removal, including door",29/08/2023 08:00,30/08/2023 17:00,0,38,"A1040, A29360, A29370, A18220","A1040: SS, A29360: FS, A29370: FS, A18220: FS","A3920, 13","A3920: FS, 13: FS",,Task Dependent,Fixed Duration & Units,
A3920,Not Started,Hercules_15082023-6.CONSTRUCTION.Main Works.Level 2.Yellow.262/268,2,262 / 268 Floor repair where wall have been removed,31/08/2023 08:00,01/09/2023 17:00,0,38,"A3910, A18160, A29370","A3910: FS, A18160: FS, A29370: FS","A3930, 13","A3930: FS, 13: FS",,Task Dependent,Fixed Duration & Units,
A3930,Not Started,Hercules_15082023-6.CONSTRUCTION.Main Works.Level 2.Yellow.262/268,4,262 / 268 Clean wall pannels installation room creation,04/09/2023 08:00,07/09/2023 17:00,0,38,"A3920, A29360, A29370","A3920: FS, A29360: FS, A29370: FS","A3940, 13","A3940: FS, 13: FS",,Task Dependent,Fixed Duration & Units,
A3940,Not Started,Hercules_15082023-6.CONSTRUCTION.Main Works.Level 2.Yellow.262/268,5,262 / 268 Existing floor to make good with new finish coat localised only,08/09/2023 08:00,14/09/2023 17:00,0,38,"A3930, A18160","A3930: FS, A18160: FS",A3950,A3950: FS,,Task Dependent,Fixed Duration & Units,
A3950,Not Started,Hercules_15082023-6.CONSTRUCTION.Main Works.Level 2.Yellow.262/268,3,"262 / 268 Skirting finish, existing coving resin to make good where required and re-finished",15/09/2023 08:00,19/09/2023 17:00,0,38,A3940,A3940: FS,A3960,A3960: FS,,Task Dependent,Fixed Duration & Units,
A3960,Not Started,Hercules_15082023-6.CONSTRUCTION.Main Works.Level 2.Yellow.262/268,1,262 / 268 Floor protection during construction phase,20/09/2023 08:00,20/09/2023 17:00,0,38,"A3950, A18160","A3950: FS, A18160: FS","A3970, A30150","A3970: FS, A30150: FF",,Task Dependent,Fixed Duration & Units,
A3970,Not Started,Hercules_15082023-6.CONSTRUCTION.Main Works.Level 2.Yellow.262/268,4,262 / 268 New rolling door installation DR 217 (room 248 -> room 262),21/09/2023 08:00,26/09/2023 17:00,0,38,A3960,A3960: FS,A3980,A3980: FS,,Task Dependent,Fixed Duration & Units,
A3980,Not Started,Hercules_15082023-6.CONSTRUCTION.Main Works.Level 2.Yellow.262/268,2,262 / 268 Existing clean pannels to make good where required (Repairs if necessary),27/09/2023 08:00,28/09/2023 17:00,0,38,"A3970, A29360","A3970: FS, A29360: FS",A3990,A3990: FS,,Task Dependent,Fixed Duration & Units,
A3990,Not Started,Hercules_15082023-6.CONSTRUCTION.Main Works.Level 2.Yellow.262/268,2,262 / 268 Ceiling to make good where wall have been removed,29/09/2023 08:00,02/10/2023 17:00,0,38,"A3980, A29370","A3980: FS, A29370: FS","A4000, A5050, 13","A4000: FS, A5050: FS, 13: FS",,Task Dependent,Fixed Duration & Units,
A5050,Not Started,Hercules_15082023-6.CONSTRUCTION.Main Works.Level 2.Yellow.262/268,1,262 / 268 LOTO and perform E&I dead testing,03/10/2023 08:00,03/10/2023 17:00,0,49,A3990,A3990: FS,A34090,A34090: FS,,Task Dependent,Fixed Duration & Units,
A34090,Not Started,Hercules_15082023-6.CONSTRUCTION.Main Works.Level 2.Yellow.262/268,2,262 / 268 Remove associated E&I Cabling,04/10/2023 08:00,05/10/2023 17:00,0,49,A5050,A5050: FS,A34100,A34100: FS,,Task Dependent,Fixed Duration & Units,
A34100,Not Started,Hercules_15082023-6.CONSTRUCTION.Main Works.Level 2.Yellow.262/268,1,"262 / 268 Isolate and draindown pipework  (AP, WFI, WT.K, LS,  245.05 EA,  WAI, DK)",06/10/2023 08:00,06/10/2023 17:00,0,49,A34090,A34090: FS,A34110,A34110: FS,,Task Dependent,Fixed Duration & Units,
A34110,Not Started,Hercules_15082023-6.CONSTRUCTION.Main Works.Level 2.Yellow.262/268,5,262 / 268 Disconnect pipework,09/10/2023 08:00,13/10/2023 17:00,0,49,A34100,A34100: FS,A34120,A34120: FS,,Task Dependent,Fixed Duration & Units,
A34120,Not Started,Hercules_15082023-6.CONSTRUCTION.Main Works.Level 2.Yellow.262/268,2,262 / 268 Removal of Parts Washer / Autoclave,16/10/2023 08:00,17/10/2023 17:00,5,49,A34110,A34110: FS,A4000,A4000: FS,,Task Dependent,Fixed Duration & Units,
A4000,Not Started,Hercules_15082023-6.CONSTRUCTION.Main Works.Level 2.Yellow.262/268,3,262 / 268 Installation of Parts Washer / Autoclave,24/10/2023 16:00,27/10/2023 16:00,0,44,"A3990, A34120, A4880, A4890","A3990: FS, A34120: FS, A4880: FS, A4890: FS","A4010, A30900","A4010: FS, A30900: FF",Start On or After,Task Dependent,Fixed Duration & Units,
A4010,Not Started,Hercules_15082023-6.CONSTRUCTION.Main Works.Level 2.Yellow.262/268,8,"262 / 268 Pipework Hookups  (AP, WFI, WT.K, LS,  245.05 EA,  WAI, DK)",27/10/2023 16:00,08/11/2023 16:00,0,44,"A4000, A19060","A4000: FS, A19060: FS","A4020, A30900","A4020: FS, A30900: FF",,Task Dependent,Fixed Duration & Units,
A4020,Not Started,Hercules_15082023-6.CONSTRUCTION.Main Works.Level 2.Yellow.262/268,4,262 / 268 E&I hookups,08/11/2023 16:00,14/11/2023 16:00,0,44,"A4010, A29410","A4010: FS, A29410: FS","A4030, A30900","A4030: FS, A30900: FF",,Task Dependent,Fixed Duration & Units,
A4030,Not Started,Hercules_15082023-6.CONSTRUCTION.Main Works.Level 2.Yellow.262/268,2,262 / 268 E&I dead test verification,14/11/2023 16:00,16/11/2023 16:00,0,44,A4020,A4020: FS,A4040,A4040: FS,,Task Dependent,Fixed Duration & Units,
A4040,Not Started,Hercules_15082023-6.CONSTRUCTION.Main Works.Level 2.Yellow.262/268,4,262 / 268 Pipework/valve reinstatement & verification,16/11/2023 16:00,22/11/2023 16:00,0,44,"A4030, A29410, A19060","A4030: FS, A29410: FS, A19060: FS","A4050, A5150","A4050: FS, A5150: FS",,Task Dependent,Fixed Duration & Units,
A5150,Not Started,Hercules_15082023-6.CONSTRUCTION.Main Works.Level 2.Yellow.262/268,4,262 / 268 Pipework Insulation,22/11/2023 16:00,28/11/2023 16:00,0,44,"A4040, A19060","A4040: FS, A19060: FS",A4050,A4050: FS,,Task Dependent,Fixed Duration & Units,
A4050,Not Started,Hercules_15082023-6.CONSTRUCTION.Main Works.Level 2.Yellow.262/268,2,262 / 268 Ventilation adaptation to the new rooms,28/11/2023 16:00,30/11/2023 16:00,0,44,"A4040, A5150","A4040: FS, A5150: FS",A4060,A4060: FS,,Task Dependent,Fixed Duration & Units,
A4060,Not Started,Hercules_15082023-6.CONSTRUCTION.Main Works.Level 2.Yellow.262/268,2,262 / 268 Wall  and ceiling finishing after GMP part washer installation complexion,30/11/2023 16:00,04/12/2023 16:00,44,44,"A4050, A29370","A4050: FS, A29370: FS","A4070, A30900","A4070: FS, A30900: FF",,Task Dependent,Fixed Duration & Units,
A4070,Not Started,Hercules_15082023-6.CONSTRUCTION.Main Works.Level 2.Yellow.262/268,1,262 / 268 Remove floor protection at end of construction phase,04/03/2024 08:00,04/03/2024 17:00,0,110,"A4060, A18160, A40400","A4060: FS, A18160: FS, A40400: FS","A39740, A1660","A39740: FF, A1660: FF",,Task Dependent,Fixed Duration & Units,
A3370,Not Started,Hercules_15082023-6.CONSTRUCTION.Main Works.Level 2.Yellow.266,1,266 Floor protection during construction phase,29/08/2023 08:00,29/08/2023 17:00,0,55,"A18160, A1040","A18160: FS, A1040: SS",A3380,A3380: FS,,Task Dependent,Fixed Duration & Units,
A3380,Not Started,Hercules_15082023-6.CONSTRUCTION.Main Works.Level 2.Yellow.266,3,266 Wall pre-installation with holes drilling for waste water,30/08/2023 08:00,01/09/2023 17:00,0,55,"A3370, A29370","A3370: FS, A29370: FS","A30070, 13, A34020","A30070: FF, 13: FS, A34020: FS",,Task Dependent,Fixed Duration & Units,
A34020,Not Started,Hercules_15082023-6.CONSTRUCTION.Main Works.Level 2.Yellow.266,2,266 Removal of Personel Air Lock,04/09/2023 08:00,05/09/2023 17:00,0,55,A3380,A3380: FS,A3400,A3400: FS,,Task Dependent,Fixed Duration & Units,
A3400,Not Started,Hercules_15082023-6.CONSTRUCTION.Main Works.Level 2.Yellow.266,2,266 Wall  installation,06/09/2023 08:00,07/09/2023 17:00,0,55,"A29370, A34020","A29370: FS, A34020: FS","A3410, 13","A3410: FS, 13: FS",,Task Dependent,Fixed Duration & Units,
A3410,Not Started,Hercules_15082023-6.CONSTRUCTION.Main Works.Level 2.Yellow.266,2,266 New door installation DR 229 (room 266 -> corridor 252),08/09/2023 08:00,11/09/2023 17:00,0,75,A3400,A3400: FS,A3420,A3420: FS,,Task Dependent,Fixed Duration & Units,
A3420,Not Started,Hercules_15082023-6.CONSTRUCTION.Main Works.Level 2.Yellow.266,20,"266 Pipework Hookups  (CHW, DR, DH, LS, WBE, ABL, WAI, SIV, WAI, DK)",12/09/2023 08:00,09/10/2023 17:00,0,75,A3410,A3410: FS,"A3430, A30910","A3430: FS, A30910: FF",,Task Dependent,Fixed Duration & Units,
A3430,Not Started,Hercules_15082023-6.CONSTRUCTION.Main Works.Level 2.Yellow.266,5,266 E&I hookups,10/10/2023 08:00,16/10/2023 17:00,0,75,"A3420, A29410","A3420: FS, A29410: FS","A3440, A30910","A3440: FS, A30910: FF",,Task Dependent,Fixed Duration & Units,
A3440,Not Started,Hercules_15082023-6.CONSTRUCTION.Main Works.Level 2.Yellow.266,2,266 E&I dead test verification,17/10/2023 08:00,18/10/2023 17:00,0,75,A3430,A3430: FS,"A3450, A30910","A3450: FS, A30910: FF",,Task Dependent,Fixed Duration & Units,
A3450,Not Started,Hercules_15082023-6.CONSTRUCTION.Main Works.Level 2.Yellow.266,4,266 Pipework/valve reinstatement & verification,19/10/2023 08:00,24/10/2023 17:00,0,75,"A3440, A29410","A3440: FS, A29410: FS","A3460, A30910","A3460: FS, A30910: FF",,Task Dependent,Fixed Duration & Units,
A3460,Not Started,Hercules_15082023-6.CONSTRUCTION.Main Works.Level 2.Yellow.266,4,266 Pipework Insulation,25/10/2023 08:00,30/10/2023 16:00,75,75,"A18160, A3450","A18160: FS, A3450: FS","A3470, A30910","A3470: FS, A30910: FF",,Task Dependent,Fixed Duration & Units,
A3470,Not Started,Hercules_15082023-6.CONSTRUCTION.Main Works.Level 2.Yellow.266,1,266 Remove protection at end of construction phase,04/03/2024 08:00,04/03/2024 17:00,0,110,"A3460, A40400","A3460: FS, A40400: FS","A40220, A1660","A40220: FF, A1660: FF",,Task Dependent,Fixed Duration & Units,
A4080,Not Started,Hercules_15082023-6.CONSTRUCTION.Main Works.Level 2.Yellow.267(228),1,267 (228) Floor protection during construction phase,29/08/2023 08:00,29/08/2023 17:00,0,40,"A1040, A18160","A1040: SS, A18160: FS",A4090,A4090: FS,,Task Dependent,Fixed Duration & Units,
A4090,Not Started,Hercules_15082023-6.CONSTRUCTION.Main Works.Level 2.Yellow.267(228),1,267 (228) LOTO and perform E&I dead testing,30/08/2023 08:00,30/08/2023 16:00,0,40,A4080,A4080: FS,A4100,A4100: FS,,Task Dependent,Fixed Duration & Units,
A4100,Not Started,Hercules_15082023-6.CONSTRUCTION.Main Works.Level 2.Yellow.267(228),2,267 (228) Remove associated E&I Cabling,30/08/2023 16:00,01/09/2023 16:00,6,40,A4090,A4090: FS,A4110,A4110: FS,,Task Dependent,Fixed Duration & Units,
A4110,Not Started,Hercules_15082023-6.CONSTRUCTION.Main Works.Level 2.Yellow.267(228),1,"267 (228) Isolate and draindown pipework  (CHW, DR, DH, LS, WBE, ABL, WAI, SIV, WAI, DK)",12/09/2023 08:00,12/09/2023 17:00,0,34,"A4100, A29410","A4100: FS, A29410: FS",A4120,A4120: FS,,Task Dependent,Fixed Duration & Units,
A4120,Not Started,Hercules_15082023-6.CONSTRUCTION.Main Works.Level 2.Yellow.267(228),5,267 (228) Disconnect pipework,13/09/2023 08:00,19/09/2023 17:00,0,34,A4110,A4110: FS,A5030,A5030: FS,,Task Dependent,Fixed Duration & Units,
A5030,Not Started,Hercules_15082023-6.CONSTRUCTION.Main Works.Level 2.Yellow.267(228),3,267 (228) Removal of Autoclave / Lyophilisator / dry heat sterilizer,20/09/2023 08:00,22/09/2023 17:00,0,34,A4120,A4120: FS,A4130,A4130: FS,,Task Dependent,Fixed Duration & Units,
A4130,Not Started,Hercules_15082023-6.CONSTRUCTION.Main Works.Level 2.Yellow.267(228),2,267 (228) Partial clean wall pannel removal,25/09/2023 08:00,26/09/2023 17:00,0,34,"A5030, A29370, A18220","A5030: FS, A29370: FS, A18220: FS","A4140, 13","A4140: FS, 13: FS",,Task Dependent,Fixed Duration & Units,
A4140,Not Started,Hercules_15082023-6.CONSTRUCTION.Main Works.Level 2.Yellow.267(228),2,267 (228) Floor repair where wall have been removed,27/09/2023 08:00,28/09/2023 17:00,0,34,"A4130, A18160, A29370","A4130: FS, A18160: FS, A29370: FS","A4150, 13","A4150: FS, 13: FS",,Task Dependent,Fixed Duration & Units,
A4150,Not Started,Hercules_15082023-6.CONSTRUCTION.Main Works.Level 2.Yellow.267(228),2,267 (228) Ceiling to make good where wall have been removed,29/09/2023 08:00,02/10/2023 17:00,0,34,"A4140, A29370","A4140: FS, A29370: FS","A4160, 13","A4160: FS, 13: FS",,Task Dependent,Fixed Duration & Units,
A4160,Not Started,Hercules_15082023-6.CONSTRUCTION.Main Works.Level 2.Yellow.267(228),4,267 (228) Clean wall pannels installation room creation,03/10/2023 08:00,06/10/2023 17:00,0,34,"A4150, A29360, A29370","A4150: FS, A29360: FS, A29370: FS","A4170, 13","A4170: FS, 13: FS",,Task Dependent,Fixed Duration & Units,
A4170,Not Started,Hercules_15082023-6.CONSTRUCTION.Main Works.Level 2.Yellow.267(228),2,267 (228) Existing clean pannels to make good where required (Repairs if necessary),09/10/2023 08:00,10/10/2023 17:00,0,78,"A4160, A29360","A4160: FS, A29360: FS",A4180,A4180: FS,,Task Dependent,Fixed Duration & Units,
A4180,Not Started,Hercules_15082023-6.CONSTRUCTION.Main Works.Level 2.Yellow.267(228),5,267 (228) Existing floor to make good with new finish coat localised only,11/10/2023 08:00,17/10/2023 17:00,0,78,"A4170, A18160","A4170: FS, A18160: FS",A4190,A4190: FS,,Task Dependent,Fixed Duration & Units,
A4190,Not Started,Hercules_15082023-6.CONSTRUCTION.Main Works.Level 2.Yellow.267(228),3,"267 (228) Skirting finish, existing coving resin to make good where required and re-finished",18/10/2023 08:00,20/10/2023 17:00,0,78,A4180,A4180: FS,"A4200, A30160","A4200: FS, A30160: FF",,Task Dependent,Fixed Duration & Units,
A4200,Not Started,Hercules_15082023-6.CONSTRUCTION.Main Works.Level 2.Yellow.267(228),3,267 (228) Installation of Autoclave,23/10/2023 08:00,25/10/2023 17:00,0,78,"A4190, A4870","A4190: FS, A4870: FS","A4210, A30890","A4210: FS, A30890: FF",,Task Dependent,Fixed Duration & Units,
A4210,Not Started,Hercules_15082023-6.CONSTRUCTION.Main Works.Level 2.Yellow.267(228),10,"267 (228) Pipework Hookups  (CHW, DR, DH, LS, WBE, ABL, WAI, SIV, WAI, DK)",26/10/2023 08:00,08/11/2023 17:00,0,167,"A4200, A19060","A4200: FS, A19060: FS",A4220,A4220: FS,,Task Dependent,Fixed Duration & Units,
A4220,Not Started,Hercules_15082023-6.CONSTRUCTION.Main Works.Level 2.Yellow.267(228),5,267 (228) E&I hookups,09/11/2023 08:00,15/11/2023 17:00,0,167,"A4210, A29410","A4210: FS, A29410: FS",A4230,A4230: FS,,Task Dependent,Fixed Duration & Units,
A4230,Not Started,Hercules_15082023-6.CONSTRUCTION.Main Works.Level 2.Yellow.267(228),2,267 (228) E&I dead test verification,16/11/2023 08:00,17/11/2023 17:00,0,167,A4220,A4220: FS,A4240,A4240: FS,,Task Dependent,Fixed Duration & Units,
A4240,Not Started,Hercules_15082023-6.CONSTRUCTION.Main Works.Level 2.Yellow.267(228),4,267 (228) Pipework/valve reinstatement & verification,20/11/2023 08:00,23/11/2023 17:00,0,167,"A4230, A29410, A19060","A4230: FS, A29410: FS, A19060: FS",A5040,A5040: FS,,Task Dependent,Fixed Duration & Units,
A5040,Not Started,Hercules_15082023-6.CONSTRUCTION.Main Works.Level 2.Yellow.267(228),4,267 (228) Pipework Insulation,24/11/2023 08:00,29/11/2023 17:00,57,167,"A4240, A19060","A4240: FS, A19060: FS",A4250,A4250: FS,,Task Dependent,Fixed Duration & Units,
A4250,Not Started,Hercules_15082023-6.CONSTRUCTION.Main Works.Level 2.Yellow.267(228),1,267 (228) Remove floor protection at end of construction phase,04/03/2024 08:00,04/03/2024 17:00,0,110,"A18160, A5040, A40400","A18160: FS, A5040: FS, A40400: FS","A39750, A1660","A39750: FF, A1660: FF",,Task Dependent,Fixed Duration & Units,
A40460,Not Started,Hercules_15082023-6.CONSTRUCTION.Main Works.Level 3.1,5,Room 303 Disconnect BMS panels supplies,29/08/2023 08:00,04/09/2023 17:00,0,198,A34140,A34140: SS,A40470,A40470: FS,,Task Dependent,Fixed Duration & Units,
A40470,Not Started,Hercules_15082023-6.CONSTRUCTION.Main Works.Level 3.1,5,Room 303 Remove BMS panels,05/09/2023 08:00,11/09/2023 17:00,91,198,A40460,A40460: FS,A40480,A40480: FS,,Task Dependent,Fixed Duration & Units,
A40480,Not Started,Hercules_15082023-6.CONSTRUCTION.Main Works.Level 3.1,2,Room 303 Install HMIs,31/01/2024 08:00,01/02/2024 17:00,0,107,A40470,A40470: FS,A40490,A40490: FS,Start On or After,Task Dependent,Fixed Duration & Units,
A40490,Not Started,Hercules_15082023-6.CONSTRUCTION.Main Works.Level 3.1,5,Room 303 Install HVAC LV Board,02/02/2024 08:00,08/02/2024 17:00,0,107,A40480,A40480: FS,A40530,A40530: FS,,Task Dependent,Fixed Duration & Units,
A40530,Not Started,Hercules_15082023-6.CONSTRUCTION.Main Works.Level 3.1,5,Room 303 Test & commissioning LV Board,09/02/2024 08:00,15/02/2024 17:00,0,107,A40490,A40490: FS,A40540,A40540: FS,,Task Dependent,Fixed Duration & Units,
A40540,Not Started,Hercules_15082023-6.CONSTRUCTION.Main Works.Level 3.1,5,Room 303 LV Board cable tie in and testing,16/02/2024 08:00,22/02/2024 17:00,0,107,A40530,A40530: FS,A40360,A40360: FS,,Task Dependent,Fixed Duration & Units,
A31970,Not Started,Hercules_15082023-6.CONSTRUCTION.Main Works.Level 3.2.1,5,Electrical containment and cabling install from HVAC LV board,11/10/2023 08:00,17/10/2023 17:00,0,-7,A31720,A31720: FS,"A31980, A40360","A31980: FS, A40360: FS",,Task Dependent,Fixed Duration & Units,
A31980,Not Started,Hercules_15082023-6.CONSTRUCTION.Main Works.Level 3.2.1,5,Pipework incl supports & inline components installation,18/10/2023 08:00,24/10/2023 17:00,0,-7,"A31970, A19060, A18280","A31970: FS, A19060: FS, A18280: FS",A31990,A31990: FS,,Task Dependent,Fixed Duration & Units,
A31990,Not Started,Hercules_15082023-6.CONSTRUCTION.Main Works.Level 3.2.1,1,Pipework Testing,25/10/2023 08:00,25/10/2023 17:00,0,-7,"A31980, A19060, A18280","A31980: FS, A19060: FS, A18280: FS","A32000, A34360, A34220","A32000: FS, A34360: FS, A34220: FS",,Task Dependent,Fixed Duration & Units,
A32000,Not Started,Hercules_15082023-6.CONSTRUCTION.Main Works.Level 3.2.1,3,Pipework Insulation & Labelling,26/10/2023 08:00,30/10/2023 17:00,0,-7,"A31990, A19060, A18280","A31990: FS, A19060: FS, A18280: FS","A40300, A7530, A7540, A7600, A7610, A7620, A7640, A7650, A34150, A32010","A40300: FS, A7530: FS, A7540: FS, A7600: FS, A7610: FS, A7620: FS, A7640: FS, A7650: FS, A34150: FS, A32010: FS",,Task Dependent,Fixed Duration & Units,
A32010,Not Started,Hercules_15082023-6.CONSTRUCTION.Main Works.Level 3.2.1,5,Ductwork incl supports & inline components installation,31/10/2023 08:00,06/11/2023 17:00,0,-7,A32000,A32000: FS,A32020,A32020: FS,,Task Dependent,Fixed Duration & Units,
A32020,Not Started,Hercules_15082023-6.CONSTRUCTION.Main Works.Level 3.2.1,2,Duct Testing,07/11/2023 08:00,08/11/2023 17:00,0,-7,A32010,A32010: FS,A32030,A32030: FS,,Task Dependent,Fixed Duration & Units,
A32030,Not Started,Hercules_15082023-6.CONSTRUCTION.Main Works.Level 3.2.1,3,Duct Insulation,09/11/2023 08:00,13/11/2023 17:00,0,-7,A32020,A32020: FS,A32040,A32040: FS,,Task Dependent,Fixed Duration & Units,
A32040,Not Started,Hercules_15082023-6.CONSTRUCTION.Main Works.Level 3.2.1,5,AHU Placement (x4),14/11/2023 08:00,20/11/2023 17:00,0,-7,"A32030, A29400","A32030: FS, A29400: FS","A32050, A32240, A32060","A32050: SS 1, A32240: FS, A32060: FS",,Task Dependent,Fixed Duration & Units,
A32050,Not Started,Hercules_15082023-6.CONSTRUCTION.Main Works.Level 3.2.1,6,AHU Assembly & Testing,15/11/2023 08:00,22/11/2023 17:00,0,29,A32040,A32040: SS 1,A32760,A32760: FF,,Task Dependent,Fixed Duration and Units/Time,
A32060,Not Started,Hercules_15082023-6.CONSTRUCTION.Main Works.Level 3.2.1,2,BMS Panel Placement (x4),21/11/2023 08:00,22/11/2023 17:00,0,-1,A32040,A32040: FS,"A40290, A32260, A32770, A32480","A40290: FS, A32260: FF -5, A32770: FS -4, A32480: FS",,Task Dependent,Fixed Duration and Units/Time,
A32080,Not Started,Hercules_15082023-6.CONSTRUCTION.Main Works.Level 3.2.2,5,Electrical containment and cabling install,10/10/2023 08:00,16/10/2023 17:00,0,6,"A31540, A31880","A31540: FS, A31880: FS",A32090,A32090: FS,,Task Dependent,Fixed Duration & Units,
A32090,Not Started,Hercules_15082023-6.CONSTRUCTION.Main Works.Level 3.2.2,5,Pipework incl supports & inline components installation,17/10/2023 08:00,23/10/2023 17:00,0,6,"A32080, A19060, A18280","A32080: FS, A19060: FS, A18280: FS",A32100,A32100: FS,,Task Dependent,Fixed Duration & Units,
A32100,Not Started,Hercules_15082023-6.CONSTRUCTION.Main Works.Level 3.2.2,1,Pipework Testing,24/10/2023 08:00,24/10/2023 17:00,0,6,"A32090, A19060, A18280","A32090: FS, A19060: FS, A18280: FS",A32110,A32110: FS,,Task Dependent,Fixed Duration & Units,
A32110,Not Started,Hercules_15082023-6.CONSTRUCTION.Main Works.Level 3.2.2,3,Pipework Insulation & Labelling,25/10/2023 08:00,27/10/2023 17:00,0,6,"A32100, A19060, A18280","A32100: FS, A19060: FS, A18280: FS",A32120,A32120: FS,,Task Dependent,Fixed Duration & Units,
A32120,Not Started,Hercules_15082023-6.CONSTRUCTION.Main Works.Level 3.2.2,3,Lighting fixture install,30/10/2023 08:00,01/11/2023 17:00,0,6,A32110,A32110: FS,A32130,A32130: FS,,Task Dependent,Fixed Duration & Units,
A32130,Not Started,Hercules_15082023-6.CONSTRUCTION.Main Works.Level 3.2.2,6,Ductwork incl supports & inline components installation,02/11/2023 08:00,09/11/2023 17:00,0,6,A32120,A32120: FS,A32150,A32150: FS,,Task Dependent,Fixed Duration & Units,
A32150,Not Started,Hercules_15082023-6.CONSTRUCTION.Main Works.Level 3.2.2,2,Duct Insulation & Labelling,10/11/2023 08:00,13/11/2023 17:00,0,6,A32130,A32130: FS,A33460,A33460: FS,,Task Dependent,Fixed Duration & Units,
A33460,Not Started,Hercules_15082023-6.CONSTRUCTION.Main Works.Level 3.2.2,3,Branch ductwork and final connections to ceiling,14/11/2023 08:00,16/11/2023 17:00,0,6,A32150,A32150: FS,A32140,A32140: FS,,Task Dependent,Fixed Duration & Units,
A32140,Not Started,Hercules_15082023-6.CONSTRUCTION.Main Works.Level 3.2.2,3,Duct Testing,17/11/2023 08:00,21/11/2023 17:00,0,6,A33460,A33460: FS,A32370,A32370: FS,,Task Dependent,Fixed Duration & Units,
A32280,Not Started,Hercules_15082023-6.CONSTRUCTION.Main Works.Level 3.2.3,5,Electrical containment and cabling install,20/10/2023 08:00,26/10/2023 17:00,0,-3,"A31630, A31790","A31630: FS, A31790: FS",A32290,A32290: FS,,Task Dependent,Fixed Duration & Units,
A32290,Not Started,Hercules_15082023-6.CONSTRUCTION.Main Works.Level 3.2.3,5,Pipework incl supports & inline components installation,27/10/2023 08:00,02/11/2023 17:00,0,-3,"A32280, A19060, A18280","A32280: FS, A19060: FS, A18280: FS",A32300,A32300: FS,,Task Dependent,Fixed Duration & Units,
A32300,Not Started,Hercules_15082023-6.CONSTRUCTION.Main Works.Level 3.2.3,1,Pipework Testing,03/11/2023 08:00,03/11/2023 17:00,0,-3,"A32290, A19060, A18280","A32290: FS, A19060: FS, A18280: FS","A32310, A34360, A34220","A32310: FS, A34360: FS, A34220: FS",,Task Dependent,Fixed Duration & Units,
A32310,Not Started,Hercules_15082023-6.CONSTRUCTION.Main Works.Level 3.2.3,3,Pipework Insulation & Labelling,06/11/2023 08:00,08/11/2023 17:00,0,-3,"A32300, A19060, A18280","A32300: FS, A19060: FS, A18280: FS","A7530, A7540, A7600, A7620, A7640, A7650, A32320, A34250, A40500","A7530: FS, A7540: FS, A7600: FS, A7620: FS, A7640: FS, A7650: FS, A32320: FS, A34250: FS, A40500: FS",,Task Dependent,Fixed Duration & Units,
A32320,Not Started,Hercules_15082023-6.CONSTRUCTION.Main Works.Level 3.2.3,3,Lighting fixture install,09/11/2023 08:00,13/11/2023 17:00,0,-3,A32310,A32310: FS,A32330,A32330: FS,,Task Dependent,Fixed Duration & Units,
A32330,Not Started,Hercules_15082023-6.CONSTRUCTION.Main Works.Level 3.2.3,4,Ductwork incl supports & inline components installation,14/11/2023 08:00,17/11/2023 17:00,0,-3,"A32320, A1510, A1520","A32320: FS, A1510: FS, A1520: FS",A32350,A32350: FS,,Task Dependent,Fixed Duration & Units,
A32350,Not Started,Hercules_15082023-6.CONSTRUCTION.Main Works.Level 3.2.3,4,Duct Insulation & Labelling,20/11/2023 08:00,23/11/2023 17:00,0,-3,A32330,A32330: FS,"A33550, A32570","A33550: FS, A32570: FS",,Task Dependent,Fixed Duration & Units,
A33550,Not Started,Hercules_15082023-6.CONSTRUCTION.Main Works.Level 3.2.3,3,Branch ductwork and final connections to ceiling,24/11/2023 08:00,28/11/2023 17:00,0,-3,A32350,A32350: FS,A32340,A32340: FS,,Task Dependent,Fixed Duration & Units,
A32340,Not Started,Hercules_15082023-6.CONSTRUCTION.Main Works.Level 3.2.3,3,Duct Testing,29/11/2023 08:00,01/12/2023 17:00,0,-3,A33550,A33550: FS,A32570,A32570: FS,,Task Dependent,Fixed Duration & Units,
A32170,Not Started,Hercules_15082023-6.CONSTRUCTION.Main Works.Level 3.2.4,5,Electrical containment and cabling install from HVAC LV board,20/10/2023 08:00,26/10/2023 17:00,0,-9,"A31630, A31950","A31630: FS, A31950: FS","A32180, A40360","A32180: FS, A40360: FS",,Task Dependent,Fixed Duration & Units,
A32180,Not Started,Hercules_15082023-6.CONSTRUCTION.Main Works.Level 3.2.4,5,Pipework incl supports & inline components installation,27/10/2023 08:00,02/11/2023 17:00,0,-9,"A32170, A19060, A18280","A32170: FS, A19060: FS, A18280: FS",A32190,A32190: FS,,Task Dependent,Fixed Duration & Units,
A32190,Not Started,Hercules_15082023-6.CONSTRUCTION.Main Works.Level 3.2.4,1,Pipework Testing,03/11/2023 08:00,03/11/2023 17:00,0,-9,"A32180, A19060, A18280","A32180: FS, A19060: FS, A18280: FS","A32200, A34360, A34220","A32200: FS, A34360: FS, A34220: FS",,Task Dependent,Fixed Duration & Units,
A32200,Not Started,Hercules_15082023-6.CONSTRUCTION.Main Works.Level 3.2.4,3,Pipework Insulation & Labelling,06/11/2023 08:00,08/11/2023 17:00,0,-9,"A32190, A19060, A18280","A32190: FS, A19060: FS, A18280: FS","A40300, A7600, A7620, A7640, A7650, A34150, A32210, A7610","A40300: FS, A7600: FS, A7620: FS, A7640: FS, A7650: FS, A34150: FS, A32210: FS, A7610: FS",,Task Dependent,Fixed Duration & Units,
A32210,Not Started,Hercules_15082023-6.CONSTRUCTION.Main Works.Level 3.2.4,5,Ductwork incl supports & inline components installation,09/11/2023 08:00,15/11/2023 17:00,0,-9,A32200,A32200: FS,A32220,A32220: FS,,Task Dependent,Fixed Duration & Units,
A32220,Not Started,Hercules_15082023-6.CONSTRUCTION.Main Works.Level 3.2.4,2,Duct Testing,16/11/2023 08:00,17/11/2023 17:00,0,-9,A32210,A32210: FS,A32230,A32230: FS,,Task Dependent,Fixed Duration & Units,
A32230,Not Started,Hercules_15082023-6.CONSTRUCTION.Main Works.Level 3.2.4,3,Duct Insulation,20/11/2023 08:00,22/11/2023 17:00,0,-9,A32220,A32220: FS,A32240,A32240: FS,,Task Dependent,Fixed Duration & Units,
A32240,Not Started,Hercules_15082023-6.CONSTRUCTION.Main Works.Level 3.2.4,8,AHU Placement (x8),23/11/2023 08:00,04/12/2023 17:00,0,-9,"A32230, A32040, A29400","A32230: FS, A32040: FS, A29400: FS",A32250,A32250: FS,,Task Dependent,Fixed Duration & Units,
A32260,Not Started,Hercules_15082023-6.CONSTRUCTION.Main Works.Level 3.2.4,5,BMS Panel Placement (x8),28/11/2023 08:00,04/12/2023 17:00,0,-9,"A32250, A32060","A32250: FS -5, A32060: FF -5","A40290, A33040, A32680","A40290: FS, A33040: FF -4, A32680: FS",,Task Dependent,Fixed Duration and Units/Time,
A32250,Not Started,Hercules_15082023-6.CONSTRUCTION.Main Works.Level 3.2.4,0,AHU Assembly & Testing,,04/12/2023 17:00,0,-9,A32240,A32240: FS,"A32260, A33030, A33050, A33060","A32260: FS -5, A33030: FF, A33050: FS, A33060: FS",,Finish Milestone,Fixed Duration and Units/Time,
A32680,Not Started,Hercules_15082023-6.CONSTRUCTION.Main Works.Level 3.2.5,5,Electrical containment and cabling install,05/12/2023 08:00,11/12/2023 17:00,0,-9,"A31630, A31950, A32260","A31630: FS, A31950: FS, A32260: FS",A32690,A32690: FS,,Task Dependent,Fixed Duration & Units,
A32690,Not Started,Hercules_15082023-6.CONSTRUCTION.Main Works.Level 3.2.5,5,Pipework incl supports & inline components installation,12/12/2023 08:00,18/12/2023 17:00,0,-9,"A32680, A19060, A18280","A32680: FS, A19060: FS, A18280: FS",A32700,A32700: FS,,Task Dependent,Fixed Duration & Units,
A32700,Not Started,Hercules_15082023-6.CONSTRUCTION.Main Works.Level 3.2.5,1,Pipework Testing,19/12/2023 08:00,19/12/2023 17:00,0,-9,"A32690, A19060, A18280","A32690: FS, A19060: FS, A18280: FS","A32710, A34230, A34310, A34360, A34220","A32710: FS, A34230: FS, A34310: FS, A34360: FS, A34220: FS",,Task Dependent,Fixed Duration & Units,
A32710,Not Started,Hercules_15082023-6.CONSTRUCTION.Main Works.Level 3.2.5,3,Pipework Insulation & Labelling,20/12/2023 08:00,22/12/2023 17:00,0,-9,"A32700, A19060, A18280","A32700: FS, A19060: FS, A18280: FS","A7600, A7620, A7640, A7650, A32720, A34250, A7610","A7600: FS, A7620: FS, A7640: FS, A7650: FS, A32720: FS, A34250: FS, A7610: FS",,Task Dependent,Fixed Duration & Units,
A32720,Not Started,Hercules_15082023-6.CONSTRUCTION.Main Works.Level 3.2.5,3,Lighting fixture install,08/01/2024 08:00,10/01/2024 17:00,0,-9,A32710,A32710: FS,A32730,A32730: FS,,Task Dependent,Fixed Duration & Units,
A32730,Not Started,Hercules_15082023-6.CONSTRUCTION.Main Works.Level 3.2.5,6,Ductwork incl supports & inline components installation,11/01/2024 08:00,18/01/2024 17:00,0,-9,A32720,A32720: FS,A32750,A32750: FS,,Task Dependent,Fixed Duration & Units,
A32750,Not Started,Hercules_15082023-6.CONSTRUCTION.Main Works.Level 3.2.5,2,Duct Insulation & Labelling,19/01/2024 08:00,22/01/2024 17:00,0,-9,A32730,A32730: FS,"A33100, A33050, A33060","A33100: FS, A33050: FS, A33060: FS",,Task Dependent,Fixed Duration & Units,
A33100,Not Started,Hercules_15082023-6.CONSTRUCTION.Main Works.Level 3.2.5,4,Branch ductwork and final connections to ceiling,23/01/2024 08:00,26/01/2024 17:00,0,133,A32750,A32750: FS,A32740,A32740: FS,,Task Dependent,Fixed Duration & Units,
A32740,Not Started,Hercules_15082023-6.CONSTRUCTION.Main Works.Level 3.2.5,3,Duct Testing,29/01/2024 08:00,31/01/2024 17:00,133,133,A33100,A33100: FS,,,,Task Dependent,Fixed Duration & Units,
A32570,Not Started,Hercules_15082023-6.CONSTRUCTION.Main Works.Level 3.2.6,5,Electrical containment and cabling install from HVAC LV board,04/12/2023 08:00,08/12/2023 17:00,0,-3,"A31630, A31790, A32340, A32350","A31630: FS, A31790: FS, A32340: FS, A32350: FS","A32580, A40360","A32580: FS, A40360: FS",,Task Dependent,Fixed Duration & Units,
A32580,Not Started,Hercules_15082023-6.CONSTRUCTION.Main Works.Level 3.2.6,5,Pipework incl supports & inline components installation,11/12/2023 08:00,15/12/2023 17:00,0,-3,"A32570, A19060, A18280","A32570: FS, A19060: FS, A18280: FS",A32590,A32590: FS,,Task Dependent,Fixed Duration & Units,
A32590,Not Started,Hercules_15082023-6.CONSTRUCTION.Main Works.Level 3.2.6,1,Pipework Testing,18/12/2023 08:00,18/12/2023 17:00,0,-3,"A32580, A19060, A18280","A32580: FS, A19060: FS, A18280: FS","A32600, A34360, A34220","A32600: FS, A34360: FS, A34220: FS",,Task Dependent,Fixed Duration & Units,
A32600,Not Started,Hercules_15082023-6.CONSTRUCTION.Main Works.Level 3.2.6,3,Pipework Insulation & Labelling,19/12/2023 08:00,21/12/2023 17:00,0,-3,"A32590, A19060, A18280","A32590: FS, A19060: FS, A18280: FS","A7530, A7540, A7600, A7620, A7640, A7650, A34150, A32610","A7530: FS, A7540: FS, A7600: FS, A7620: FS, A7640: FS, A7650: FS, A34150: FS, A32610: FS",,Task Dependent,Fixed Duration & Units,
A32610,Not Started,Hercules_15082023-6.CONSTRUCTION.Main Works.Level 3.2.6,5,Ductwork incl supports & inline components installation,22/12/2023 08:00,11/01/2024 17:00,0,-3,A32600,A32600: FS,A32620,A32620: FS,,Task Dependent,Fixed Duration & Units,
A32620,Not Started,Hercules_15082023-6.CONSTRUCTION.Main Works.Level 3.2.6,2,Duct Testing,12/01/2024 08:00,15/01/2024 17:00,0,-3,A32610,A32610: FS,A32630,A32630: FS,,Task Dependent,Fixed Duration & Units,
A32630,Not Started,Hercules_15082023-6.CONSTRUCTION.Main Works.Level 3.2.6,3,Duct Insulation,16/01/2024 08:00,18/01/2024 17:00,0,-3,A32620,A32620: FS,A32640,A32640: FS,,Task Dependent,Fixed Duration & Units,
A32640,Not Started,Hercules_15082023-6.CONSTRUCTION.Main Works.Level 3.2.6,3,AHU Placement (x2),19/01/2024 08:00,23/01/2024 17:00,0,-3,"A32630, A29400","A32630: FS, A29400: FS","A32650, A32440","A32650: FS, A32440: SS 1",,Task Dependent,Fixed Duration & Units,
A32650,Not Started,Hercules_15082023-6.CONSTRUCTION.Main Works.Level 3.2.6,0,AHU Assembly & Testing,,23/01/2024 17:00,0,-3,A32640,A32640: FS,"A32660, A33500, A33510, A33480","A32660: FS, A33500: FS, A33510: FS, A33480: FS",,Finish Milestone,Fixed Duration and Units/Time,
A32660,Not Started,Hercules_15082023-6.CONSTRUCTION.Main Works.Level 3.2.6,5,BMS Panel Placement (x2),24/01/2024 08:00,30/01/2024 17:00,0,3,A32650,A32650: FS,"A40290, A33490","A40290: FS, A33490: FF -4",,Task Dependent,Fixed Duration and Units/Time,
A32480,Not Started,Hercules_15082023-6.CONSTRUCTION.Main Works.Level 3.2.7,5,Electrical containment and cabling install,23/11/2023 08:00,29/11/2023 17:00,0,-1,"A31540, A31720, A32060","A31540: FS, A31720: FS, A32060: FS",A32490,A32490: FS,,Task Dependent,Fixed Duration & Units,
A32490,Not Started,Hercules_15082023-6.CONSTRUCTION.Main Works.Level 3.2.7,5,Pipework incl supports & inline components installation,30/11/2023 08:00,06/12/2023 17:00,0,-1,"A32480, A19060, A18280","A32480: FS, A19060: FS, A18280: FS",A32500,A32500: FS,,Task Dependent,Fixed Duration & Units,
A32500,Not Started,Hercules_15082023-6.CONSTRUCTION.Main Works.Level 3.2.7,1,Pipework Testing,07/12/2023 08:00,07/12/2023 17:00,0,-1,"A32490, A19060, A18280","A32490: FS, A19060: FS, A18280: FS","A32510, A34330, A34360, A34220","A32510: FS, A34330: FS, A34360: FS, A34220: FS",,Task Dependent,Fixed Duration & Units,
A32510,Not Started,Hercules_15082023-6.CONSTRUCTION.Main Works.Level 3.2.7,3,Pipework Insulation & Labelling,08/12/2023 08:00,12/12/2023 17:00,0,-1,"A32500, A19060, A18280","A32500: FS, A19060: FS, A18280: FS","A7530, A7540, A7600, A7620, A7640, A7650, A32520, A34250, A7610, A40500","A7530: FS, A7540: FS, A7600: FS, A7620: FS, A7640: FS, A7650: FS, A32520: FS, A34250: FS, A7610: FS, A40500: FS",,Task Dependent,Fixed Duration & Units,
A32520,Not Started,Hercules_15082023-6.CONSTRUCTION.Main Works.Level 3.2.7,3,Lighting fixture install,13/12/2023 08:00,15/12/2023 17:00,0,-1,A32510,A32510: FS,A32530,A32530: FS,,Task Dependent,Fixed Duration & Units,
A32530,Not Started,Hercules_15082023-6.CONSTRUCTION.Main Works.Level 3.2.7,6,Ductwork incl supports & inline components installation,18/12/2023 08:00,08/01/2024 17:00,0,-1,A32520,A32520: FS,A32550,A32550: FS,,Task Dependent,Fixed Duration & Units,
A32550,Not Started,Hercules_15082023-6.CONSTRUCTION.Main Works.Level 3.2.7,1,Duct Insulation & Labelling,09/01/2024 08:00,09/01/2024 17:00,0,-1,A32530,A32530: FS,A32830,A32830: FS,,Task Dependent,Fixed Duration & Units,
A32830,Not Started,Hercules_15082023-6.CONSTRUCTION.Main Works.Level 3.2.7,3,Branch ductwork and final connections to ceiling,10/01/2024 08:00,12/01/2024 17:00,0,-1,A32550,A32550: FS,A32540,A32540: FS,,Task Dependent,Fixed Duration & Units,
A32540,Not Started,Hercules_15082023-6.CONSTRUCTION.Main Works.Level 3.2.7,3,Duct Testing,15/01/2024 08:00,17/01/2024 17:00,0,-1,A32830,A32830: FS,"A32780, A32790","A32780: FS, A32790: FS",,Task Dependent,Fixed Duration & Units,
A32370,Not Started,Hercules_15082023-6.CONSTRUCTION.Main Works.Level 3.2.8,5,Electrical containment and cabling install from HVAC LV board,22/11/2023 08:00,28/11/2023 17:00,0,6,"A31540, A31880, A32140","A31540: FS, A31880: FS, A32140: FS","A32380, A40360","A32380: FS, A40360: FS",,Task Dependent,Fixed Duration & Units,
A32380,Not Started,Hercules_15082023-6.CONSTRUCTION.Main Works.Level 3.2.8,5,Pipework incl supports & inline components installation,29/11/2023 08:00,05/12/2023 17:00,0,6,"A32370, A19060, A18280","A32370: FS, A19060: FS, A18280: FS",A32390,A32390: FS,,Task Dependent,Fixed Duration & Units,
A32390,Not Started,Hercules_15082023-6.CONSTRUCTION.Main Works.Level 3.2.8,1,Pipework Testing,06/12/2023 08:00,06/12/2023 17:00,0,6,"A32380, A19060, A18280","A32380: FS, A19060: FS, A18280: FS",A32400,A32400: FS,,Task Dependent,Fixed Duration & Units,
A32400,Not Started,Hercules_15082023-6.CONSTRUCTION.Main Works.Level 3.2.8,3,Pipework Insulation & Labelling,07/12/2023 08:00,11/12/2023 17:00,0,6,"A32390, A19060, A18280","A32390: FS, A19060: FS, A18280: FS","A40300, A34150, A32410","A40300: FS, A34150: FS, A32410: FS",,Task Dependent,Fixed Duration & Units,
A32410,Not Started,Hercules_15082023-6.CONSTRUCTION.Main Works.Level 3.2.8,5,Ductwork incl supports & inline components installation,12/12/2023 08:00,18/12/2023 17:00,0,6,A32400,A32400: FS,A32420,A32420: FS,,Task Dependent,Fixed Duration & Units,
A32420,Not Started,Hercules_15082023-6.CONSTRUCTION.Main Works.Level 3.2.8,2,Duct Testing,19/12/2023 08:00,20/12/2023 17:00,0,6,A32410,A32410: FS,A32430,A32430: FS,,Task Dependent,Fixed Duration & Units,
A32430,Not Started,Hercules_15082023-6.CONSTRUCTION.Main Works.Level 3.2.8,3,Duct Insulation,21/12/2023 08:00,08/01/2024 17:00,9,6,A32420,A32420: FS,A32440,A32440: FS,,Task Dependent,Fixed Duration & Units,
A32440,Not Started,Hercules_15082023-6.CONSTRUCTION.Main Works.Level 3.2.8,3,AHU Placement (x2),22/01/2024 08:00,24/01/2024 17:00,0,-3,"A32430, A32640, A29400","A32430: FS, A32640: SS 1, A29400: FS",A32450,A32450: FS,,Task Dependent,Fixed Duration & Units,
A32450,Not Started,Hercules_15082023-6.CONSTRUCTION.Main Works.Level 3.2.8,0,AHU Assembly & Testing,,24/01/2024 17:00,0,-3,A32440,A32440: FS,"A32460, A33390","A32460: FS, A33390: FS",,Finish Milestone,Fixed Duration and Units/Time,
A32460,Not Started,Hercules_15082023-6.CONSTRUCTION.Main Works.Level 3.2.8,5,BMS Panel Placement (x2),25/01/2024 08:00,31/01/2024 17:00,0,-3,A32450,A32450: FS,"A40290, A33400","A40290: FS, A33400: FS -4",,Task Dependent,Fixed Duration and Units/Time,
A5510,Not Started,Hercules_15082023-6.CONSTRUCTION.Main Works.Level 3.3,3,Level 3 Removal of AHU Panels HVAC,25/09/2023 08:00,27/09/2023 17:00,41,78,"A5520, A34140, A29390","A5520: FS, A34140: SS, A29390: FS","A32770, A33040, A33400, A33490","A32770: FF, A33040: FF, A33400: FF, A33490: FS",,Task Dependent,Fixed Duration & Units,
A31570,Completed,Hercules_15082023-6.CONSTRUCTION.Main Works.Level 3.3.1,1,Level 3 Isolate and draindown pipework,04/08/2023 08:00,04/08/2023 17:00,,,"A34140, A19070, A18510","A34140: SS, A19070: FS, A18510: FS",A31550,A31550: FS,,Task Dependent,Fixed Duration & Units,
A31550,Completed,Hercules_15082023-6.CONSTRUCTION.Main Works.Level 3.3.1,2,Level 3 LOTO and perform dead testing on LV distribution,07/08/2023 08:00,08/08/2023 17:00,,,A31570,A31570: FS,"A31580, A31560","A31580: FS, A31560: FS",,Task Dependent,Fixed Duration & Units,
A31560,Completed,Hercules_15082023-6.CONSTRUCTION.Main Works.Level 3.3.1,1,Level 3 Disconnect E&I Cabling and associated instrumentation to AHUs,09/08/2023 08:00,09/08/2023 17:00,,,A31550,A31550: FS,,,,Task Dependent,Fixed Duration & Units,
A31580,Completed,Hercules_15082023-6.CONSTRUCTION.Main Works.Level 3.3.1,1,Level 3 Disconnect Utilities Pipework from AHUs,09/08/2023 08:00,09/08/2023 17:00,,,"A31550, A19070, A18510","A31550: FS, A19070: FS, A18510: FS",A31590,A31590: FS,,Task Dependent,Fixed Duration & Units,
A31590,In Progress,Hercules_15082023-6.CONSTRUCTION.Main Works.Level 3.3.1,14,Level 3 Remove AHU Ductwork Connections & associated components HVAC,10/08/2023 08:00,30/08/2023 17:00,0,-9,A31580,A31580: FS,A31600,A31600: SS,,Task Dependent,Fixed Duration & Units,
A31600,In Progress,Hercules_15082023-6.CONSTRUCTION.Main Works.Level 3.3.1,14,Level 3 Remove AHUs HVAC,10/08/2023 08:00,30/08/2023 17:00,0,-9,A31590,A31590: SS,A33640,A33640: FS,,Task Dependent,Fixed Duration & Units,
A33640,Not Started,Hercules_15082023-6.CONSTRUCTION.Main Works.Level 3.3.1,2,Level 3 Galvanized grating modification / adaptation,31/08/2023 08:00,01/09/2023 17:00,0,-9,A31600,A31600: FS,A31610,A31610: FS,,Task Dependent,Fixed Duration & Units,
A31610,Not Started,Hercules_15082023-6.CONSTRUCTION.Main Works.Level 3.3.1,2,Level 3 Remove HL piping over AHUs,04/09/2023 08:00,05/09/2023 17:00,0,-9,A33640,A33640: FS,A31620,A31620: FS,,Task Dependent,Fixed Duration & Units,
A31620,Not Started,Hercules_15082023-6.CONSTRUCTION.Main Works.Level 3.3.1,3,Level 3 Remove HL ductwork over AHUs HVAC,06/09/2023 08:00,08/09/2023 17:00,0,-9,A31610,A31610: FS,A31630,A31630: FS,,Task Dependent,Fixed Duration & Units,
A31630,Not Started,Hercules_15082023-6.CONSTRUCTION.Main Works.Level 3.3.1,7,Level 3 Remove HL cabling & containment (main LV distribution),11/09/2023 08:00,19/09/2023 17:00,0,-9,A31620,A31620: FS,"A31730, A31890, A32170, A32280, A32570, A32680","A31730: FS, A31890: FS, A32170: FS, A32280: FS, A32570: FS, A32680: FS",,Task Dependent,Fixed Duration & Units,
A31480,Completed,Hercules_15082023-6.CONSTRUCTION.Main Works.Level 3.3.2,1,Technical Space above Lv2 Remove & Reinstal Level 3 Upper Mesh Flooring to Suit Sequencing,04/08/2023 08:00,04/08/2023 17:00,,,"A34140, A19070, A18510","A34140: SS, A19070: FS, A18510: FS",A31490,A31490: FS,,Task Dependent,Fixed Duration & Units,
A31490,Completed,Hercules_15082023-6.CONSTRUCTION.Main Works.Level 3.3.2,10,Technical Space above Lv2 Walk on Ceiling Check by Cleanroom Contractor - reinforcement if necesssary,07/08/2023 08:00,18/08/2023 17:00,,,A31480,A31480: FS,A31500,A31500: FS,,Task Dependent,Fixed Duration & Units,
A31500,In Progress,Hercules_15082023-6.CONSTRUCTION.Main Works.Level 3.3.2,1,Technical Space above Lv2 Walk on Ceiling Ready,28/08/2023 08:00,29/08/2023 17:00,0,-7,A31490,A31490: FS,A31510,A31510: FS,,Task Dependent,Fixed Duration & Units,
A31510,Not Started,Hercules_15082023-6.CONSTRUCTION.Main Works.Level 3.3.2,1,Technical Space above Lv2 Walk on Ceiling protection installation,30/08/2023 08:00,30/08/2023 17:00,0,-7,A31500,A31500: FS,A31520,A31520: FS,,Task Dependent,Fixed Duration & Units,
A31520,Not Started,Hercules_15082023-6.CONSTRUCTION.Main Works.Level 3.3.2,2,Technical Space above Lv2 Removal of Cables & Cable Trays,31/08/2023 08:00,01/09/2023 17:00,0,-7,"A31510, A29390","A31510: FS, A29390: FS",A31530,A31530: FS,,Task Dependent,Fixed Duration & Units,
A31530,Not Started,Hercules_15082023-6.CONSTRUCTION.Main Works.Level 3.3.2,3,Technical Space above Lv2 Removal of Ductwork,04/09/2023 08:00,06/09/2023 17:00,0,-7,"A31520, A29390","A31520: FS, A29390: FS",A31540,A31540: FS,,Task Dependent,Fixed Duration & Units,
A31540,Not Started,Hercules_15082023-6.CONSTRUCTION.Main Works.Level 3.3.2,5,Technical Space above Lv2 Removal of pipework,07/09/2023 08:00,13/09/2023 17:00,0,-7,"A31530, A29390, A19070, A18510","A31530: FS, A29390: FS, A19070: FS, A18510: FS","A31640, A31650, A31800, A31810, A32080, A32370, A32480","A31640: FS, A31650: FS, A31800: FS, A31810: FS, A32080: FS, A32370: FS, A32480: FS",,Task Dependent,Fixed Duration & Units,
A31640,In Progress,Hercules_15082023-6.CONSTRUCTION.Main Works.Level 3.3.3,22,Level 3 Isolate and draindown pipework,14/08/2023 08:00,14/09/2023 08:00,0,-5,"A34140, A31540, A19070, A18510","A34140: SS, A31540: FS, A19070: FS, A18510: FS",A31660,A31660: FS,,Task Dependent,Fixed Duration & Units,
A31660,Not Started,Hercules_15082023-6.CONSTRUCTION.Main Works.Level 3.3.3,1,Level 3 Disconnect Utilities Pipework from AHUs,14/09/2023 08:00,14/09/2023 17:00,2,-5,"A31640, A19070, A18510","A31640: FS, A19070: FS, A18510: FS",A31680,A31680: FS,,Task Dependent,Fixed Duration & Units,
A31650,Not Started,Hercules_15082023-6.CONSTRUCTION.Main Works.Level 3.3.3,2,Level 3 LOTO and perform dead testing on LV distribution,14/09/2023 08:00,15/09/2023 17:00,0,-7,A31540,A31540: FS,A31670,A31670: FS,,Task Dependent,Fixed Duration & Units,
A31670,Not Started,Hercules_15082023-6.CONSTRUCTION.Main Works.Level 3.3.3,1,Level 3 Disconnect E&I Cabling and associated instrumentation to AHUs,18/09/2023 08:00,18/09/2023 17:00,0,-7,A31650,A31650: FS,A31680,A31680: FS,,Task Dependent,Fixed Duration & Units,
A31680,Not Started,Hercules_15082023-6.CONSTRUCTION.Main Works.Level 3.3.3,2,Level 3 Remove AHU Ductwork Connections & associated components HVAC,19/09/2023 08:00,20/09/2023 17:00,0,-7,"A31660, A31670","A31660: FS, A31670: FS",A31690,A31690: FS,,Task Dependent,Fixed Duration & Units,
A33630,Not Started,Hercules_15082023-6.CONSTRUCTION.Main Works.Level 3.3.3,2,Level 3 Galvanized grating modification / adaptation,21/09/2023 08:00,22/09/2023 17:00,0,-7,A31690,A31690: SS,A31700,A31700: FS,,Task Dependent,Fixed Duration & Units,
A31690,Not Started,Hercules_15082023-6.CONSTRUCTION.Main Works.Level 3.3.3,2,Level 3 Remove AHUs HVAC,21/09/2023 08:00,22/09/2023 17:00,0,-7,A31680,A31680: FS,"A5520, A33630","A5520: FF, A33630: SS",,Task Dependent,Fixed Duration & Units,
A5520,Not Started,Hercules_15082023-6.CONSTRUCTION.Main Works.Level 3.3.3,1,Level 3 Remove Atex Fan 240.1,22/09/2023 08:00,22/09/2023 17:00,0,78,A31690,A31690: FF,A5510,A5510: FS,,Task Dependent,Fixed Duration & Units,
A31700,Not Started,Hercules_15082023-6.CONSTRUCTION.Main Works.Level 3.3.3,2,Level 3 Remove HL piping over AHUs HVAC,25/09/2023 08:00,26/09/2023 17:00,0,-7,A33630,A33630: FS,A31710,A31710: FS,,Task Dependent,Fixed Duration & Units,
A31710,Not Started,Hercules_15082023-6.CONSTRUCTION.Main Works.Level 3.3.3,3,Level 3 Remove HL ductwork over AHUs HVAC,27/09/2023 08:00,29/09/2023 17:00,0,-7,A31700,A31700: FS,A31720,A31720: FS,,Task Dependent,Fixed Duration & Units,
A31720,Not Started,Hercules_15082023-6.CONSTRUCTION.Main Works.Level 3.3.3,7,Level 3 Remove HL cabling & containment (main LV distribution),02/10/2023 08:00,10/10/2023 17:00,0,-7,A31710,A31710: FS,"A31970, A32480","A31970: FS, A32480: FS",,Task Dependent,Fixed Duration & Units,
A31730,Not Started,Hercules_15082023-6.CONSTRUCTION.Main Works.Level 3.3.4,1,Technical Space above Lv2 Remove & Reinstal Level 3 Upper Mesh Flooring to Suit Sequencing,20/09/2023 08:00,20/09/2023 17:00,0,-3,"A34140, A31630","A34140: SS, A31630: FS",A31740,A31740: FS,,Task Dependent,Fixed Duration & Units,
A31740,Not Started,Hercules_15082023-6.CONSTRUCTION.Main Works.Level 3.3.4,5,Technical Space above Lv2 Walk on Ceiling Check by Cleanroom Contractor - reinforcement if necesssary,21/09/2023 08:00,27/09/2023 17:00,0,-3,A31730,A31730: FS,A31750,A31750: FS,,Task Dependent,Fixed Duration & Units,
A31750,Not Started,Hercules_15082023-6.CONSTRUCTION.Main Works.Level 3.3.4,0,Technical Space above Lv2 Walk on Ceiling Ready,28/09/2023 08:00,28/09/2023 08:00,0,-3,A31740,A31740: FS,A31760,A31760: FS,,Task Dependent,Fixed Duration & Units,
A31760,Not Started,Hercules_15082023-6.CONSTRUCTION.Main Works.Level 3.3.4,1,Technical Space above Lv2 Walk on Ceiling protection installation,28/09/2023 08:00,28/09/2023 17:00,0,-3,A31750,A31750: FS,A31770,A31770: FS,,Task Dependent,Fixed Duration & Units,
A31770,Not Started,Hercules_15082023-6.CONSTRUCTION.Main Works.Level 3.3.4,5,Technical Space above Lv2 Removal of Cables & Cable Trays,29/09/2023 08:00,05/10/2023 17:00,0,-3,"A31760, A29390","A31760: FS, A29390: FS",A31780,A31780: FS,,Task Dependent,Fixed Duration & Units,
A31780,Not Started,Hercules_15082023-6.CONSTRUCTION.Main Works.Level 3.3.4,5,Technical Space above Lv2 Removal of Ductwork,06/10/2023 08:00,12/10/2023 17:00,0,-3,"A31770, A29390","A31770: FS, A29390: FS",A31790,A31790: FS,,Task Dependent,Fixed Duration & Units,
A31790,Not Started,Hercules_15082023-6.CONSTRUCTION.Main Works.Level 3.3.4,5,Technical Space above Lv2 Removal of pipework,13/10/2023 08:00,19/10/2023 17:00,0,-3,"A31780, A29390, A19070, A18510","A31780: FS, A29390: FS, A19070: FS, A18510: FS","A32280, A32570","A32280: FS, A32570: FS",,Task Dependent,Fixed Duration & Units,
A31890,Not Started,Hercules_15082023-6.CONSTRUCTION.Main Works.Level 3.3.5,1,Technical Space above Lv2 Remove & Reinstal Level 3 Upper Mesh Flooring to Suit Sequencing,20/09/2023 08:00,20/09/2023 17:00,0,-9,"A34140, A31630","A34140: SS, A31630: FS",A31900,A31900: FS,,Task Dependent,Fixed Duration & Units,
A31900,Not Started,Hercules_15082023-6.CONSTRUCTION.Main Works.Level 3.3.5,5,Technical Space above Lv2 Walk on Ceiling Check by Cleanroom Contractor - reinforcement if necesssary,21/09/2023 08:00,27/09/2023 17:00,0,-9,A31890,A31890: FS,A31910,A31910: FS,,Task Dependent,Fixed Duration & Units,
A31910,Not Started,Hercules_15082023-6.CONSTRUCTION.Main Works.Level 3.3.5,0,Technical Space above Lv2 Walk on Ceiling Ready,28/09/2023 08:00,28/09/2023 08:00,0,-9,A31900,A31900: FS,A31920,A31920: FS,,Task Dependent,Fixed Duration & Units,
A31920,Not Started,Hercules_15082023-6.CONSTRUCTION.Main Works.Level 3.3.5,1,Technical Space above Lv2 Walk on Ceiling protection installation,28/09/2023 08:00,28/09/2023 17:00,0,-9,A31910,A31910: FS,A31930,A31930: FS,,Task Dependent,Fixed Duration & Units,
A31930,Not Started,Hercules_15082023-6.CONSTRUCTION.Main Works.Level 3.3.5,5,Technical Space above Lv2 Removal of Cables & Cable Trays,29/09/2023 08:00,05/10/2023 17:00,0,-9,"A31920, A29390","A31920: FS, A29390: FS",A31940,A31940: FS,,Task Dependent,Fixed Duration & Units,
A31940,Not Started,Hercules_15082023-6.CONSTRUCTION.Main Works.Level 3.3.5,5,Technical Space above Lv2 Removal of Ductwork,06/10/2023 08:00,12/10/2023 17:00,0,-9,"A31930, A29390","A31930: FS, A29390: FS",A31950,A31950: FS,,Task Dependent,Fixed Duration & Units,
A31950,Not Started,Hercules_15082023-6.CONSTRUCTION.Main Works.Level 3.3.5,5,Technical Space above Lv2 Removal of pipework,13/10/2023 08:00,19/10/2023 17:00,0,-9,"A31940, A29390, A19070, A18510","A31940: FS, A29390: FS, A19070: FS, A18510: FS","A32170, A32680","A32170: FS, A32680: FS",,Task Dependent,Fixed Duration & Units,
A31800,Not Started,Hercules_15082023-6.CONSTRUCTION.Main Works.Level 3.3.6,1,Level 3 Isolate and draindown pipework,14/09/2023 08:00,14/09/2023 17:00,0,6,"A34140, A31540, A19070, A18510","A34140: SS, A31540: FS, A19070: FS, A18510: FS",A31820,A31820: FS,,Task Dependent,Fixed Duration & Units,
A31810,Not Started,Hercules_15082023-6.CONSTRUCTION.Main Works.Level 3.3.6,2,Level 3 LOTO and perform dead testing on LV distribution,14/09/2023 08:00,15/09/2023 17:00,0,220,A31540,A31540: FS,A31830,A31830: FS,,Task Dependent,Fixed Duration & Units,
A31820,Not Started,Hercules_15082023-6.CONSTRUCTION.Main Works.Level 3.3.6,1,Level 3 Disconnect Utilities Pipework from AHUs,15/09/2023 08:00,15/09/2023 17:00,0,6,"A31800, A19070, A18510","A31800: FS, A19070: FS, A18510: FS",A31840,A31840: FS,,Task Dependent,Fixed Duration & Units,
A31830,Not Started,Hercules_15082023-6.CONSTRUCTION.Main Works.Level 3.3.6,1,Level 3 Disconnect E&I Cabling and associated instrumentation to AHUs,18/09/2023 08:00,18/09/2023 17:00,220,220,A31810,A31810: FS,,,,Task Dependent,Fixed Duration & Units,
A31840,Not Started,Hercules_15082023-6.CONSTRUCTION.Main Works.Level 3.3.6,2,Level 3 Remove AHU Ductwork Connections & associated components HVAC,18/09/2023 08:00,19/09/2023 17:00,0,6,A31820,A31820: FS,A31850,A31850: FS,,Task Dependent,Fixed Duration & Units,
A31850,Not Started,Hercules_15082023-6.CONSTRUCTION.Main Works.Level 3.3.6,2,Level 3 Remove AHUs HVAC,20/09/2023 08:00,21/09/2023 17:00,0,6,A31840,A31840: FS,A5630,A5630: SS,,Task Dependent,Fixed Duration & Units,
A5630,Not Started,Hercules_15082023-6.CONSTRUCTION.Main Works.Level 3.3.6,2,Level 3 Galvanized grating modification / adaptation,20/09/2023 08:00,21/09/2023 17:00,0,6,A31850,A31850: SS,A31860,A31860: FS,,Task Dependent,Fixed Duration & Units,
A31860,Not Started,Hercules_15082023-6.CONSTRUCTION.Main Works.Level 3.3.6,2,Level 3 Remove HL piping over AHUs,22/09/2023 08:00,25/09/2023 17:00,0,6,A5630,A5630: FS,A31870,A31870: FS,,Task Dependent,Fixed Duration & Units,
A31870,Not Started,Hercules_15082023-6.CONSTRUCTION.Main Works.Level 3.3.6,3,Level 3 Remove HL ductwork over AHUs HVAC,26/09/2023 08:00,28/09/2023 17:00,0,6,A31860,A31860: FS,A31880,A31880: FS,,Task Dependent,Fixed Duration & Units,
A31880,Not Started,Hercules_15082023-6.CONSTRUCTION.Main Works.Level 3.3.6,7,Level 3 Remove HL cabling & containment (main LV distribution),29/09/2023 08:00,09/10/2023 17:00,0,6,A31870,A31870: FS,"A32080, A32370","A32080: FS, A32370: FS",,Task Dependent,Fixed Duration & Units,
A32770,Not Started,Hercules_15082023-6.CONSTRUCTION.Main Works.Level 3.5.1,5,Zone 1 AHU BMS Panel Placement (x4),17/11/2023 08:00,23/11/2023 17:00,40,37,"A29430, A32060, A5510","A29430: FF, A32060: FS -4, A5510: FF","A40290, A34210","A40290: FS, A34210: FS",,Task Dependent,Fixed Duration and Units/Time,
A32760,Not Started,Hercules_15082023-6.CONSTRUCTION.Main Works.Level 3.5.1,0,Zone 1 AHU Assembly & Testing (x4),,22/11/2023 17:00,30,29,A32050,A32050: FF,"A32780, A32790","A32780: FS, A32790: FS",,Finish Milestone,Fixed Duration and Units/Time,
A32780,Not Started,Hercules_15082023-6.CONSTRUCTION.Main Works.Level 3.5.1,5,Zone 1 AHU Piping Hook Ups and Testing to AHU,18/01/2024 08:00,24/01/2024 17:00,0,-1,"A32540, A32760","A32540: FS, A32760: FS","A32800, A34260","A32800: FS, A34260: FS",,Task Dependent,Fixed Duration & Units,
A32790,Not Started,Hercules_15082023-6.CONSTRUCTION.Main Works.Level 3.5.1,5,Zone 1 AHU Ducting Hook Up and testing to AHU,18/01/2024 08:00,24/01/2024 17:00,0,11,"A32760, A32540","A32760: FS, A32540: FS",A32800,A32800: FS,,Task Dependent,Fixed Duration & Units,
A32800,Not Started,Hercules_15082023-6.CONSTRUCTION.Main Works.Level 3.5.1,2,Zone 1 AHU Instrument Installations,25/01/2024 08:00,26/01/2024 17:00,0,11,"A32780, A32790","A32780: FS, A32790: FS","A34180, A32810","A34180: FS, A32810: FS",,Task Dependent,Fixed Duration & Units,
A32810,Not Started,Hercules_15082023-6.CONSTRUCTION.Main Works.Level 3.5.1,10,Zone 1 AHU Cabling and containment to AHU and associated components,29/01/2024 08:00,09/02/2024 17:00,0,51,A32800,A32800: FS,A32820,A32820: FS,,Task Dependent,Fixed Duration & Units,
A32820,Not Started,Hercules_15082023-6.CONSTRUCTION.Main Works.Level 3.5.1,10,Zone 1 AHU Electrical Terminations and Testing,12/02/2024 08:00,23/02/2024 17:00,0,51,A32810,A32810: FS,A32840,A32840: FF,,Task Dependent,Fixed Duration & Units,
A32840,Not Started,Hercules_15082023-6.CONSTRUCTION.Main Works.Level 3.5.1,0,Zone 1 AHU CC,,23/02/2024 17:00,0,51,A32820,A32820: FF,"A34160, A7550","A34160: FF, A7550: FS",,Finish Milestone,Fixed Duration and Units/Time,
A33480,Not Started,Hercules_15082023-6.CONSTRUCTION.Main Works.Level 3.5.11,0,Zone 3 AHU Assembly & Testing (x4),24/01/2024 08:00,24/01/2024 08:00,0,-3,A32650,A32650: FS,"A33500, A33510","A33500: FS, A33510: FS",,Task Dependent,Fixed Duration and Units/Time,
A33500,Not Started,Hercules_15082023-6.CONSTRUCTION.Main Works.Level 3.5.11,2,Zone 3 AHU Piping Hook Ups and Testing to AHU,24/01/2024 08:00,25/01/2024 17:00,0,-3,"A32650, A33480","A32650: FS, A33480: FS","A33560, A7560, A34260","A33560: FF, A7560: FS, A34260: FS",,Task Dependent,Fixed Duration & Units,
A33510,Not Started,Hercules_15082023-6.CONSTRUCTION.Main Works.Level 3.5.11,3,Zone 3 AHU Ducting Hook Up and testing to AHU,24/01/2024 08:00,26/01/2024 17:00,8,11,"A32650, A33480","A32650: FS, A33480: FS",A33560,A33560: FF,,Task Dependent,Fixed Duration & Units,
A33490,Not Started,Hercules_15082023-6.CONSTRUCTION.Main Works.Level 3.5.11,0,Zone 3 AHU BMS Panel Placement (x4),25/01/2024 08:00,25/01/2024 08:00,0,3,"A32660, A5510","A32660: FF -4, A5510: FS","A40290, A33520, A34210","A40290: FS, A33520: FS, A34210: FS",,Task Dependent,Fixed Duration and Units/Time,
A33520,Not Started,Hercules_15082023-6.CONSTRUCTION.Main Works.Level 3.5.11,2,Zone 3 AHU Instrument Installations,25/01/2024 08:00,26/01/2024 17:00,0,3,A33490,A33490: FS,"A34180, A33530","A34180: FS, A33530: FS",,Task Dependent,Fixed Duration & Units,
A33530,Not Started,Hercules_15082023-6.CONSTRUCTION.Main Works.Level 3.5.11,4,Zone 3 AHU Cabling and containment to AHU and associated components,29/01/2024 08:00,01/02/2024 17:00,0,3,A33520,A33520: FS,A33540,A33540: FS,,Task Dependent,Fixed Duration & Units,
A33540,Not Started,Hercules_15082023-6.CONSTRUCTION.Main Works.Level 3.5.11,4,Zone 3 AHU Electrical Terminations and Testing,02/02/2024 08:00,07/02/2024 17:00,0,3,A33530,A33530: FS,A33560,A33560: FF,,Task Dependent,Fixed Duration & Units,
A33560,Not Started,Hercules_15082023-6.CONSTRUCTION.Main Works.Level 3.5.11,0,Zone 3 AHU CC,,07/02/2024 17:00,0,3,"A33540, A33500, A33510","A33540: FF, A33500: FF, A33510: FF","A34160, A34280","A34160: FF, A34280: FS",,Finish Milestone,Fixed Duration and Units/Time,
A33390,Not Started,Hercules_15082023-6.CONSTRUCTION.Main Works.Level 3.5.13,0,Zone 4 AHU Assembly & Testing (x2),,24/01/2024 17:00,0,3,A32450,A32450: FS,"A33410, A33420","A33410: FS, A33420: FS",,Finish Milestone,Fixed Duration and Units/Time,
A33410,Not Started,Hercules_15082023-6.CONSTRUCTION.Main Works.Level 3.5.13,5,Zone 4 AHU Piping Hook Ups and Testing to AHU,25/01/2024 08:00,31/01/2024 17:00,1,3,A33390,A33390: FS,A33430,A33430: FS,,Task Dependent,Fixed Duration & Units,
A33420,Not Started,Hercules_15082023-6.CONSTRUCTION.Main Works.Level 3.5.13,5,Zone 4 AHU Ducting Hook Up and testing to AHU,25/01/2024 08:00,31/01/2024 17:00,1,3,A33390,A33390: FS,A33430,A33430: FS,,Task Dependent,Fixed Duration & Units,
A33400,Not Started,Hercules_15082023-6.CONSTRUCTION.Main Works.Level 3.5.13,5,Zone 4 AHU BMS Panel Placement (x2),26/01/2024 08:00,01/02/2024 17:00,0,-3,"A32460, A5510","A32460: FS -4, A5510: FF","A40290, A33430, A34210","A40290: FS, A33430: FS, A34210: FS",,Task Dependent,Fixed Duration and Units/Time,
A33430,Not Started,Hercules_15082023-6.CONSTRUCTION.Main Works.Level 3.5.13,5,Zone 4 AHU Instrument Installations,02/02/2024 08:00,08/02/2024 17:00,0,2,"A33400, A33420, A33410","A33400: FS, A33420: FS, A33410: FS","A34180, A33440","A34180: FS, A33440: FS",,Task Dependent,Fixed Duration & Units,
A33440,Not Started,Hercules_15082023-6.CONSTRUCTION.Main Works.Level 3.5.13,5,Zone 4 AHU Cabling and containment to AHU and associated components,09/02/2024 08:00,15/02/2024 17:00,0,51,A33430,A33430: FS,A33450,A33450: FS,,Task Dependent,Fixed Duration & Units,
A33450,Not Started,Hercules_15082023-6.CONSTRUCTION.Main Works.Level 3.5.13,6,Zone 4 AHU Electrical Terminations and Testing,16/02/2024 08:00,23/02/2024 17:00,0,51,A33440,A33440: FS,A33470,A33470: FF,,Task Dependent,Fixed Duration & Units,
A33470,Not Started,Hercules_15082023-6.CONSTRUCTION.Main Works.Level 3.5.13,0,Zone 4 AHU CC,,23/02/2024 17:00,0,51,A33450,A33450: FF,"A34160, A34290","A34160: FF, A34290: FS",,Finish Milestone,Fixed Duration and Units/Time,
A33040,Not Started,Hercules_15082023-6.CONSTRUCTION.Main Works.Level 3.5.7,5,Zone 2 AHU BMS Panel Placement (x8),22/11/2023 08:00,29/11/2023 08:00,37,34,"A32260, A5510","A32260: FF -4, A5510: FF","A40290, A34210","A40290: FS, A34210: FS",,Task Dependent,Fixed Duration and Units/Time,
A33030,Not Started,Hercules_15082023-6.CONSTRUCTION.Main Works.Level 3.5.7,0,Zone 2 AHU Assembly & Testing (x8),,04/12/2023 17:00,25,16,A32250,A32250: FF,"A33050, A33060","A33050: FS, A33060: FS",,Finish Milestone,Fixed Duration and Units/Time,
A33050,Not Started,Hercules_15082023-6.CONSTRUCTION.Main Works.Level 3.5.7,10,Zone 2 AHU Piping Hook Ups and Testing to AHU,23/01/2024 08:00,05/02/2024 17:00,0,-9,"A32250, A32750, A33030","A32250: FS, A32750: FS, A33030: FS","A33070, A34260","A33070: FS, A34260: FS",,Task Dependent,Fixed Duration & Units,
A33060,Not Started,Hercules_15082023-6.CONSTRUCTION.Main Works.Level 3.5.7,15,Zone 2 AHU Ducting Hook Up and testing to AHU,23/01/2024 08:00,12/02/2024 17:00,0,-4,"A32250, A32750, A33030","A32250: FS, A32750: FS, A33030: FS",A33070,A33070: FS,,Task Dependent,Fixed Duration & Units,
A33070,Not Started,Hercules_15082023-6.CONSTRUCTION.Main Works.Level 3.5.7,4,Zone 2 AHU Instrument Installations,13/02/2024 08:00,16/02/2024 17:00,0,-4,"A33050, A33060","A33050: FS, A33060: FS","A34180, A33080","A34180: FS, A33080: FS",,Task Dependent,Fixed Duration & Units,
A33080,Not Started,Hercules_15082023-6.CONSTRUCTION.Main Works.Level 3.5.7,10,Zone 2 AHU Cabling and containment to AHU and associated components,19/02/2024 08:00,01/03/2024 17:00,0,38,A33070,A33070: FS,A33090,A33090: FS,,Task Dependent,Fixed Duration & Units,
A33090,Not Started,Hercules_15082023-6.CONSTRUCTION.Main Works.Level 3.5.7,8,Zone 2 AHU Electrical Terminations and Testing,04/03/2024 08:00,13/03/2024 17:00,0,38,A33080,A33080: FS,A33110,A33110: FF,,Task Dependent,Fixed Duration & Units,
A33110,Not Started,Hercules_15082023-6.CONSTRUCTION.Main Works.Level 3.5.7,0,Zone 2 AHU CC,,13/03/2024 17:00,0,38,A33090,A33090: FF,"A34160, A34270","A34160: FF, A34270: FS",,Finish Milestone,Fixed Duration and Units/Time,
A40440,Not Started,Hercules_15082023-6.CONSTRUCTION.Main Works.Level 4,5,Level 4 Limited shutdown OOH (FELD 2 to HVAC board),29/09/2023 08:00,05/10/2023 17:00,207,207,,,,,Start On or After,Task Dependent,Fixed Duration & Units,
A40450,Not Started,Hercules_15082023-6.CONSTRUCTION.Main Works.Level 4,5,Level 4 Shutdown FELD 2 to FELD 5 + 6,29/09/2023 08:00,05/10/2023 17:00,207,207,,,,,Start On or After,Task Dependent,Fixed Duration & Units,
A4780,Completed,Hercules_15082023-6.DESIGN.3D,6,3D model 30%,02/11/2022 08:00,09/11/2022 16:00,,,A1000,A1000: SS,A4790,A4790: FS,,Task Dependent,Fixed Duration & Units,
A4790,Completed,Hercules_15082023-6.DESIGN.3D,49,3D model 60%,10/11/2022 08:00,31/01/2023 16:00,,,A4780,A4780: FS,A4800,A4800: FS,,Task Dependent,Fixed Duration & Units,
A4800,Completed,Hercules_15082023-6.DESIGN.3D,25,3D model 90%,01/02/2023 08:00,07/03/2023 16:00,,,A4790,A4790: FS,,,,Task Dependent,Fixed Duration & Units,
A29310,In Progress,Hercules_15082023-6.DESIGN.DD,176,Detailed Design - GMS,05/12/2022 08:00,29/08/2023 08:00,0,2,A21880,A21880: FS,"A18570, A21890","A18570: FS, A21890: FS",,Task Dependent,Fixed Duration & Units,
A29330,Completed,Hercules_15082023-6.DESIGN.DD,4,Detailed Design - Structural (for Enabling Works package),26/05/2023 08:00,01/06/2023 17:00,,,"A28290, A31120","A28290: FS, A31120: FS",A28300,A28300: FF,,Task Dependent,Fixed Duration & Units,
A7520,Not Started,Hercules_15082023-6.DESIGN.DD,0,Detailed Design - Cleanrooms,29/08/2023 08:00,29/08/2023 08:00,0,14,"A18210, A31090","A18210: FS, A31090: FS",A29360,A29360: FS,,Task Dependent,Fixed Duration & Units,
A29250,Not Started,Hercules_15082023-6.DESIGN.DD,0,Detailed Design - HVAC,29/08/2023 08:00,29/08/2023 08:00,0,24,"A18380, A31140","A18380: FS, A31140: FS",A19050,A19050: FS,,Task Dependent,Fixed Duration & Units,
A29260,Not Started,Hercules_15082023-6.DESIGN.DD,0,Detailed Design - Clean Utilities Pipework,29/08/2023 08:00,29/08/2023 08:00,0,14,"A18270, A31130","A18270: FS, A31130: FS",A18280,A18280: FS,,Task Dependent,Fixed Duration & Units,
A29270,Not Started,Hercules_15082023-6.DESIGN.DD,0,Detailed Design - E&I (Install),29/08/2023 08:00,29/08/2023 08:00,0,28,"A18430, A31170","A18430: FS, A31170: FS",A29410,A29410: FS,,Task Dependent,Fixed Duration & Units,
A29320,Not Started,Hercules_15082023-6.DESIGN.DD,0,Detailed Design - Architectural Fit-Out,29/08/2023 08:00,29/08/2023 08:00,0,11,"A18150, A31100","A18150: FS, A31100: FS",A29370,A29370: FS,,Task Dependent,Fixed Duration & Units,
A29350,Not Started,Hercules_15082023-6.DESIGN.DD,0,Detailed Design - BMS,29/08/2023 08:00,29/08/2023 08:00,0,40,A18560,A18560: FS,"A18570, A29430","A18570: FS, A29430: FS",,Task Dependent,Fixed Duration & Units,
A29380,Not Started,Hercules_15082023-6.DESIGN.DD,0,Detailed Design - Plant Utilities Pipework,29/08/2023 08:00,29/08/2023 08:00,0,14,"A18330, A31150","A18330: FS, A31150: FS",A19060,A19060: FS,,Task Dependent,Fixed Duration & Units,
A29340,Not Started,Hercules_15082023-6.DESIGN.DD,20,Detailed Design - Sprinklers Fire Protection System,29/08/2023 08:00,25/09/2023 17:00,0,215,A28350,A28350: FS,A28360,A28360: FS,,Task Dependent,Fixed Duration & Units,
A29300,Not Started,Hercules_15082023-6.DESIGN.DD,20,Detailed Design - EMS/DLS system integration,06/10/2023 08:00,02/11/2023 17:00,0,2,A29230,A29230: FS,A29420,A29420: FS,,Task Dependent,Fixed Duration & Units,
A31090,Completed,Hercules_15082023-6.DESIGN.IFC,54,IFC Cleanrooms,22/12/2022 08:00,22/03/2023 08:00,,,A31020,A31020: FS,"A7520, A4770","A7520: FS, A4770: FF",,Task Dependent,Fixed Duration & Units,
A33570,Completed,Hercules_15082023-6.DESIGN.IFC,69,IFC Sprinklers,02/01/2023 08:00,17/04/2023 16:00,,,A31000,A31000: FS,A4770,A4770: FF,,Task Dependent,Fixed Duration & Units,
A31100,Completed,Hercules_15082023-6.DESIGN.IFC,46,IFC Architectural Fit - Out & Builders work,17/01/2023 08:00,22/03/2023 08:00,,,A31010,A31010: FS,"A29320, A4770","A29320: FS, A4770: FF",,Task Dependent,Fixed Duration & Units,
A31130,Completed,Hercules_15082023-6.DESIGN.IFC,32,IFC Clean Utilities,06/02/2023 08:00,22/03/2023 08:00,,,A30970,A30970: FS,"A29260, A4770","A29260: FS, A4770: FF",,Task Dependent,Fixed Duration & Units,
A31120,Completed,Hercules_15082023-6.DESIGN.IFC,26,IFC Structural,07/02/2023 08:00,15/03/2023 08:00,,,A4830,A4830: FS,"A29330, A4770","A29330: FS, A4770: FF",,Task Dependent,Fixed Duration & Units,
A31150,Completed,Hercules_15082023-6.DESIGN.IFC,34,IFC Plant Utilities,21/02/2023 08:00,11/04/2023 16:00,,,A31040,A31040: FS,"A29380, A4770","A29380: FS, A4770: FF",,Task Dependent,Fixed Duration & Units,
A33580,Completed,Hercules_15082023-6.DESIGN.IFC,45,IFC BMS,21/02/2023 08:00,26/04/2023 16:00,,,,,,,,Task Dependent,Fixed Duration & Units,
A31140,Completed,Hercules_15082023-6.DESIGN.IFC,45,IFC HVAC,21/02/2023 08:00,26/04/2023 16:00,,,A31030,A31030: FS,"A29250, A4770","A29250: FS, A4770: FF",,Task Dependent,Fixed Duration & Units,
A31170,Completed,Hercules_15082023-6.DESIGN.IFC,21,IFC E&I (Install),24/02/2023 08:00,27/03/2023 08:00,,,A30980,A30980: FS,"A29270, A4770","A29270: FS, A4770: FF",,Task Dependent,Fixed Duration & Units,
A30990,Completed,Hercules_15082023-6.DESIGN.IFT,0,IFT Automation (EMS / DLS),21/12/2022 00:00,21/12/2022 08:00,,,A1000,A1000: SS,A29190,A29190: FS,,Task Dependent,Fixed Duration & Units,
A31000,Completed,Hercules_15082023-6.DESIGN.IFT,0,IFT Sprinklers,21/12/2022 00:00,21/12/2022 08:00,,,A1000,A1000: SS,"A28310, A33570","A28310: FS, A33570: FS",,Task Dependent,Fixed Duration & Units,
A31020,Completed,Hercules_15082023-6.DESIGN.IFT,0,IFT Cleanrooms,21/12/2022 00:00,21/12/2022 08:00,,,A1000,A1000: SS,"A18170, A31090","A18170: FS, A31090: FS",,Task Dependent,Fixed Duration & Units,
A31010,Completed,Hercules_15082023-6.DESIGN.IFT,8,IFT Architectural Fit - Out & Builders work,21/12/2022 00:00,16/01/2023 08:00,,,A1000,A1000: SS,"A18110, A31100","A18110: FS, A31100: FS",,Task Dependent,Fixed Duration & Units,
A31060,Completed,Hercules_15082023-6.DESIGN.IFT,13,IFT GMS,21/12/2022 00:00,23/01/2023 08:00,,,A1000,A1000: SS,A21840,A21840: FS,,Task Dependent,Fixed Duration & Units,
A4830,Completed,Hercules_15082023-6.DESIGN.IFT,23,IFT Structural,21/12/2022 00:00,06/02/2023 08:00,,,A1000,A1000: SS,"A4840, A31120","A4840: FF, A31120: FS",,Task Dependent,Fixed Duration & Units,
A30970,Completed,Hercules_15082023-6.DESIGN.IFT,23,IFT Clean Utilities,21/12/2022 00:00,06/02/2023 08:00,,,A1000,A1000: SS,"A18230, A31130","A18230: FS, A31130: FS",,Task Dependent,Fixed Duration & Units,
A31030,Completed,Hercules_15082023-6.DESIGN.IFT,33,IFT HVAC,21/12/2022 00:00,20/02/2023 08:00,,,A1000,A1000: SS,"A18340, A31140","A18340: FS, A31140: FS",,Task Dependent,Fixed Duration & Units,
A31040,Completed,Hercules_15082023-6.DESIGN.IFT,33,IFT Plant Utilities,21/12/2022 00:00,20/02/2023 08:00,,,A1000,A1000: SS,"A18290, A31150","A18290: FS, A31150: FS",,Task Dependent,Fixed Duration & Units,
A31050,Completed,Hercules_15082023-6.DESIGN.IFT,33,IFT BMS,21/12/2022 00:00,20/02/2023 08:00,,,A1000,A1000: SS,A18520,A18520: FS,,Task Dependent,Fixed Duration & Units,
A30980,Completed,Hercules_15082023-6.DESIGN.IFT,36,IFT E&I (Install),21/12/2022 00:00,23/02/2023 08:00,,,A1000,A1000: SS,"A18390, A31170","A18390: FS, A31170: FS",,Task Dependent,Fixed Duration & Units,
A1000,Completed,Hercules_15082023-6.MILESTONES,0,Project start,01/11/2022 08:00,,,,,,"A4780, A4830, A4850, A30970, A30980, A30990, A31000, A31010, A31020, A31030, A31040, A31050, A31060","A4780: SS, A4830: SS, A4850: SS, A30970: SS, A30980: SS, A30990: SS, A31000: SS, A31010: SS, A31020: SS, A31030: SS, A31040: SS, A31050: SS, A31060: SS",,Start Milestone,Fixed Duration and Units/Time,
A4840,Completed,Hercules_15082023-6.MILESTONES,0,IFT Complete,,28/02/2023 08:00,,,A4830,A4830: FF,,,,Finish Milestone,Fixed Duration and Units/Time,
A4770,Completed,Hercules_15082023-6.MILESTONES,0,IFC Complete,,26/04/2023 08:00,,,"A31140, A31090, A31100, A31120, A31130, A31150, A31170, A33570","A31140: FF, A31090: FF, A31100: FF, A31120: FF, A31130: FF, A31150: FF, A31170: FF, A33570: FF",,,,Finish Milestone,Fixed Duration and Units/Time,
A31370,Completed,Hercules_15082023-6.MILESTONES,1,End of Production JnJ (LVHD Unit B),08/06/2023 08:00,08/06/2023 16:00,,,,,"A31380, 3, A34300, A33590","A31380: FF, 3: FF, A34300: FS 1, A33590: FS 1",,Task Dependent,Fixed Duration and Units/Time,
A33600,Completed,Hercules_15082023-6.MILESTONES,15,Un-qualification phase of cleanrooms,26/06/2023 08:00,14/07/2023 17:00,,,"A31380, A5230","A31380: FS -4, A5230: FS -4","A34130, A34140","A34130: SS, A34140: FS",,Task Dependent,Fixed Duration and Units/Time,
A5230,Completed,Hercules_15082023-6.MILESTONES,1,End of Production JnJ (ExPEC Unit A),30/06/2023 08:00,30/06/2023 16:00,,,,,"3, A33600, A34300, A33590","3: FF, A33600: FS -4, A34300: FS 1, A33590: FS 1",,Task Dependent,Fixed Duration and Units/Time,
A31380,Completed,Hercules_15082023-6.MILESTONES,1,End of Production JnJ (Fill & Finish Unit C),30/06/2023 08:00,30/06/2023 16:00,,,A31370,A31370: FF,"3, A33600, A34300, A33590","3: FF, A33600: FS -4, A34300: FS 1, A33590: FS 1",,Task Dependent,Fixed Duration and Units/Time,
A33590,Completed,Hercules_15082023-6.MILESTONES,5,Calibration of instrumentation,03/07/2023 08:00,07/07/2023 17:00,,,"A31380, A5230, A31370","A31380: FS 1, A5230: FS 1, A31370: FS 1","A34140, 4, A34130, A34370","A34140: FS, 4: FF, A34130: FS 1, A34370: FS 1",,Task Dependent,Fixed Duration and Units/Time,
A34300,Completed,Hercules_15082023-6.MILESTONES,20,Un-qualification phase of process equipment,03/07/2023 08:00,28/07/2023 17:00,,,"A31380, A5230, A31370","A31380: FS 1, A5230: FS 1, A31370: FS 1",A1040,A1040: FS,,Task Dependent,Fixed Duration and Units/Time,
A34370,Completed,Hercules_15082023-6.MILESTONES,5,Measurement of Ventillation flows in ducts,10/07/2023 08:00,14/07/2023 17:00,,,A33590,A33590: FS 1,A33610,A33610: FF 3,,Task Dependent,Fixed Duration and Units/Time,
A34130,Completed,Hercules_15082023-6.MILESTONES,14,Un-qualification phase of clean utilities,10/07/2023 08:00,27/07/2023 17:00,,,"A33600, A33590","A33600: SS, A33590: FS 1",A1040,A1040: FS,,Task Dependent,Fixed Duration and Units/Time,
A33610,Completed,Hercules_15082023-6.MILESTONES,0,Shutdown of AHUs HVAC,,14/07/2023 17:00,,,A34370,A34370: FF 3,A34140,A34140: FS,,Finish Milestone,Fixed Duration and Units/Time,
A34140,Completed,Hercules_15082023-6.MILESTONES,0,Construction Start (Level 3 Only),04/08/2023 08:00,,,,"A7680, A33600, A33590, A33610","A7680: FS, A33600: FS, A33590: FS, A33610: FS","A5510, A31480, A31640, A31730, A31800, A31890, A31570, A40400, A40460","A5510: SS, A31480: SS, A31640: SS, A31730: SS, A31800: SS, A31890: SS, A31570: SS, A40400: SS, A40460: SS",Start On or After,Start Milestone,Fixed Duration and Units/Time,
A1040,Completed,Hercules_15082023-6.MILESTONES,0,Construction Start (Others),14/08/2023 08:00,,,,"A34130, A1030, A34300","A34130: FS, A1030: FS, A34300: FS","A3910, A4080, A4260, A4360, A4470, A4610, A4630, A4670, A4710, A4750, A6220, A6210, A6230, A6190, A6200, A6390, A6400, A6410, A6420, A6430, A6440, A6450, A6460, A6470, A6480, A6500, A6680, A6360, A6370, A6350, A6560, A6240, A6490, A6630, A6640, A6540, A6550, A6570, A6580, A6590, A6600, A6610, A6620, A6690, A6650, A6660, A6670, A6270, A6260, A6250, A6700, A6710, A6380, A6310, A6320, A6330, A6280, A6290, A6300, A6520, A6530, A6510, A6720, A1190, A7710, A1670, A1630, A2120, A1690, A1700, A1840, A1980, A2150, A2160, A2140, A2170, A2180, A2190, A2200, A1170, A1050, A2100, A1620, A1820, A2210, A2390, A2490, A2600, A2610, A2630, A2910, A3070, A3090, A3100, A3120, A3230, A3240, A3260, A3280, A3300, A3330, A3370, A3480, A3640, A3650, A3710, A3740, A3820, A4910, 20, A4900, A29570, A5080, A40400, A40410","A3910: SS, A4080: SS, A4260: SS, A4360: SS, A4470: SS, A4610: SS, A4630: SS, A4670: SS, A4710: SS, A4750: SS, A6220: SS, A6210: SS, A6230: SS, A6190: SS, A6200: SS, A6390: SS, A6400: SS, A6410: SS, A6420: SS, A6430: SS, A6440: SS, A6450: SS, A6460: SS, A6470: SS, A6480: SS, A6500: SS, A6680: SS, A6360: SS, A6370: SS, A6350: SS, A6560: SS, A6240: SS, A6490: SS, A6630: SS, A6640: SS, A6540: SS, A6550: SS, A6570: SS, A6580: SS, A6590: SS, A6600: SS, A6610: SS, A6620: SS, A6690: SS, A6650: SS, A6660: SS, A6670: SS, A6270: SS, A6260: SS, A6250: SS, A6700: SS, A6710: SS, A6380: SS, A6310: SS, A6320: SS, A6330: SS, A6280: SS, A6290: SS, A6300: SS, A6520: SS, A6530: SS, A6510: SS, A6720: SS, A1190: SS, A7710: SS, A1670: SS, A1630: SS, A2120: SS, A1690: SS, A1700: SS, A1840: SS, A1980: SS, A2150: SS, A2160: SS, A2140: SS, A2170: SS, A2180: SS, A2190: SS, A2200: SS, A1170: SS, A1050: SS, A2100: SS, A1620: SS, A1820: SS, A2210: SS, A2390: SS, A2490: SS, A2600: SS, A2610: SS, A2630: SS, A2910: SS, A3070: SS, A3090: SS, A3100: SS, A3120: SS, A3230: SS, A3240: SS, A3260: SS, A3280: SS, A3300: SS, A3330: SS, A3370: SS, A3480: SS, A3640: SS, A3650: SS, A3710: SS, A3740: SS, A3820: SS, A4910: SS -2, 20: SS, A4900: SS, A29570: SF, A5080: SS, A40400: SS, A40410: SS",,Start Milestone,Fixed Duration and Units/Time,
A31180,Not Started,Hercules_15082023-6.MILESTONES,0,Mechanical Completion Finish (only MC Fermenter),,09/02/2024 16:00,38,126,"A1260, A1270, A1280, A1420, A1460, A1470, A7930","A1260: FF, A1270: FF, A1280: FF, A1420: FF, A1460: FF, A1470: FF, A7930: FF",A1660,A1660: FF,,Finish Milestone,Fixed Duration and Units/Time,
A4930,Not Started,Hercules_15082023-6.MILESTONES,0,Mechanical Completion Finish (ALL MC's)  HVAC driver,,27/03/2024 17:00,5,93,"A30800, A30820, A30830, A30840, A30850, A30860, A30870, A30880, A30890, A30900, A30910, A30940, A7360, A7370, A7380, A7390, A7400, A7410, A7420, A7430, A7440, A7450, A7460, A7470, A7480, A7490, A7500, A7510, A7670, A7910, A7920, A6160, 27","A30800: FF, A30820: FF, A30830: FF, A30840: FF, A30850: FF, A30860: FF, A30870: FF, A30880: FF, A30890: FF, A30900: FF, A30910: FF, A30940: FF, A7360: FF, A7370: FF, A7380: FF, A7390: FF, A7400: FF, A7410: FF, A7420: FF, A7430: FF, A7440: FF, A7450: FF, A7460: FF, A7470: FF, A7480: FF, A7490: FF, A7500: FF, A7510: FF, A7670: FF, A7910: FF, A7920: FF, A6160: FF, 27: FF",A1660,A1660: FF,,Finish Milestone,Fixed Duration and Units/Time,
A1660,Not Started,Hercules_15082023-6.MILESTONES,0,Construction Finish (incl HVAC balancing),,05/04/2024 17:00,88,88,"A21750, A4930, A31180, A1610, A5060, A33750, A29560, A5120, A1650, A1680, A2130, A1800, A1970, A2090, A2140, A2180, A1160, A2110, A1830, A2380, A2480, A2590, A2620, A2900, A3270, A3290, A3310, A3360, A3470, A3630, A3700, A3730, A3810, A3900, A4070, A4250, A4350, A4460, A4600, A4660, A4620, A4700, A4740, A2100, A3260, A3090, A2200, A2190, A2170, A2160, A2150, A2100, A1620, A3640, A1170, A3260, A3230, A3090, A3250, A3240, A3110, A3100, A3070, A3350, A3340, A3080, A3220, A3060, A2600","A21750: FF, A4930: FF, A31180: FF, A1610: FF, A5060: FF, A33750: FF, A29560: FF, A5120: FF, A1650: FF, A1680: FF, A2130: FF, A1800: FF, A1970: FF, A2090: FF, A2140: FF, A2180: FF, A1160: FF, A2110: FF, A1830: FF, A2380: FF, A2480: FF, A2590: FF, A2620: FF, A2900: FF, A3270: FF, A3290: FF, A3310: FF, A3360: FF, A3470: FF, A3630: FF, A3700: FF, A3730: FF, A3810: FF, A3900: FF, A4070: FF, A4250: FF, A4350: FF, A4460: FF, A4600: FF, A4660: FF, A4620: FF, A4700: FF, A4740: FF, A2100: FF, A3260: FF, A3090: FF, A2200: FF, A2190: FF, A2170: FF, A2160: FF, A2150: FF, A2100: SF, A1620: FF, A3640: FF, A1170: FF, A3260: SF, A3230: FF, A3090: SF, A3250: FF, A3240: FF, A3110: FF, A3100: FF, A3070: FF, A3350: FF, A3340: FF, A3080: FF, A3220: FF, A3060: FF, A2600: FF",,,,Finish Milestone,Fixed Duration and Units/Time,
A31190,Not Started,Hercules_15082023-6.MILESTONES,0,First IOQ,17/04/2024 08:00,,81,81,"JCQV1040, JCQV1140, JCQV1380, JCQV1620, JCQV1560, JCQV1450, JCQV1590, JCQV1600, JCQV1260, JCQV1460, JCQV1640","JCQV1040: SS, JCQV1140: SS, JCQV1380: SS, JCQV1620: SS, JCQV1560: SS, JCQV1450: SS, JCQV1590: SS, JCQV1600: SS, JCQV1260: SS, JCQV1460: SS, JCQV1640: SS",,,,Start Milestone,Fixed Duration and Units/Time,
JCQV2400,Not Started,Hercules_15082023-6.MILESTONES,0,[MS] GMP Readiness - F&F,,12/07/2024 17:00,20,20,JCQV2350,JCQV2350: FS,,,,Finish Milestone,Fixed Duration and Units/Time,
JCQV2460,Not Started,Hercules_15082023-6.MILESTONES,0,[MS] GMP Readiness - LVHD,,13/08/2024 17:00,0,0,JCQV2230,JCQV2230: FS,,,,Finish Milestone,Fixed Duration and Units/Time,
A31400,Not Started,Hercules_15082023-6.MILESTONES,0,[MS] GMP Readiness - ExPec,,13/08/2024 17:00,0,0,JCQV2220,JCQV2220: FS,,,,Finish Milestone,Fixed Duration and Units/Time,
JCQV2380,Not Started,Hercules_15082023-6.MILESTONES,0,[MS] Project Completion,,13/08/2024 17:00,0,-9,"JCQV1110, JCQV1470, JCQV1790, JCQV1550, JCQV1660, JCQV1850, JCQV1970, JCQV2340, JCQV2360, JCQV2140, JCQV2160, JCQV2180, JCQV2230, JCQV2220, JCQV2240","JCQV1110: FS, JCQV1470: FS, JCQV1790: FS, JCQV1550: FS, JCQV1660: FS, JCQV1850: FS, JCQV1970: FS, JCQV2340: FS, JCQV2360: FS, JCQV2140: FS, JCQV2160: FS, JCQV2180: FF, JCQV2230: FS, JCQV2220: FS, JCQV2240: FS",,,Finish On or Before,Finish Milestone,Fixed Duration and Units/Time,
A40370,Not Started,Hercules_15082023-6.PROCUREMENT,0,Delivery of HVAC LV Board (January 24) + 4 weeks for MC,22/12/2023 08:00,22/12/2023 08:00,152,152,A40550,A40550: FS,,,Start On or After,Task Dependent,Fixed Duration & Units,
A18110,Completed,Hercules_15082023-6.PROCUREMENT.2.1,1,Architectural Fit-Out Package Issue for Tender,24/02/2023 08:00,24/02/2023 17:00,,,A31010,A31010: FS,A18120,A18120: FS,,Task Dependent,Fixed Duration & Units,
A18120,Completed,Hercules_15082023-6.PROCUREMENT.2.1,29,Architectural Fit-Out Contractor Tender Period,24/02/2023 08:00,05/04/2023 16:00,,,A18110,A18110: FS,A18130,A18130: FS,,Task Dependent,Fixed Duration & Units,
A18130,Completed,Hercules_15082023-6.PROCUREMENT.2.1,27,Architectural Fit-Out Clarification Period,06/04/2023 08:00,17/05/2023 17:00,,,A18120,A18120: FS,A18140,A18140: FS,,Task Dependent,Fixed Duration & Units,
A18140,Completed,Hercules_15082023-6.PROCUREMENT.2.1,23,Architectural Fit-Out Tender report and Contractor recommendation,18/05/2023 08:00,20/06/2023 17:00,,,A18130,A18130: FS,A18150,A18150: FS,,Task Dependent,Fixed Duration & Units,
A18150,Completed,Hercules_15082023-6.PROCUREMENT.2.1,18,Architectural Fit-Out SISK Raise Contract on Contractor,21/06/2023 08:00,14/07/2023 17:00,,,A18140,A18140: FS,"A18160, A29320","A18160: FS, A29320: FS",,Task Dependent,Fixed Duration & Units,
A18160,Completed,Hercules_15082023-6.PROCUREMENT.2.1,11,Architectural Fit-Out Mobilisation to start work,17/07/2023 08:00,31/07/2023 16:00,,,A18150,A18150: FS,"A3240, A3260, A3280, A3300, A3330, A3350, A3370, A3460, A3490, A3510, A3530, A3630, A3650, A3690, A3700, A3710, A3720, A3730, A3740, A1630, A2120, A7710, A1720, A1730, A1740, A1880, A1890, A1910, A1980, A2060, A2080, A1170, A1070, A1080, A1110, A1250, A1310, A1360, A1370, A2100, A1820, A2210, A2240, A2340, A2360, A2390, A2450, A2460, A2500, A2560, A2570, A2580, A2610, A2630, A2690, A2750, A2770, A2910, A2990, A3050, A3100, A3120, A3140, A3170, A3790, A3810, A3820, A3850, A3890, A3900, A3920, A3940, A3960, A4070, A4080, A4140, A4180, A4250, A4260, A4280, A4300, A4350, A4360, A4380, A4430, A4460, A4470, A4550, A4600, A4610, A4620, A4630, A4640, A4660, A4670, A4690, A4700, A4710, A4720, A4740, A4750, A4760, A40410","A3240: FS, A3260: FS, A3280: FS, A3300: FS, A3330: FS, A3350: FS, A3370: FS, A3460: FS, A3490: FS, A3510: FS, A3530: FS, A3630: FS, A3650: FS, A3690: FS, A3700: FS, A3710: FS, A3720: FS, A3730: FS, A3740: FS, A1630: FS, A2120: FS, A7710: FS, A1720: FS, A1730: FS, A1740: FF, A1880: FS, A1890: FS, A1910: FF, A1980: FS, A2060: FS, A2080: FS, A1170: FS, A1070: FS, A1080: FS, A1110: FS, A1250: FS, A1310: FS, A1360: FS, A1370: FS, A2100: FS, A1820: FS, A2210: FS, A2240: FS, A2340: FS, A2360: FS, A2390: FS, A2450: FS, A2460: FS, A2500: FS, A2560: FS, A2570: FS, A2580: FS, A2610: FS, A2630: FS, A2690: FS, A2750: FS, A2770: FS, A2910: FS, A2990: FS, A3050: FS, A3100: FS, A3120: FS, A3140: FS, A3170: FS, A3790: FS, A3810: FS, A3820: FS, A3850: FS, A3890: FS, A3900: FS, A3920: FS, A3940: FS, A3960: FS, A4070: FS, A4080: FS, A4140: FS, A4180: FS, A4250: FS, A4260: FS, A4280: FS, A4300: FS, A4350: FS, A4360: FS, A4380: FS, A4430: FS, A4460: FS, A4470: FS, A4550: FS, A4600: FS, A4610: FS, A4620: FS, A4630: FS, A4640: FS, A4660: FS, A4670: FS, A4690: FS, A4700: FS, A4710: FS, A4720: FS, A4740: FS, A4750: FS, A4760: FS, A40410: FS",,Task Dependent,Fixed Duration & Units,
A29370,Not Started,Hercules_15082023-6.PROCUREMENT.2.1,0,Architectural Fit-Out Procure Materials,29/08/2023 08:00,29/08/2023 08:00,0,11,A29320,A29320: FS,"A29460, A29470, A29480, A29490, A29500, A7700, A1690, A1710, A1720, A1760, A1850, A1870, A1880, A1920, A1980, A7750, A7760, A7770, A7780, A1060, A1070, A1090, A1130, A1440, A1450, A1490, A7790, A7800, A2220, A2230, A2240, A2250, A2300, A2320, A2680, A2690, A2700, A2710, A2810, A2820, A2930, A2960, A2970, A7810, A3130, A3140, A3150, A7820, A7830, A3380, A3400, A3480, A3490, A3500, A3540, A5220, A7850, A3780, A3830, A7860, A3910, A3920, A3930, A3990, A4060, A4130, A4140, A4150, A4160, A4270, A4280, A4290, A4320, A4370, A4380, A4390, A4400, A7870, A7880, A4680, A7890, A4750, A4760, A7900","A29460: FS, A29470: FS, A29480: FS, A29490: FS, A29500: FS, A7700: FS, A1690: FS, A1710: FS, A1720: FS, A1760: FS, A1850: FS, A1870: FS, A1880: FS, A1920: FS, A1980: FS, A7750: FS, A7760: FS, A7770: FS, A7780: FS, A1060: FS, A1070: FS, A1090: FS, A1130: FS, A1440: FS, A1450: FS, A1490: FS, A7790: FS, A7800: FS, A2220: FS, A2230: FS, A2240: FS, A2250: FS, A2300: FS, A2320: FS, A2680: FS, A2690: FS, A2700: FS, A2710: FS, A2810: FS, A2820: FS, A2930: FS, A2960: FS, A2970: FS, A7810: FS, A3130: FS, A3140: FS, A3150: FS, A7820: FS, A7830: FS, A3380: FS, A3400: FS, A3480: FS, A3490: FS, A3500: FS, A3540: FS, A5220: FS, A7850: FS, A3780: FS, A3830: FS, A7860: FS, A3910: FS, A3920: FS, A3930: FS, A3990: FS, A4060: FS, A4130: FS, A4140: FS, A4150: FS, A4160: FS, A4270: FS, A4280: FS, A4290: FS, A4320: FS, A4370: FS, A4380: FS, A4390: FS, A4400: FS, A7870: FS, A7880: FS, A4680: FS, A7890: FS, A4750: FS, A4760: FS, A7900: FS",,Task Dependent,Fixed Duration & Units,
A18520,Completed,Hercules_15082023-6.PROCUREMENT.2.10,7,BMS Issue Package for Tender,01/03/2023 08:00,09/03/2023 17:00,,,A31050,A31050: FS,A18530,A18530: FS,,Task Dependent,Fixed Duration & Units,
A18530,Completed,Hercules_15082023-6.PROCUREMENT.2.10,54,BMS Contractor Tender Period,10/03/2023 08:00,30/05/2023 17:00,,,A18520,A18520: FS,A18540,A18540: FS,,Task Dependent,Fixed Duration & Units,
A18540,Completed,Hercules_15082023-6.PROCUREMENT.2.10,1,"BMS CBE, TBE & Clarification Period",31/05/2023 08:00,31/05/2023 17:00,,,A18530,A18530: FS,A18550,A18550: FS,,Task Dependent,Fixed Duration & Units,
A18550,Completed,Hercules_15082023-6.PROCUREMENT.2.10,9,BMS Tender report and Contractor recommendation,01/06/2023 08:00,13/06/2023 17:00,,,A18540,A18540: FS,A18560,A18560: FS,,Task Dependent,Fixed Duration & Units,
A18560,Completed,Hercules_15082023-6.PROCUREMENT.2.10,17,BMS Raise Contract on Contractor,01/06/2023 08:00,23/06/2023 17:00,,,A18550,A18550: FS,"A18570, A29350","A18570: FS, A29350: FS",Start On or After,Task Dependent,Fixed Duration & Units,
A18570,Not Started,Hercules_15082023-6.PROCUREMENT.2.10,60,"BMS Mobilise to Project, Design and Develop Software Upgrades (Duration TBC)",29/08/2023 08:00,20/11/2023 17:00,0,40,"A18560, A29310, A29350","A18560: FS, A29310: FS, A29350: FS",A29430,A29430: FF,,Task Dependent,Fixed Duration & Units,
A29430,Not Started,Hercules_15082023-6.PROCUREMENT.2.10,51,BMS Procure Materials (incl. Electrical cabinets - Lead Time TBC),11/09/2023 08:00,20/11/2023 17:00,0,40,"A29350, A18570","A29350: FS, A18570: FF",A32770,A32770: FF,,Task Dependent,Fixed Duration & Units,
A21850,Completed,Hercules_15082023-6.PROCUREMENT.2.15,4,GMS Contractor Tender Period,28/11/2022 08:00,02/12/2022 00:00,,,A21840,A21840: FS,A21860,A21860: FS,,Task Dependent,Fixed Duration & Units,
A21840,Completed,Hercules_15082023-6.PROCUREMENT.2.15,5,GMS Issue Package for Tender,28/11/2022 08:00,02/12/2022 17:00,,,A31060,A31060: FS,A21850,A21850: FS,,Task Dependent,Fixed Duration & Units,
A21860,Completed,Hercules_15082023-6.PROCUREMENT.2.15,5,"GMS CBE, TBE & Clarification Period",28/11/2022 08:00,02/12/2022 17:00,,,A21850,A21850: FS,A21870,A21870: FS,,Task Dependent,Fixed Duration & Units,
A21870,Completed,Hercules_15082023-6.PROCUREMENT.2.15,5,GMS Tender report and Contractor recommendation,28/11/2022 08:00,02/12/2022 17:00,,,A21860,A21860: FS,A21880,A21880: FS,,Task Dependent,Fixed Duration & Units,
A21880,Completed,Hercules_15082023-6.PROCUREMENT.2.15,5,GMS Raise Contract on Contractor,28/11/2022 08:00,02/12/2022 17:00,,,A21870,A21870: FS,"A21890, A29310","A21890: FS, A29310: FS",,Task Dependent,Fixed Duration & Units,
A21890,Not Started,Hercules_15082023-6.PROCUREMENT.2.15,64,"GMS Mobilise to Project, Procure Instruments and Develop Software Upgrades (Duration TBC)",29/08/2023 08:00,24/11/2023 17:00,0,2,"A21880, A29310","A21880: FS, A29310: FS",47,47: FS,,Task Dependent,Fixed Duration & Units,
A18170,Completed,Hercules_15082023-6.PROCUREMENT.2.2,1,Cleanroom Issue Package for Tender,24/02/2023 08:00,24/02/2023 17:00,,,A31020,A31020: FS,A18180,A18180: FS,,Task Dependent,Fixed Duration & Units,
A18180,Completed,Hercules_15082023-6.PROCUREMENT.2.2,29,Cleanroom Contractor Tender Period,24/02/2023 08:00,05/04/2023 16:00,,,A18170,A18170: FS,A18190,A18190: FS,,Task Dependent,Fixed Duration & Units,
A18190,Completed,Hercules_15082023-6.PROCUREMENT.2.2,27,Cleanroom Clarification Period,06/04/2023 08:00,17/05/2023 17:00,,,A18180,A18180: FS,A18200,A18200: FS,,Task Dependent,Fixed Duration & Units,
A18200,Completed,Hercules_15082023-6.PROCUREMENT.2.2,23,Cleanroom Tender report and Contractor recommendation,18/05/2023 08:00,20/06/2023 17:00,,,A18190,A18190: FS,A18210,A18210: FS,,Task Dependent,Fixed Duration & Units,
A18210,Completed,Hercules_15082023-6.PROCUREMENT.2.2,7,Cleanroom SISK Raise Contract on Contractor,21/06/2023 08:00,29/06/2023 17:00,,,A18200,A18200: FS,"A18220, A7520","A18220: FS, A7520: FS",,Task Dependent,Fixed Duration & Units,
A18220,Completed,Hercules_15082023-6.PROCUREMENT.2.2,6,Cleanroom Mobilisation to start work,24/07/2023 08:00,31/07/2023 17:00,,,A18210,A18210: FS,"A1710, A1870, A1060, A2220, A2680, A3130, A3910, A4130, A4270, A4370","A1710: FS, A1870: FS, A1060: FS, A2220: FS, A2680: FS, A3130: FS, A3910: FS, A4130: FS, A4270: FS, A4370: FS",Start On or After,Task Dependent,Fixed Duration & Units,
A29360,Not Started,Hercules_15082023-6.PROCUREMENT.2.2,0,Cleanroom Procure Materials,29/08/2023 08:00,29/08/2023 08:00,0,14,A7520,A7520: FS,"A5120, A1710, A1770, A1850, A1870, A1930, A1990, A2010, A1060, A1320, A1330, A1340, A1350, A1390, A1480, A1490, A1500, A1540, A2220, A2230, A2250, A2330, A2550, A2680, A2710, A2740, A2810, A2820, A2920, A2930, A2960, A3130, A3160, A3480, A3500, A3780, A3870, A3910, A3930, A3980, A4160, A4170, A4270, A4290, A4370, A4390, A4420","A5120: FS, A1710: FS, A1770: FS, A1850: FS, A1870: FS, A1930: FS, A1990: FS, A2010: FS, A1060: FS, A1320: FS, A1330: FS, A1340: FS, A1350: FS, A1390: FS, A1480: FS, A1490: FS, A1500: FS, A1540: FS, A2220: FS, A2230: FS, A2250: FS, A2330: FS, A2550: FS, A2680: FS, A2710: FS, A2740: FS, A2810: FS, A2820: FS, A2920: FS, A2930: FS, A2960: FS, A3130: FS, A3160: FS, A3480: FS, A3500: FS, A3780: FS, A3870: FS, A3910: FS, A3930: FS, A3980: FS, A4160: FS, A4170: FS, A4270: FS, A4290: FS, A4370: FS, A4390: FS, A4420: FS",,Task Dependent,Fixed Duration & Units,
A18230,Completed,Hercules_15082023-6.PROCUREMENT.2.3,1,Clean Utilities Issue Package for Tender,03/03/2023 08:00,03/03/2023 17:00,,,A30970,A30970: FS,A18240,A18240: FS,,Task Dependent,Fixed Duration & Units,
A18240,Completed,Hercules_15082023-6.PROCUREMENT.2.3,42,Clean Utilities Contractor Tender Period,03/03/2023 08:00,04/05/2023 17:00,,,A18230,A18230: FS,A18250,A18250: FS,,Task Dependent,Fixed Duration & Units,
A18250,Completed,Hercules_15082023-6.PROCUREMENT.2.3,20,Clean Utilities Clarification Period,05/05/2023 08:00,02/06/2023 17:00,,,A18240,A18240: FS,A18260,A18260: FS,,Task Dependent,Fixed Duration & Units,
A18260,Completed,Hercules_15082023-6.PROCUREMENT.2.3,35,Clean Utilities Tender report and Contractor recommendation,05/06/2023 08:00,21/07/2023 17:00,,,A18250,A18250: FS,A18270,A18270: FS,,Task Dependent,Fixed Duration & Units,
A18270,Completed,Hercules_15082023-6.PROCUREMENT.2.3,0,Clean Utilities SISK Raise Contract on Contractor,21/07/2023 08:00,21/07/2023 08:00,,,A18260,A18260: FS,"A18280, A29260, A18510","A18280: FS, A29260: FS, A18510: FS",,Task Dependent,Fixed Duration & Units,
A18510,Completed,Hercules_15082023-6.PROCUREMENT.2.3,19,Clean Utilities Mobilisation to start work,24/07/2023 08:00,18/08/2023 08:00,,,A18270,A18270: FS,"A31570, A31580, A31540, A31640, A31660, A31790, A31800, A31820, A31950, A31480","A31570: FS, A31580: FS, A31540: FS, A31640: FS, A31660: FS, A31790: FS, A31800: FS, A31820: FS, A31950: FS, A31480: FS",,Task Dependent,Fixed Duration & Units,
A18280,Not Started,Hercules_15082023-6.PROCUREMENT.2.3,15,Clean Utilities Procure Materials & Fabricate,29/08/2023 08:00,18/09/2023 17:00,20,14,"A18270, A29260","A18270: FS, A29260: FS","A31980, A31990, A32000, A32090, A32100, A32110, A32180, A32190, A32200, A32290, A32300, A32310, A32380, A32390, A32400, A32490, A32500, A32510, A32580, A32590, A32600, A32690, A32700, A32710","A31980: FS, A31990: FS, A32000: FS, A32090: FS, A32100: FS, A32110: FS, A32180: FS, A32190: FS, A32200: FS, A32290: FS, A32300: FS, A32310: FS, A32380: FS, A32390: FS, A32400: FS, A32490: FS, A32500: FS, A32510: FS, A32580: FS, A32590: FS, A32600: FS, A32690: FS, A32700: FS, A32710: FS",,Task Dependent,Fixed Duration & Units,
A18290,Completed,Hercules_15082023-6.PROCUREMENT.2.4,1,Plant Utilities Issue Package for Tender,03/03/2023 08:00,03/03/2023 17:00,,,A31040,A31040: FS,A18300,A18300: FS,Start On or After,Task Dependent,Fixed Duration & Units,
A18300,Completed,Hercules_15082023-6.PROCUREMENT.2.4,42,Plant Utilities Contractor Tender Period,03/03/2023 08:00,04/05/2023 17:00,,,A18290,A18290: FS,A18310,A18310: FS,,Task Dependent,Fixed Duration & Units,
A18310,Completed,Hercules_15082023-6.PROCUREMENT.2.4,17,Plant Utilities Clarification Period,05/05/2023 08:00,30/05/2023 17:00,,,A18300,A18300: FS,A18320,A18320: FS,,Task Dependent,Fixed Duration & Units,
A18320,Completed,Hercules_15082023-6.PROCUREMENT.2.4,38,Plant Utilities Tender report and Contractor recommendation,31/05/2023 08:00,21/07/2023 17:00,,,A18310,A18310: FS,A18330,A18330: FS,,Task Dependent,Fixed Duration & Units,
A18330,Completed,Hercules_15082023-6.PROCUREMENT.2.4,0,Plant Utilities SISK Raise Contract on Contractor,21/07/2023 08:00,21/07/2023 08:00,,,A18320,A18320: FS,"A19060, A29380, A19070","A19060: FS, A29380: FS, A19070: FS",,Task Dependent,Fixed Duration & Units,
A19070,Completed,Hercules_15082023-6.PROCUREMENT.2.4,24,Plant Utilities Mobilisation to start work,24/07/2023 08:00,25/08/2023 08:00,,,A18330,A18330: FS,"A31570, A31580, A31540, A31640, A31660, A31790, A31800, A31820, A31950, A31480","A31570: FS, A31580: FS, A31540: FS, A31640: FS, A31660: FS, A31790: FS, A31800: FS, A31820: FS, A31950: FS, A31480: FS",,Task Dependent,Fixed Duration & Units,
A19060,Not Started,Hercules_15082023-6.PROCUREMENT.2.4,15,Plant Utilities Procure Materials & Fabricate Plant Utilities,29/08/2023 08:00,18/09/2023 17:00,20,14,"A18330, A29380","A18330: FS, A29380: FS","A4010, A4040, A5150, A4210, A4240, A5040, A31980, A31990, A32000, A32090, A32100, A32110, A32180, A32190, A32200, A32290, A32300, A32310, A32380, A32390, A32400, A32490, A32500, A32510, A32580, A32590, A32600, A32690, A32700, A32710","A4010: FS, A4040: FS, A5150: FS, A4210: FS, A4240: FS, A5040: FS, A31980: FS, A31990: FS, A32000: FS, A32090: FS, A32100: FS, A32110: FS, A32180: FS, A32190: FS, A32200: FS, A32290: FS, A32300: FS, A32310: FS, A32380: FS, A32390: FS, A32400: FS, A32490: FS, A32500: FS, A32510: FS, A32580: FS, A32590: FS, A32600: FS, A32690: FS, A32700: FS, A32710: FS",,Task Dependent,Fixed Duration & Units,
A18340,Completed,Hercules_15082023-6.PROCUREMENT.2.5,1,HVAC Issue Package for Tender Ductwork,01/03/2023 08:00,01/03/2023 17:00,,,A31030,A31030: FS,A18350,A18350: FS,,Task Dependent,Fixed Duration & Units,
A18350,Completed,Hercules_15082023-6.PROCUREMENT.2.5,28,HVAC Contractor Tender Period Ductwork,01/03/2023 08:00,11/04/2023 16:00,,,A18340,A18340: FS,A18360,A18360: FS,,Task Dependent,Fixed Duration & Units,
A18360,Completed,Hercules_15082023-6.PROCUREMENT.2.5,21,HVAC Clarification Period Ductwork,12/04/2023 08:00,11/05/2023 17:00,,,A18350,A18350: FS,A18370,A18370: FS,,Task Dependent,Fixed Duration & Units,
A18370,Completed,Hercules_15082023-6.PROCUREMENT.2.5,31,HVAC Tender report and Contractor recommendation Ductwork,12/05/2023 08:00,26/06/2023 17:00,,,A18360,A18360: FS,A18380,A18380: FS,,Task Dependent,Fixed Duration & Units,
A18380,Completed,Hercules_15082023-6.PROCUREMENT.2.5,24,HVAC SISK Raise Contract on Contractor Ductwork,26/05/2023 08:00,29/06/2023 17:00,,,A18370,A18370: FS,"A19050, A29250, A29390, A29400","A19050: FS, A29250: FS, A29390: FS, A29400: FS",,Task Dependent,Fixed Duration & Units,
A29390,In Progress,Hercules_15082023-6.PROCUREMENT.2.5,41,HVAC Mobilisation to start work Ductwork,30/06/2023 08:00,29/08/2023 08:00,0,-5,A18380,A18380: FS,"A5510, A31520, A31530, A31540, A31770, A31780, A31790, A31930, A31940, A31950","A5510: FS, A31520: FS, A31530: FS, A31540: FS, A31770: FS, A31780: FS, A31790: FS, A31930: FS, A31940: FS, A31950: FS",,Task Dependent,Fixed Duration & Units,
A19050,Not Started,Hercules_15082023-6.PROCUREMENT.2.5,20,HVAC Procure & Fabricate Ductworks,29/08/2023 08:00,25/09/2023 17:00,0,24,"A18380, A29250","A18380: FS, A29250: FS","A2010, A2020, A2030, A2040, A1500, A1510, A1520, A1530, A3780, A4680","A2010: FS, A2020: FS, A2030: FS, A2040: FS, A1500: FS, A1510: FS, A1520: FS, A1530: FS, A3780: FS, A4680: FS",,Task Dependent,Fixed Duration & Units,
A29400,Not Started,Hercules_15082023-6.PROCUREMENT.2.5,53,HVAC Procure & Fabricate AHU's,29/08/2023 08:00,09/11/2023 17:00,0,-5,A18380,A18380: FS,"A32040, A32240, A32440, A32640","A32040: FS, A32240: FS, A32440: FS, A32640: FS",,Task Dependent,Fixed Duration & Units,
A18390,Completed,Hercules_15082023-6.PROCUREMENT.2.6,1,E&I Issue Contractor Package for Tender,03/03/2023 08:00,03/03/2023 17:00,,,A30980,A30980: FS,A18400,A18400: FS,,Task Dependent,Fixed Duration & Units,
A18400,Completed,Hercules_15082023-6.PROCUREMENT.2.6,29,E&I Contractor Tender Period,03/03/2023 08:00,14/04/2023 16:00,,,A18390,A18390: FS,A18410,A18410: FS,Start On or After,Task Dependent,Fixed Duration & Units,
A18410,Completed,Hercules_15082023-6.PROCUREMENT.2.6,25,E&I Clarification Period,17/04/2023 08:00,22/05/2023 17:00,,,A18400,A18400: FS,A18420,A18420: FS,,Task Dependent,Fixed Duration & Units,
A18420,Completed,Hercules_15082023-6.PROCUREMENT.2.6,20,E&I Tender report and Contractor recommendation,23/05/2023 08:00,20/06/2023 17:00,,,A18410,A18410: FS,A18430,A18430: FS,,Task Dependent,Fixed Duration & Units,
A18430,Completed,Hercules_15082023-6.PROCUREMENT.2.6,32,E&I SISK Raise Contract on Contractor,26/05/2023 08:00,11/07/2023 17:00,,,A18420,A18420: FS,"A18440, A29270","A18440: FS, A29270: FS",,Task Dependent,Fixed Duration & Units,
A18440,Completed,Hercules_15082023-6.PROCUREMENT.2.6,14,E&I Mobilisation to start work,11/07/2023 08:00,28/07/2023 17:00,,,A18430,A18430: FS,"A6220, A6210, A6230, A6190, A6200, A6390, A6400, A6410, A6420, A6430, A6440, A6450, A6460, A6470, A6480, A6740, A6750, A6720, A6730, A6500, A6680, A6360, A6370, A6350, A6560, A6240, A6490, A6630, A6640, A6780, A6770, A6540, A6550, A6570, A6580, A6590, A6600, A6610, A6620, A6760, A6690, A6650, A6660, A6670, A6790, A6270, A6260, A6250, A6700, A6710, A6380, A6310, A6320, A6330, A6280, A6290, A6300, A6520, A6530, A6510","A6220: FS, A6210: FS, A6230: FS, A6190: FS, A6200: FS, A6390: FS, A6400: FS, A6410: FS, A6420: FS, A6430: FS, A6440: FS, A6450: FS, A6460: FS, A6470: FS, A6480: FS, A6740: FS, A6750: FS, A6720: FS, A6730: FS, A6500: FS, A6680: FS, A6360: FS, A6370: FS, A6350: FS, A6560: FS, A6240: FS, A6490: FS, A6630: FS, A6640: FS, A6780: FS, A6770: FS, A6540: FS, A6550: FS, A6570: FS, A6580: FS, A6590: FS, A6600: FS, A6610: FS, A6620: FS, A6760: FS, A6690: FS, A6650: FS, A6660: FS, A6670: FS, A6790: FS, A6270: FS, A6260: FS, A6250: FS, A6700: FS, A6710: FS, A6380: FS, A6310: FS, A6320: FS, A6330: FS, A6280: FS, A6290: FS, A6300: FS, A6520: FS, A6530: FS, A6510: FS",,Task Dependent,Fixed Duration & Units,
A29410,Not Started,Hercules_15082023-6.PROCUREMENT.2.6,10,E&I Procure Equipment & Materials,29/08/2023 08:00,11/09/2023 17:00,0,28,A29270,A29270: FS,"A1690, A1780, A1940, A2050, A1150, A1390, A1540, A1550, A2290, A2300, A2410, A2520, A2980, A3080, A3190, A3430, A3450, A3610, A3880, A4020, A4040, A4110, A4220, A4240, A4340, A4560, A4730","A1690: FS, A1780: FS, A1940: FS, A2050: FS, A1150: FS, A1390: FS, A1540: FS, A1550: FS, A2290: FS, A2300: FS, A2410: FS, A2520: FS, A2980: FS, A3080: FS, A3190: FS, A3430: FS, A3450: FS, A3610: FS, A3880: FS, A4020: FS, A4040: FS, A4110: FS, A4220: FS, A4240: FS, A4340: FS, A4560: FS, A4730: FS",,Task Dependent,Fixed Duration & Units,
A18450,Completed,Hercules_15082023-6.PROCUREMENT.2.7.1,0,EMS Issue Package for Tender,29/04/2022 00:00,29/04/2022 00:00,,,,,A18460,A18460: FS,,Task Dependent,Fixed Duration & Units,
A18460,Completed,Hercules_15082023-6.PROCUREMENT.2.7.1,0,EMS Contractor Tender Period (early engagement),29/04/2022 00:00,29/04/2022 00:00,,,A18450,A18450: FS,A18470,A18470: FS,,Task Dependent,Fixed Duration & Units,
A18470,Completed,Hercules_15082023-6.PROCUREMENT.2.7.1,0,EMS Clarification Period,29/04/2022 00:00,29/04/2022 00:00,,,A18460,A18460: FS,A18480,A18480: FS,,Task Dependent,Fixed Duration & Units,
A18480,Completed,Hercules_15082023-6.PROCUREMENT.2.7.1,0,EMS Tender report and Contractor recommendation,29/04/2022 00:00,29/04/2022 00:00,,,A18470,A18470: FS,A18490,A18490: FS,,Task Dependent,Fixed Duration & Units,
A18490,Completed,Hercules_15082023-6.PROCUREMENT.2.7.1,0,EMS Raise Contract on Contractor,29/04/2022 00:00,29/04/2022 00:00,,,A18480,A18480: FS,A18500,A18500: FS,,Task Dependent,Fixed Duration & Units,
A18500,Completed,Hercules_15082023-6.PROCUREMENT.2.7.1,190,"EMS Mobilise to Project, Detailed Design & Procure Materials (40 weeks)",02/05/2022 00:00,10/02/2023 08:00,,,A18490,A18490: FS,,,,Task Dependent,Fixed Duration & Units,
A29190,In Progress,Hercules_15082023-6.PROCUREMENT.2.7.2,86,EMS Scope of work issued by PM,01/05/2023 08:00,31/08/2023 17:00,0,2,A30990,A30990: FS,A29200,A29200: FS,,Task Dependent,Fixed Duration & Units,
A29200,Not Started,Hercules_15082023-6.PROCUREMENT.2.7.2,5,EMS Contractor Tender Period (early engagement),01/09/2023 08:00,07/09/2023 17:00,0,2,A29190,A29190: FS,A29210,A29210: FS,,Task Dependent,Fixed Duration & Units,
A29210,Not Started,Hercules_15082023-6.PROCUREMENT.2.7.2,5,EMS Clarification Period,08/09/2023 08:00,14/09/2023 17:00,0,2,A29200,A29200: FS,A29220,A29220: FS,,Task Dependent,Fixed Duration & Units,
A29220,Not Started,Hercules_15082023-6.PROCUREMENT.2.7.2,5,EMS Tender report and Contractor recommendation,15/09/2023 08:00,21/09/2023 17:00,0,2,A29210,A29210: FS,A29230,A29230: FS,,Task Dependent,Fixed Duration & Units,
A29230,Not Started,Hercules_15082023-6.PROCUREMENT.2.7.2,10,EMS Raise Contract on Contractor,22/09/2023 08:00,05/10/2023 17:00,0,2,A29220,A29220: FS,"A29240, A29300","A29240: FS, A29300: FS",,Task Dependent,Fixed Duration & Units,
A29240,Not Started,Hercules_15082023-6.PROCUREMENT.2.7.2,25,EMS Mobilisation to start work,06/10/2023 08:00,09/11/2023 17:00,0,37,"A29230, A29180","A29230: FS, A29180: FS","10, 20","10: FS, 20: FS",,Task Dependent,Fixed Duration & Units,
A29420,Not Started,Hercules_15082023-6.PROCUREMENT.2.7.2,40,EMS Procure Materials (Lead Time TBC),03/11/2023 08:00,11/01/2024 17:00,0,2,A29300,A29300: FS,"23, 21, 22, 24, 25, 26, 27","23: FS, 21: FS, 22: FS, 24: FS, 25: FS, 26: FS, 27: FS",,Task Dependent,Fixed Duration & Units,
A29130,Completed,Hercules_15082023-6.PROCUREMENT.2.7.4,5,EMS Issue Package for Tender,21/11/2022 08:00,25/11/2022 17:00,,,,,A29140,A29140: FS,,Task Dependent,Fixed Duration & Units,
A29140,Completed,Hercules_15082023-6.PROCUREMENT.2.7.4,5,EMS Contractor Tender Period (early engagement),28/11/2022 08:00,02/12/2022 17:00,,,A29130,A29130: FS,A29150,A29150: FS,,Task Dependent,Fixed Duration & Units,
A29150,Completed,Hercules_15082023-6.PROCUREMENT.2.7.4,5,EMS Clarification Period,28/11/2022 08:00,02/12/2022 17:00,,,A29140,A29140: FS,A29160,A29160: FS,,Task Dependent,Fixed Duration & Units,
A29160,Completed,Hercules_15082023-6.PROCUREMENT.2.7.4,5,EMS Tender report and Contractor recommendation,28/11/2022 08:00,02/12/2022 17:00,,,A29150,A29150: FS,A29170,A29170: FS,,Task Dependent,Fixed Duration & Units,
A29170,Completed,Hercules_15082023-6.PROCUREMENT.2.7.4,5,EMS Raise Contract on EMS Contractor,28/11/2022 08:00,02/12/2022 17:00,,,A29160,A29160: FS,A29180,A29180: FS,,Task Dependent,Fixed Duration & Units,
A29180,In Progress,Hercules_15082023-6.PROCUREMENT.2.7.4,176,EMS Detail Design,05/12/2022 08:00,29/08/2023 08:00,0,65,A29170,A29170: FS,A29240,A29240: FS,,Task Dependent,Fixed Duration & Units,
A28250,Completed,Hercules_15082023-6.PROCUREMENT.2.8,0,Enabling Works Issue Package for Tender,24/02/2023 08:00,24/02/2023 08:00,,,,,A28260,A28260: FS,,Task Dependent,Fixed Duration & Units,
A28260,Completed,Hercules_15082023-6.PROCUREMENT.2.8,22,Enabling Works Contractor Tender Period,24/02/2023 08:00,28/03/2023 08:00,,,A28250,A28250: FS,A28270,A28270: FS,,Task Dependent,Fixed Duration & Units,
A28270,Completed,Hercules_15082023-6.PROCUREMENT.2.8,25,Enabling Works Clarification Period,03/04/2023 08:00,10/05/2023 17:00,,,A28260,A28260: FS,A28280,A28280: FS,,Task Dependent,Fixed Duration & Units,
A28280,Completed,Hercules_15082023-6.PROCUREMENT.2.8,9,Enabling Works Tender report and Contractor recommendation,11/05/2023 08:00,23/05/2023 17:00,,,A28270,A28270: FS,A28290,A28290: FS,,Task Dependent,Fixed Duration & Units,
A28290,Completed,Hercules_15082023-6.PROCUREMENT.2.8,3,Enabling Works SISK Raise Contract on Contractor,24/05/2023 08:00,26/05/2023 17:00,,,A28280,A28280: FS,"A28300, A29330","A28300: FS, A29330: FS",,Task Dependent,Fixed Duration & Units,
A28300,Completed,Hercules_15082023-6.PROCUREMENT.2.8,1,Enabling Works Mobilisation to start work & Procure Materials,01/06/2023 08:00,01/06/2023 17:00,,,"A28290, A29330","A28290: FS, A29330: FF","A4810, A1180, A29450, A7690, A7680","A4810: FS, A1180: FS, A29450: FS, A7690: FS, A7680: FS 22",,Task Dependent,Fixed Duration & Units,
A28310,Completed,Hercules_15082023-6.PROCUREMENT.2.9,0,Sprinklers Fire Protection System Issue Package for Tender,20/03/2023 08:00,20/03/2023 08:00,,,A31000,A31000: FS,A28320,A28320: FS,Start On or After,Task Dependent,Fixed Duration & Units,
A28320,Completed,Hercules_15082023-6.PROCUREMENT.2.9,50,Sprinklers Fire Protection System Contractor Tender Period,21/03/2023 08:00,02/06/2023 17:00,,,A28310,A28310: FS,A28330,A28330: FS,,Task Dependent,Fixed Duration & Units,
A28330,Completed,Hercules_15082023-6.PROCUREMENT.2.9,1,Sprinklers Fire Protection System Clarification Period,05/06/2023 08:00,06/06/2023 08:00,,,A28320,A28320: FS,A28340,A28340: FS,,Task Dependent,Fixed Duration & Units,
A28340,In Progress,Hercules_15082023-6.PROCUREMENT.2.9,58,Sprinklers Fire Protection System Tender report and Contractor recommendation,07/06/2023 08:00,29/08/2023 08:00,0,215,A28330,A28330: FS,A28350,A28350: FS,,Task Dependent,Fixed Duration & Units,
A28350,Not Started,Hercules_15082023-6.PROCUREMENT.2.9,0,Sprinklers Fire Protection System SISK Raise Contract on Contractor,29/08/2023 08:00,29/08/2023 08:00,0,215,A28340,A28340: FS,"A28360, A29340","A28360: FS, A29340: FS",,Task Dependent,Fixed Duration & Units,
A28360,Not Started,Hercules_15082023-6.PROCUREMENT.2.9,0,Sprinklers Fire Protection System Mobilisation to start work & Procure Materials,26/09/2023 08:00,26/09/2023 08:00,0,215,"A28350, A29340","A28350: FS, A29340: FS",,,,Task Dependent,Fixed Duration & Units,
A6160,Completed,Hercules_15082023-6.PROCUREMENT.Procurement LLI,80,Chromatography (TBC),02/11/2022 08:00,08/03/2023 08:00,,,,,A4930,A4930: FF,,Task Dependent,Fixed Duration & Units,
A4870,In Progress,Hercules_15082023-6.PROCUREMENT.Procurement LLI,229,Sterelizer Autoclave x2 GETINGE,02/11/2022 08:00,09/10/2023 16:00,0,52,,,"A33820, A4200","A33820: FS, A4200: FS",,Task Dependent,Fixed Duration and Units/Time,
A4890,In Progress,Hercules_15082023-6.PROCUREMENT.Procurement LLI,234,Decontamination Autoclave GETINGE,02/11/2022 08:00,16/10/2023 16:00,0,47,,,"A33820, A4000","A33820: FS, A4000: FS",,Task Dependent,Fixed Duration and Units/Time,
A4880,In Progress,Hercules_15082023-6.PROCUREMENT.Procurement LLI,239,GMP Part Washer x2 BELIMED,02/11/2022 08:00,23/10/2023 16:00,0,45,,,"A33930, A4000","A33930: FS, A4000: FS",,Task Dependent,Fixed Duration and Units/Time,
A4850,In Progress,Hercules_15082023-6.PROCUREMENT.Procurement LLI,264,Fermenter Skid ZETA,02/11/2022 08:00,27/11/2023 16:00,0,6,A1000,A1000: SS,A1420,A1420: FS,,Task Dependent,Fixed Duration and Units/Time,
A4860,In Progress,Hercules_15082023-6.PROCUREMENT.Procurement LLI,264,Centrafuge skid GEA,02/11/2022 08:00,27/11/2023 16:00,0,6,,,A1410,A1410: FS,,Task Dependent,Fixed Duration and Units/Time,
A33620,In Progress,Hercules_15082023-6.PROCUREMENT.Procurement LLI,169,CSG Packages BWT AQUA,15/02/2023 00:00,16/10/2023 16:00,0,41,,,A6170,A6170: FF,,Task Dependent,Fixed Duration & Units,
A6170,In Progress,Hercules_15082023-6.PROCUREMENT.Procurement LLI,169,AP Packages BWT AQUA,15/02/2023 00:00,16/10/2023 16:00,0,41,A33620,A33620: FF,A4950,A4950: FS,,Task Dependent,Fixed Duration & Units,
A6180,In Progress,Hercules_15082023-6.PROCUREMENT.Procurement LLI,179,WFI Packages BWT AQUA,15/02/2023 00:00,30/10/2023 16:00,0,31,,,A33680,A33680: FS,,Task Dependent,Fixed Duration & Units,
A6130,In Progress,Hercules_15082023-6.PROCUREMENT.Procurement LLI,199,Tank Skid GEA,15/02/2023 00:00,27/11/2023 16:00,0,6,,,A1400,A1400: FS,,Task Dependent,Fixed Duration & Units,
